# Don Funk Music Video

How a schedule from MS Project changed from version to version. A marks actual dates.

## Version 1 (data date 2016-06-10, saved 2013-04-09, file Don Funk Music Video 11MA.mpp)

| ID | WBS | Task | Duration | Start | Finish | Predecessors | Complete | Total float | Constraint |
| --- | --- | --- | --- | --- | --- | --- | --- | --- | --- |
| 1 | 1 | **Pre-Production** | 89.25d | 2016-01-04 A | 2016-05-09 |  | 66% | 64.5d |  |
| 2 |  | Pre-Production complete | 0d | 2016-01-04 A | 2016-01-04 A |  | 100% |  |  |
| 3 |  | Review screenplay | 3.6w | 2016-01-04 A | 2016-01-26 A | 2 | 100% |  |  |
| 4 |  | Develop scene blocking and schedule | 9.62d | 2016-01-26 A | 2016-02-04 A | 3 | 100% |  |  |
| 5 |  | Develop production layouts | 0.53mo | 2016-02-05 A | 2016-02-24 A | 4 | 100% |  |  |
| 6 |  | Identify and reserve locations | 22.5d | 2016-02-24 A | 2016-03-28 A | 5 | 100% |  |  |
| 7 |  | Book musicians | 2w | 2016-03-28 | 2016-04-11 | 6 |  | 1.12d |  |
| 8 |  | Book dancers | 2w | 2016-04-11 | 2016-04-25 | 7 |  | 1.12d |  |
| 9 |  | Reserve audio recording equipment | 1w | 2016-04-25 | 2016-05-02 | 8 |  | 1.12d |  |
| 10 |  | Reserve video recording equipment | 5d | 2016-05-02 | 2016-05-09 | 9 |  | 1.12d |  |
| 11 | 1.10 | **Status Meeting** | 69.12d | 2016-01-04 | 2016-04-11 |  |  | 84.62d |  |
| 12 |  | Status Meeting 1 | 1h | 2016-01-04 | 2016-01-04 |  |  | 153.62d | start no earlier than 2016-01-04 |
| 13 |  | Status Meeting 2 | 1h | 2016-01-11 | 2016-01-11 |  |  | 148.62d | start no earlier than 2016-01-11 |
| 14 |  | Status Meeting 3 | 1h | 2016-01-19 | 2016-01-19 |  |  | 143.62d | start no earlier than 2016-01-18 |
| 15 |  | Status Meeting 4 | 1h | 2016-01-25 | 2016-01-25 |  |  | 139.62d | start no earlier than 2016-01-25 |
| 16 |  | Status Meeting 5 | 1h | 2016-02-01 | 2016-02-01 |  |  | 134.62d | start no earlier than 2016-02-01 |
| 17 |  | Status Meeting 6 | 1h | 2016-02-08 | 2016-02-08 |  |  | 129.62d | start no earlier than 2016-02-08 |
| 18 |  | Status Meeting 7 | 1h | 2016-02-15 | 2016-02-15 |  |  | 124.62d | start no earlier than 2016-02-15 |
| 19 |  | Status Meeting 8 | 1h | 2016-02-22 | 2016-02-22 |  |  | 119.62d | start no earlier than 2016-02-22 |
| 20 |  | Status Meeting 9 | 1h | 2016-02-29 | 2016-02-29 |  |  | 114.62d | start no earlier than 2016-02-29 |
| 21 |  | Status Meeting 10 | 1h | 2016-03-07 | 2016-03-07 |  |  | 109.62d | start no earlier than 2016-03-07 |
| 22 |  | Status Meeting 11 | 1h | 2016-03-14 | 2016-03-14 |  |  | 104.62d | start no earlier than 2016-03-14 |
| 23 |  | Status Meeting 12 | 1h | 2016-03-21 | 2016-03-21 |  |  | 99.62d | start no earlier than 2016-03-21 |
| 24 |  | Status Meeting 13 | 1h | 2016-03-28 | 2016-03-28 |  |  | 94.62d | start no earlier than 2016-03-28 |
| 25 |  | Status Meeting 14 | 1h | 2016-04-04 | 2016-04-04 |  |  | 89.62d | start no earlier than 2016-04-04 |
| 26 |  | Status Meeting 15 | 1h | 2016-04-11 | 2016-04-11 |  |  | 84.62d | start no earlier than 2016-04-11 |
| 27 |  | Pre-Production complete | 0d | 2016-05-09 | 2016-05-09 | 10 |  | 1.12d |  |
| 28 | 2 | **Production** | 38.5d | 2016-05-09 | 2016-07-01 |  |  | 0d |  |
| 29 |  | Production begins | 0d | 2016-05-09 | 2016-05-09 | 27 |  | 1.12d |  |
| 30 | 2.2 | **Scene 1** | 7.88d | 2016-05-09 | 2016-05-19 |  |  | 1.12d |  |
| 31 |  | Scene 1 begin | 0d | 2016-05-09 | 2016-05-09 | 29 |  | 1.12d |  |
| 32 |  | Scene 1 setup | 2d | 2016-05-09 | 2016-05-11 | 31 |  | 1.12d |  |
| 33 |  | Scene 1 rehearsal | 6h | 2016-05-11 | 2016-05-11 | 32 |  | 1.12d |  |
| 34 |  | Scene 1 vocal recording | 1.13d | 2016-05-12 | 2016-05-13 | 33 |  | 1.12d |  |
| 35 |  | Scene 1 video shoot | 3d | 2016-05-13 | 2016-05-18 | 34 |  | 1.12d |  |
| 36 |  | Scene 1 teardown | 1d | 2016-05-18 | 2016-05-19 | 35 |  | 1.12d |  |
| 37 |  | Scene 1 complete | 0d | 2016-05-19 | 2016-05-19 | 36 |  | 1.12d |  |
| 38 | 2.3 | **Scene 2** | 9.75d | 2016-05-25 | 2016-06-08 |  |  | -2.75d |  |
| 39 |  | Scene 2 begin | 0d | 2016-05-25 | 2016-05-25 | 37 |  | -2.75d | start no earlier than 2016-05-25 |
| 40 |  | Scene 2 setup | 2d | 2016-05-25 | 2016-05-26 | 39 |  | -2.75d |  |
| 41 |  | Scene 2 rehearsal | 14h | 2016-05-27 | 2016-05-31 | 40 |  | -2.75d |  |
| 42 |  | Scene 2 vocal recording | 3d | 2016-05-31 | 2016-06-03 | 41 |  | -2.75d |  |
| 43 |  | Scene 2 video shoot | 2d | 2016-06-03 | 2016-06-07 | 42 |  | -2.75d |  |
| 44 |  | Scene 2 teardown | 1d | 2016-06-07 | 2016-06-08 | 43 |  | -2.75d |  |
| 45 |  | Scene 2 complete | 0d | 2016-06-08 | 2016-06-08 | 44 |  | -2.75d |  |
| 46 | 2.4 | **Scene 3** | 10.25d | 2016-06-08 | 2016-06-22 |  |  | -2.75d |  |
| 47 |  | Scene 3 begin | 0d | 2016-06-08 | 2016-06-08 | 45 |  | -2.75d |  |
| 48 |  | Scene 3 setup | 2d | 2016-06-08 | 2016-06-15 | 47 |  | -2.75d |  |
| 49 |  | Scene 3 rehearsal | 6h | 2016-06-16 | 2016-06-16 | 48 |  | -2.75d | start no earlier than 2016-06-09 |
| 50 |  | Scene 3 vocal recording | 1d | 2016-06-16 | 2016-06-17 | 49 |  | -2.75d | start no earlier than 2016-06-09 |
| 51 |  | Scene 3 video shoot | 2d | 2016-06-17 | 2016-06-22 | 50 |  | -2d |  |
| 52 |  | Scene 3 teardown | 1d | 2016-06-22 | 2016-06-22 | 51 |  | -2.75d |  |
| 53 |  | Scene 3 complete | 0d | 2016-06-22 | 2016-06-22 | 52 |  | -2.75d |  |
| 54 | 2.5 | **Scene 4** | 6.75d | 2016-06-22 | 2016-07-01 |  |  | 0d |  |
| 55 |  | Scene 4 begin | 0d | 2016-06-22 | 2016-06-22 | 53 |  | 0d |  |
| 56 |  | Scene 4 setup | 2d | 2016-06-23 | 2016-06-24 | 55 |  | 0d |  |
| 57 |  | Scene 4 rehearsal | 6h | 2016-06-27 | 2016-06-27 | 56 |  | 0d |  |
| 58 |  | Scene 4 vocal recording | 1d | 2016-06-27 | 2016-06-28 | 57 |  | 0d |  |
| 59 |  | Scene 4 video shoot | 2d | 2016-06-28 | 2016-06-30 | 58 |  | 0d |  |
| 60 |  | Scene 4 teardown | 1d | 2016-06-30 | 2016-07-01 | 59 |  | 0d |  |
| 61 |  | Scene 4 complete | 0d | 2016-07-01 | 2016-07-01 | 60 |  | 0d |  |
| 62 |  | Production complete | 0d | 2016-07-01 | 2016-07-01 | 61 |  | 0d |  |
| 63 | 3 | **Post-Production** | 26d | 2016-07-01 | 2016-08-08 |  |  | 0d |  |
| 64 |  | Post-Production Begins | 0d | 2016-07-01 | 2016-07-01 | 62 |  | 0d |  |
| 65 |  | Log video footage | 3d | 2016-07-01 | 2016-07-06 | 64 |  | 0d |  |
| 66 |  | Log audio tracks by scene | 3d | 2016-07-01 | 2016-07-06 | 64 |  | 0d |  |
| 67 |  | Rough edit video - paper | 1w | 2016-07-06 | 2016-07-13 | 65, 66 |  | 0d |  |
| 68 |  | Rough audio edit | 1w | 2016-07-13 | 2016-07-20 | 67 |  | 0d |  |
| 69 |  | Fine audio edit | 3d | 2016-07-20 | 2016-07-25 | 68 |  | 10d |  |
| 70 |  | Fine video edit | 3d | 2016-07-20 | 2016-07-25 | 68 |  | 0d |  |

| ID | Task | Duration | Start | Finish | Predecessors | Total float |
| --- | --- | --- | --- | --- | --- | --- |
| 71 | Dub audio to video | 2d | 2016-07-25 | 2016-07-27 | 70 | 0d |
| 72 | Internal review viewing | 1d | 2016-07-27 | 2016-07-28 | 71 | 0d |
| 73 | Final edits | 4d | 2016-07-28 | 2016-08-02 | 72 | 0d |
| 74 | Formal approval viewing | 1d | 2016-08-02 | 2016-08-03 | 73 | 0d |
| 75 | Duplicate audio and video masters | 1d | 2016-08-03 | 2016-08-04 | 74 | 0d |
| 76 | Archive Copy 1 AV masters | 1d | 2016-08-04 | 2016-08-05 | 75 | 0d |
| 77 | Send Copy 2 AV master and dubbed master to | 1d | 2016-08-05 | 2016-08-08 | 76 | 0d |
| 78 | Post-Production complete | 0d | 2016-08-08 | 2016-08-08 | 77 | 0d |

## Version 2 (data date 2016-06-10, saved 2013-04-09, file Don Funk Music Video 11MB.mpp)

Last finish stays 2016-08-08. Complete tasks 5 → 16.

Changed:

| ID | Task | Start | Finish | Duration | Complete | Total float |
| --- | --- | --- | --- | --- | --- | --- |
| 1 | **Pre-Production** |  | 2016-05-09 → 2016-05-11 (+2d) | 89.25d → 92d | 66% → 98% | 64.5d → 61.75d |
| 7 | Book musicians | 2016-03-28 → 2016-03-25 A (-3d) | 2016-04-11 → 2016-04-07 A (-4d) |  | 0% → 100% | 1.12d → none |
| 8 | Book dancers | 2016-04-11 → 2016-04-08 A (-3d) | 2016-04-25 → 2016-04-26 A (+1d) | 2w → 13d | 0% → 100% | 1.12d → none |
| 9 | Reserve audio recording equipment | 2016-04-25 → 2016-04-27 A (+2d) | 2016-05-02 → 2016-05-03 A (+1d) |  | 0% → 100% | 1.12d → none |
| 10 | Reserve video recording equipment | 2016-05-02 → 2016-05-04 A (+2d) | 2016-05-09 → 2016-05-11 A (+2d) | 5d → 6d | 0% → 100% | 1.12d → none |
| 27 | Pre-Production complete | 2016-05-09 → 2016-05-11 (+2d) | 2016-05-09 → 2016-05-11 (+2d) |  |  | 1.12d → 0d |
| 28 | **Production** | 2016-05-09 → 2016-05-11 A (+2d) |  | 38.5d → 35.75d | 0% → 25% | 0d → 0.25d |
| 29 | Production begins | 2016-05-09 → 2016-05-11 (+2d) | 2016-05-09 → 2016-05-11 (+2d) |  |  | 1.12d → 36d |
| 30 | **Scene 1** | 2016-05-09 → 2016-05-11 A (+2d) | 2016-05-19 → 2016-05-23 A (+4d) |  | 0% → 100% | 1.12d → none |
| 31 | Scene 1 begin | 2016-05-09 → 2016-05-11 A (+2d) | 2016-05-09 → 2016-05-11 A (+2d) |  | 0% → 100% | 1.12d → none |
| 32 | Scene 1 setup | 2016-05-09 → 2016-05-12 A (+3d) | 2016-05-11 → 2016-05-13 A (+2d) |  | 0% → 100% | 1.12d → none |
| 33 | Scene 1 rehearsal | 2016-05-11 → 2016-05-16 A (+5d) | 2016-05-11 → 2016-05-16 A (+5d) |  | 0% → 100% | 1.12d → none |
| 34 | Scene 1 vocal recording | 2016-05-12 → 2016-05-16 A (+4d) | 2016-05-13 → 2016-05-17 A (+4d) |  | 0% → 100% | 1.12d → none |
| 35 | Scene 1 video shoot | 2016-05-13 → 2016-05-17 A (+4d) | 2016-05-18 → 2016-05-20 A (+2d) |  | 0% → 100% | 1.12d → none |
| 36 | Scene 1 teardown | 2016-05-18 → 2016-05-20 A (+2d) | 2016-05-19 → 2016-05-23 A (+4d) |  | 0% → 100% | 1.12d → none |
| 37 | Scene 1 complete | 2016-05-19 → 2016-05-23 A (+4d) | 2016-05-19 → 2016-05-23 A (+4d) |  | 0% → 100% | 1.12d → none |

## Version 3 (saved 2013-05-28, file Don Funk Music Video 3-5.mpp)

Last finish 2016-08-08 → 2016-06-01 (-68d). Complete tasks 16 → 0.

Removed: 11 Status Meeting; 12 Status Meeting 1; 13 Status Meeting 2; 14 Status Meeting 3; 15 Status Meeting 4; 16 Status Meeting 5; 17 Status Meeting 6; 18 Status Meeting 7; 19 Status Meeting 8; 20 Status Meeting 9; 21 Status Meeting 10; 22 Status Meeting 11; 23 Status Meeting 12; 24 Status Meeting 13; 25 Status Meeting 14; 26 Status Meeting 15; 54 Scene 4; 55 Scene 4 begin; 56 Scene 4 setup; 57 Scene 4 rehearsal; 58 Scene 4 vocal recording; 59 Scene 4 video shoot; 60 Scene 4 teardown; 61 Scene 4 complete; 65 Log video footage; 66 Log audio tracks by scene; 67 Rough edit video - paper; 68 Rough audio edit; 69 Fine audio edit; 70 Fine video edit; 71 Dub audio to video; 72 Internal review viewing; 73 Final edits; 74 Formal approval viewing; 75 Duplicate audio and video masters; 76 Archive Copy 1 AV masters; 77 Send Copy 2 AV master and dubbed master to

Changed:

| ID | Task | Start | Finish | Duration | Complete | Total float | Predecessors | Other |
| --- | --- | --- | --- | --- | --- | --- | --- | --- |
| 1 | **Pre-Production** | 2016-01-04 A → 2016-01-04 | 2016-05-11 → 2016-05-02 (-9d) | 92d → 85d | 98% → 0% | 61.75d → 0d |  | baseline start 2016-01-04 → none; baseline finish 2016-05-11 → none |
| 2 | Pre-Production begins | 2016-01-04 A → 2016-01-04 | 2016-01-04 A → 2016-01-04 |  | 100% → 0% | none → 0d |  | was named Pre-Production complete; baseline start 2016-01-04 → none; baseline finish 2016-01-04 → none |
| 3 | Review screenplay | 2016-01-04 A → 2016-01-04 | 2016-01-26 A → 2016-01-26 |  | 100% → 0% | none → 0d |  | baseline start 2016-01-04 → none; baseline finish 2016-01-26 → none |
| 4 | Develop scene blocking and schedule | 2016-01-26 A → 2016-01-26 | 2016-02-04 A → 2016-02-02 (-2d) | 9.62d → 1.2w | 100% → 0% | none → 0d |  | resources Scott Seely [58%]; Judy Lew [59.7%] → Scott Seely; Judy Lew; baseline start 2016-01-26 → none; baseline finish 2016-02-05 → none |
| 5 | Develop production layouts | 2016-02-05 A → 2016-02-02 (-3d) | 2016-02-24 A → 2016-02-15 (-9d) | 0.53mo → 0.5mo | 100% → 0% | none → 0d |  | baseline start 2016-02-05 → none; baseline finish 2016-02-24 → none |
| 6 | Identify and reserve locations | 2016-02-24 A → 2016-02-16 (-8d) | 2016-03-28 A → 2016-03-21 (-7d) | 22.5d → 5w | 100% → 0% | none → 0d |  | resources Jeff Pike [50%]; Yan Li [57.1%]; Annete Hill [28.6%]; Ryan Ihrig [75%]; DVD [7.2 2-hour disc] → Jeff Pike [57.1%]; Yan Li [57.1%]; Annete Hill [28.6%]; Ryan Ihrig [57.1%]; DVD [8 2-hour disc]; baseline start 2016-02-24 → none; baseline finish 2016-03-30 → none |
| 7 | Book musicians | 2016-03-25 A → 2016-03-22 (-3d) | 2016-04-07 A → 2016-04-04 (-3d) |  | 100% → 0% | none → 0d |  | resources Annette Hill [50%]; David Barber [50%] → David Barber [50%]; Brenda Diaz [50%]; baseline start 2016-03-28 → none; baseline finish 2016-04-11 → none |
| 8 | Book dancers | 2016-04-08 A → 2016-04-05 (-3d) | 2016-04-26 A → 2016-04-18 (-8d) | 13d → 2w | 100% → 0% | none → 0d |  | resources Annette Hill [50%]; David Barber [50%] → none; baseline start 2016-04-11 → none; baseline finish 2016-04-25 → none |
| 9 | Reserve audio recording equipment | 2016-04-27 A → 2016-04-19 (-8d) | 2016-05-03 A → 2016-04-25 (-8d) |  | 100% → 0% | none → 0d |  | resources Yan Li; Sound Technician → none; baseline start 2016-04-25 → none; baseline finish 2016-05-02 → none |
| 10 | Reserve video recording equipment | 2016-05-04 A → 2016-04-26 (-8d) | 2016-05-11 A → 2016-05-02 (-9d) | 6d → 5d | 100% → 0% | none → 0d |  | resources Sound Technician; Yan Li → none; baseline start 2016-05-02 → none; baseline finish 2016-05-09 → none |
| 11 | Pre-Production complete | 2016-05-11 → 2016-05-02 (-9d) | 2016-05-11 → 2016-05-02 (-9d) |  |  |  |  | baseline start 2016-05-11 → none; baseline finish 2016-05-11 → none |
| 12 | **Production** | 2016-05-11 A → 2016-05-02 (-9d) | 2016-07-01 → 2016-06-01 (-30d) | 35.75d → 20.25d | 25% → 0% | 0.25d → 0d |  | baseline start 2016-05-11 → none; baseline finish 2016-06-23 → none |
| 13 | Production begins | 2016-05-11 → 2016-05-02 (-9d) | 2016-05-11 → 2016-05-02 (-9d) |  |  | 36d → 0d |  | baseline start 2016-05-11 → none; baseline finish 2016-05-11 → none |
| 14 | **Scene 1** | 2016-05-11 A → 2016-05-02 (-9d) | 2016-05-23 A → 2016-05-11 (-12d) | 7.88d → 6.75d | 100% → 0% | none → 0d |  | baseline start 2016-05-11 → none; baseline finish 2016-05-20 → none |
| 15 | Scene 1 begin | 2016-05-11 A → 2016-05-02 (-9d) | 2016-05-11 A → 2016-05-02 (-9d) |  | 100% → 0% | none → 0d |  | baseline start 2016-05-11 → none; baseline finish 2016-05-11 → none |
| 16 | Scene 1 setup | 2016-05-12 A → 2016-05-03 (-9d) | 2016-05-13 A → 2016-05-04 (-9d) |  | 100% → 0% | none → 0d |  | resources Light Banks; Chris Preston; Brad Sutton → none; baseline start 2016-05-11 → none; baseline finish 2016-05-13 → none |
| 17 | Scene 1 rehearsal | 2016-05-16 A → 2016-05-05 (-11d) | 2016-05-16 A → 2016-05-05 (-11d) |  | 100% → 0% | none → 0d |  | resources Food [0.1%]; Frank Zhang [50%]; Jim Kim; dancers; musician → Food [0.1%]; baseline start 2016-05-13 → none; baseline finish 2016-05-16 → none |
| 18 | Scene 1 vocal recording | 2016-05-16 A → 2016-05-05 (-11d) | 2016-05-17 A → 2016-05-06 (-11d) | 1.13d → 1d | 100% → 0% | none → 0d |  | resources Food [0.1%]; Jeff Pike; Don Funk; Sound Technician; musician → none; baseline start 2016-05-16 → none; baseline finish 2016-05-17 → none |
| 19 | Scene 1 video shoot | 2016-05-17 A → 2016-05-06 (-11d) | 2016-05-20 A → 2016-05-10 (-10d) | 3d → 2d | 100% → 0% | none → 0d |  | resources Sound Technician; Microphone Bundles; Don Funk; DVD [0.25 2-hour disc]; David Barber [50%]; Greg Guzik; Bottled Water [1 24 bottle case] → none; baseline start 2016-05-17 → none; baseline finish 2016-05-19 → none |
| 20 | Scene 1 teardown | 2016-05-20 A → 2016-05-10 (-10d) | 2016-05-23 A → 2016-05-11 (-12d) |  | 100% → 0% | none → 0d |  | resources Ido Ben-Sachar; Patricia Doyle → none; baseline start 2016-05-19 → none; baseline finish 2016-05-20 → none |
| 21 | Scene 1 complete | 2016-05-23 A → 2016-05-11 (-12d) | 2016-05-23 A → 2016-05-11 (-12d) |  | 100% → 0% | none → 0d |  | baseline start 2016-05-20 → none; baseline finish 2016-05-20 → none |
| 22 | **Scene 2** | 2016-05-25 → 2016-05-11 (-14d) | 2016-06-08 → 2016-05-20 (-19d) | 9.75d → 6.75d |  | 0.25d → 0d |  | baseline start 2016-05-25 → none; baseline finish 2016-06-03 → none |
| 23 | Scene 2 begin | 2016-05-25 → 2016-05-11 (-14d) | 2016-05-25 → 2016-05-11 (-14d) |  |  | 0.25d → 0d |  | constraint start no earlier than 2016-05-25 → none; baseline start 2016-05-25 → none; baseline finish 2016-05-25 → none |
| 24 | Scene 2 setup | 2016-05-25 → 2016-05-11 (-14d) | 2016-05-26 → 2016-05-13 (-13d) |  |  | 0.25d → 0d |  | resources Brad Sutton; Dolly; Chris Preston; electrician → none; baseline start 2016-05-25 → none; baseline finish 2016-05-26 → none |
| 25 | Scene 2 rehearsal | 2016-05-27 → 2016-05-13 (-14d) | 2016-05-31 → 2016-05-16 (-15d) | 14h → 6h |  | 0.25d → 0d |  | resources Food [0.1%]; Luis Bonifaz; dancers; musician → Food [0.1%]; baseline start 2016-05-27 → none; baseline finish 2016-05-27 → none |
| 26 | Scene 2 vocal recording | 2016-05-31 → 2016-05-16 (-15d) | 2016-06-03 → 2016-05-17 (-17d) | 3d → 1d |  | 0.25d → 0d |  | resources Yan Li; Sound Technician; Don Funk; musician → none; baseline start 2016-05-27 → none; baseline finish 2016-05-31 → none |
| 27 | Scene 2 video shoot | 2016-06-03 → 2016-05-17 (-17d) | 2016-06-07 → 2016-05-19 (-19d) |  |  | 0.25d → 0d |  | resources Digital Truck-Mounted Video Camera; Dolly; Don Funk; DVD [1 2-hour disc]; dancers; Bottled Water [1 24 bottle case]; Jane Clayton; musician → none; baseline start 2016-05-31 → none; baseline finish 2016-06-02 → none |
| 28 | Scene 2 teardown | 2016-06-07 → 2016-05-19 (-19d) | 2016-06-08 → 2016-05-20 (-19d) |  |  | 0.25d → 0d |  | resources Ido Ben-Sachar; Patricia Doyle → none; baseline start 2016-06-02 → none; baseline finish 2016-06-03 → none |
| 29 | Scene 2 complete | 2016-06-08 → 2016-05-20 (-19d) | 2016-06-08 → 2016-05-20 (-19d) |  |  | 0.25d → 0d |  | baseline start 2016-06-03 → none; baseline finish 2016-06-03 → none |
| 30 | **Scene 3** | 2016-06-08 → 2016-05-20 (-19d) | 2016-06-22 → 2016-06-01 (-21d) | 10.25d → 6.75d |  |  |  | baseline start 2016-06-03 → none; baseline finish 2016-06-14 → none |
| 31 | Scene 3 begin | 2016-06-08 → 2016-05-20 (-19d) | 2016-06-08 → 2016-05-20 (-19d) |  |  | 0.25d → 0d |  | baseline start 2016-06-03 → none; baseline finish 2016-06-03 → none |
| 32 | Scene 3 setup | 2016-06-08 → 2016-05-20 (-19d) | 2016-06-15 → 2016-05-24 (-22d) |  |  | 0.25d → 0d |  | resources Brad Sutton; Chris Preston → none; baseline start 2016-06-03 → none; baseline finish 2016-06-07 → none |
| 33 | Scene 3 rehearsal | 2016-06-16 → 2016-05-24 (-23d) | 2016-06-16 → 2016-05-25 (-22d) |  |  | 0.25d → 0d |  | constraint start no earlier than 2016-06-09 → none; resources dancers; Eva Corets; musician → none; baseline start 2016-06-07 → none; baseline finish 2016-06-08 → none |
| 34 | Scene 3 vocal recording | 2016-06-16 → 2016-05-25 (-22d) | 2016-06-17 → 2016-05-26 (-22d) |  |  | 0.25d → 0d |  | constraint start no earlier than 2016-06-09 → none; resources musician; Sound Technician; Don Funk → none; baseline start 2016-06-08 → none; baseline finish 2016-06-09 → none |
| 35 | Scene 3 video shoot | 2016-06-17 → 2016-05-26 (-22d) | 2016-06-22 → 2016-05-31 (-22d) |  |  | 0.25d → 0d |  | resources Bottled Water [1 24 bottle case]; dancers; DVD [1 2-hour disc]; Dry Ice [1 10 lb block]; Don Funk; Florian Voss → none; baseline start 2016-06-09 → none; baseline finish 2016-06-14 → none |
| 36 | Scene 3 teardown | 2016-06-22 → 2016-05-31 (-22d) | 2016-06-22 → 2016-06-01 (-21d) |  |  |  |  | resources Ido Ben-Sachar; Patricia Doyle → none; baseline start 2016-06-14 → none; baseline finish 2016-06-14 → none |
| 37 | Scene 3 complete | 2016-06-22 → 2016-06-01 (-21d) | 2016-06-22 → 2016-06-01 (-21d) |  |  |  |  | baseline start 2016-06-14 → none; baseline finish 2016-06-14 → none |
| 38 | Production complete | 2016-07-01 → 2016-06-01 (-30d) | 2016-07-01 → 2016-06-01 (-30d) |  |  |  | Scene 4 complete → 37 | baseline start 2016-06-23 → none; baseline finish 2016-06-23 → none |
| 39 | **Post-Production** | 2016-07-01 → 2016-01-04 (-179d) | 2016-08-08 → 2016-06-01 (-68d) | 26d → 105.25d |  |  |  | baseline start 2016-06-23 → none; baseline finish 2016-07-29 → none |
| 40 | Post-Production Begins | 2016-07-01 → 2016-06-01 (-30d) | 2016-07-01 → 2016-06-01 (-30d) |  |  |  |  | baseline start 2016-06-23 → none; baseline finish 2016-06-23 → none |
| 41 | Post-Production complete | 2016-08-08 → 2016-01-04 (-217d) | 2016-08-08 → 2016-01-04 (-217d) |  |  | 0d → 115.25d | Send Copy 2 AV master and dubbed master to → none | baseline start 2016-07-29 → none; baseline finish 2016-07-29 → none |

## Version 4 (saved 2013-05-28, file Don Funk Music Video 3M.mpp)

Last finish 2016-06-01 → 2016-06-15 (+14d).

Changed:

| ID | Task | Start | Finish | Duration | Other |
| --- | --- | --- | --- | --- | --- |
| 1 | **Pre-Production** |  | 2016-05-02 → 2016-05-16 (+14d) | 85d → 95d |  |
| 3 | Review screenplay |  | 2016-01-26 → 2016-01-25 (-1d) | 3.6w → 3w | resources Scott Seely; Jeff Pike → none |
| 4 | Develop scene blocking and schedule |  | 2016-02-02 → 2016-02-01 (-1d) | 1.2w → 1w | resources Scott Seely; Judy Lew → none |
| 5 | Develop production layouts |  | 2016-02-15 → 2016-02-29 (+14d) | 0.5mo → 1mo | resources Jeff Pike; Brenda Diaz; Annete Hill [50%]; Brad Sutton → none |
| 6 | Identify and reserve locations | 2016-02-16 → 2016-03-01 (+14d) | 2016-03-21 → 2016-04-04 (+14d) |  | resources Jeff Pike [57.1%]; Yan Li [57.1%]; Annete Hill [28.6%]; Ryan Ihrig [57.1%]; DVD [8 2-hour disc] → none |
| 7 | Book musicians | 2016-03-22 → 2016-04-05 (+14d) | 2016-04-04 → 2016-04-18 (+14d) |  | resources David Barber [50%]; Brenda Diaz [50%] → none |
| 8 | Book dancers | 2016-04-05 → 2016-04-19 (+14d) | 2016-04-18 → 2016-05-02 (+14d) |  |  |
| 9 | Reserve audio recording equipment | 2016-04-19 → 2016-05-03 (+14d) | 2016-04-25 → 2016-05-09 (+14d) |  |  |
| 10 | Reserve video recording equipment | 2016-04-26 → 2016-05-10 (+14d) | 2016-05-02 → 2016-05-16 (+14d) |  |  |
| 11 | Pre-Production complete | 2016-05-02 → 2016-05-16 (+14d) | 2016-05-02 → 2016-05-16 (+14d) |  |  |
| 12 | **Production** | 2016-05-02 → 2016-05-16 (+14d) | 2016-06-01 → 2016-06-15 (+14d) |  |  |
| 13 | Production begins | 2016-05-02 → 2016-05-16 (+14d) | 2016-05-02 → 2016-05-16 (+14d) |  |  |
| 14 | **Scene 1** | 2016-05-02 → 2016-05-16 (+14d) | 2016-05-11 → 2016-05-25 (+14d) |  |  |
| 15 | Scene 1 begin | 2016-05-02 → 2016-05-16 (+14d) | 2016-05-02 → 2016-05-16 (+14d) |  |  |
| 16 | Scene 1 setup | 2016-05-03 → 2016-05-17 (+14d) | 2016-05-04 → 2016-05-18 (+14d) |  |  |
| 17 | Scene 1 rehearsal | 2016-05-05 → 2016-05-19 (+14d) | 2016-05-05 → 2016-05-19 (+14d) |  | resources Food [0.1%] → none |
| 18 | Scene 1 vocal recording | 2016-05-05 → 2016-05-19 (+14d) | 2016-05-06 → 2016-05-20 (+14d) |  |  |
| 19 | Scene 1 video shoot | 2016-05-06 → 2016-05-20 (+14d) | 2016-05-10 → 2016-05-24 (+14d) |  |  |
| 20 | Scene 1 teardown | 2016-05-10 → 2016-05-24 (+14d) | 2016-05-11 → 2016-05-25 (+14d) |  |  |
| 21 | Scene 1 complete | 2016-05-11 → 2016-05-25 (+14d) | 2016-05-11 → 2016-05-25 (+14d) |  |  |
| 22 | **Scene 2** | 2016-05-11 → 2016-05-25 (+14d) | 2016-05-20 → 2016-06-06 (+17d) |  |  |
| 23 | Scene 2 begin | 2016-05-11 → 2016-05-25 (+14d) | 2016-05-11 → 2016-05-25 (+14d) |  |  |
| 24 | Scene 2 setup | 2016-05-11 → 2016-05-25 (+14d) | 2016-05-13 → 2016-05-27 (+14d) |  |  |
| 25 | Scene 2 rehearsal | 2016-05-13 → 2016-05-27 (+14d) | 2016-05-16 → 2016-05-31 (+15d) |  | resources Food [0.1%] → none |
| 26 | Scene 2 vocal recording | 2016-05-16 → 2016-05-31 (+15d) | 2016-05-17 → 2016-06-01 (+15d) |  |  |
| 27 | Scene 2 video shoot | 2016-05-17 → 2016-06-01 (+15d) | 2016-05-19 → 2016-06-03 (+15d) |  |  |
| 28 | Scene 2 teardown | 2016-05-19 → 2016-06-03 (+15d) | 2016-05-20 → 2016-06-06 (+17d) |  |  |
| 29 | Scene 2 complete | 2016-05-20 → 2016-06-06 (+17d) | 2016-05-20 → 2016-06-06 (+17d) |  |  |
| 30 | **Scene 3** | 2016-05-20 → 2016-06-06 (+17d) | 2016-06-01 → 2016-06-15 (+14d) |  |  |
| 31 | Scene 3 begin | 2016-05-20 → 2016-06-06 (+17d) | 2016-05-20 → 2016-06-06 (+17d) |  |  |
| 32 | Scene 3 setup | 2016-05-20 → 2016-06-06 (+17d) | 2016-05-24 → 2016-06-08 (+15d) |  |  |
| 33 | Scene 3 rehearsal | 2016-05-24 → 2016-06-08 (+15d) | 2016-05-25 → 2016-06-09 (+15d) |  |  |
| 34 | Scene 3 vocal recording | 2016-05-25 → 2016-06-09 (+15d) | 2016-05-26 → 2016-06-10 (+15d) |  |  |
| 35 | Scene 3 video shoot | 2016-05-26 → 2016-06-10 (+15d) | 2016-05-31 → 2016-06-14 (+14d) |  |  |
| 36 | Scene 3 teardown | 2016-05-31 → 2016-06-14 (+14d) | 2016-06-01 → 2016-06-15 (+14d) |  |  |
| 37 | Scene 3 complete | 2016-06-01 → 2016-06-15 (+14d) | 2016-06-01 → 2016-06-15 (+14d) |  |  |
| 38 | Production complete | 2016-06-01 → 2016-06-15 (+14d) | 2016-06-01 → 2016-06-15 (+14d) |  |  |
| 39 | **Post-Production** |  | 2016-06-01 → 2016-06-15 (+14d) | 105.25d → 115.25d |  |
| 40 | Post-Production Begins | 2016-06-01 → 2016-06-15 (+14d) | 2016-06-01 → 2016-06-15 (+14d) |  |  |

## Version 5 (saved 2013-05-28, file Don Funk Music Video 4-6.mpp)

Last finish 2016-06-15 → 2016-07-29 (+44d).

Added:

| ID | Task | Duration | Start | Finish | Predecessors | Constraint | Resources |
| --- | --- | --- | --- | --- | --- | --- | --- |
| 11 | **Status Meeting** | 69.12d | 2016-01-04 | 2016-04-11 |  |  |  |
| 12 | Status Meeting 1 | 1h | 2016-01-04 | 2016-01-04 |  | start no earlier than 2016-01-04 | Brad Sutton; Chris Preston; Eva Corets; Jamie Reding; Jane Clayton; Judy Lew |
| 13 | Status Meeting 2 | 1h | 2016-01-11 | 2016-01-11 |  | start no earlier than 2016-01-11 | Brad Sutton; Chris Preston; Eva Corets; Jamie Reding; Jane Clayton; Judy Lew |
| 14 | Status Meeting 3 | 1h | 2016-01-19 | 2016-01-19 |  | start no earlier than 2016-01-18 | Brad Sutton; Chris Preston; Eva Corets; Jamie Reding; Jane Clayton; Judy Lew |
| 15 | Status Meeting 4 | 1h | 2016-01-25 | 2016-01-25 |  | start no earlier than 2016-01-25 | Brad Sutton; Chris Preston; Eva Corets; Jamie Reding; Jane Clayton; Judy Lew |
| 16 | Status Meeting 5 | 1h | 2016-02-01 | 2016-02-01 |  | start no earlier than 2016-02-01 | Brad Sutton; Chris Preston; Eva Corets; Jamie Reding; Jane Clayton; Judy Lew |
| 17 | Status Meeting 6 | 1h | 2016-02-08 | 2016-02-08 |  | start no earlier than 2016-02-08 | Brad Sutton; Chris Preston; Eva Corets; Jamie Reding; Jane Clayton; Judy Lew |
| 18 | Status Meeting 7 | 1h | 2016-02-15 | 2016-02-15 |  | start no earlier than 2016-02-15 | Brad Sutton; Chris Preston; Eva Corets; Jamie Reding; Jane Clayton; Judy Lew |
| 19 | Status Meeting 8 | 1h | 2016-02-22 | 2016-02-22 |  | start no earlier than 2016-02-22 | Brad Sutton; Chris Preston; Eva Corets; Jamie Reding; Jane Clayton; Judy Lew |
| 20 | Status Meeting 9 | 1h | 2016-02-29 | 2016-02-29 |  | start no earlier than 2016-02-29 | Brad Sutton; Chris Preston; Eva Corets; Jamie Reding; Jane Clayton; Judy Lew |
| 21 | Status Meeting 10 | 1h | 2016-03-07 | 2016-03-07 |  | start no earlier than 2016-03-07 | Brad Sutton; Chris Preston; Eva Corets; Jamie Reding; Jane Clayton; Judy Lew |
| 22 | Status Meeting 11 | 1h | 2016-03-14 | 2016-03-14 |  | start no earlier than 2016-03-14 | Brad Sutton; Chris Preston; Eva Corets; Jamie Reding; Jane Clayton; Judy Lew |
| 23 | Status Meeting 12 | 1h | 2016-03-21 | 2016-03-21 |  | start no earlier than 2016-03-21 | Brad Sutton; Chris Preston; Eva Corets; Jamie Reding; Jane Clayton; Judy Lew |
| 24 | Status Meeting 13 | 1h | 2016-03-28 | 2016-03-28 |  | start no earlier than 2016-03-28 | Brad Sutton; Chris Preston; Eva Corets; Jamie Reding; Jane Clayton; Judy Lew |
| 25 | Status Meeting 14 | 1h | 2016-04-04 | 2016-04-04 |  | start no earlier than 2016-04-04 | Brad Sutton; Chris Preston; Eva Corets; Jamie Reding; Jane Clayton; Judy Lew |
| 26 | Status Meeting 15 | 1h | 2016-04-11 | 2016-04-11 |  | start no earlier than 2016-04-11 | Brad Sutton; Chris Preston; Eva Corets; Jamie Reding; Jane Clayton; Judy Lew |
| 54 | **Scene 4** | 6.75d | 2016-06-14 | 2016-06-23 |  |  |  |
| 55 | Scene 4 begin | 0d | 2016-06-14 | 2016-06-14 | 53 |  |  |
| 56 | Scene 4 setup | 2d | 2016-06-15 | 2016-06-16 | 55 |  | Brad Sutton; Chris Preston; electrician |
| 57 | Scene 4 rehearsal | 6h | 2016-06-17 | 2016-06-17 | 56 |  | dancers; musician |
| 58 | Scene 4 vocal recording | 1d | 2016-06-17 | 2016-06-20 | 57 |  | musician; Sound Technician; Don Funk; Luis Bonifaz |
| 59 | Scene 4 video shoot | 2d | 2016-06-20 | 2016-06-22 | 58 |  | Sound Technician; DVD [1 2-hour disc]; Don Funk; David Barber [50%]; Dry Ice [1 10 lb block]; Frank Zhang [50%]; Bottled Water [1 24 bottle case] |
| 60 | Scene 4 teardown | 1d | 2016-06-22 | 2016-06-23 | 59 |  | Patricia Doyle; Ido Ben-Sachar |
| 61 | Scene 4 complete | 0d | 2016-06-23 | 2016-06-23 | 60 |  |  |
| 65 | Log video footage | 3d | 2016-06-23 | 2016-06-28 | 64 |  | Video Editing Studio; Shu Ito |
| 66 | Log audio tracks by scene | 2d | 2016-06-23 | 2016-06-27 | 64 |  | Sound Editing Studio; Maria Hammond; Jim Kim |
| 67 | Rough edit video - paper | 1w | 2016-06-28 | 2016-07-05 | 65, 66 |  | Bjorn Rettig [50%]; Florian Voss; Jamie Reding; Jane Clayton; Shu Ito |
| 68 | Rough audio edit | 1w | 2016-07-05 | 2016-07-12 | 67 |  |  |
| 69 | Fine audio edit | 3d | 2016-07-12 | 2016-07-15 | 68 |  | Sound Editing Studio; Maria Hammond; Jim Kim |
| 70 | Fine video edit | 3d | 2016-07-12 | 2016-07-15 | 68 |  | Video Editing Studio; Shu Ito; Greg Guzik; David Barber [50%] |
| 71 | Dub audio to video | 2d | 2016-07-15 | 2016-07-19 | 70 |  | Video Editing Studio; Shu Ito |
| 72 | Internal review viewing | 1d | 2016-07-19 | 2016-07-20 | 71 |  | Scott Seely; Jamie Reding; Jeff Pike; Judy Lew; Brad Sutton; Brenda Diaz; Annette Hill [50%]; Don Funk; Ryan Ihrig |
| 73 | Final edits | 4d | 2016-07-20 | 2016-07-25 | 72 |  | Jamie Reding; Scott Seely; Jeff Pike; Brad Sutton; Annette Hill [50%]; Video Editing Studio |
| 74 | Formal approval viewing | 1d | 2016-07-25 | 2016-07-26 | 73 |  | Scott Seely; Judy Lew; Brad Sutton; Don Funk; Annette Hill [50%]; Jane Clayton; Video Editing Studio |
| 75 | Duplicate audio and video masters | 1d | 2016-07-26 | 2016-07-27 | 74 |  | Sound Technician; Sound Editing Studio; Video Editing Studio; Shu Ito; Patricia Doyle; Luis Bonifaz |
| 76 | Archive Copy 1 AV masters | 1d | 2016-07-27 | 2016-07-28 | 75 |  | Yan Li |
| 77 | Send Copy 2 AV master and dubbed master to | 1d | 2016-07-28 | 2016-07-29 | 76 |  | Yan Li |

Changed:

| ID | Task | Start | Finish | Duration | Total float | Predecessors | Other |
| --- | --- | --- | --- | --- | --- | --- | --- |
| 1 | **Pre-Production** |  | 2016-05-16 → 2016-05-04 (-12d) | 95d → 86.38d | 0d → 7.88d |  |  |
| 3 | Review screenplay |  | 2016-01-25 → 2016-01-26 (+1d) | 3w → 3.6w | 0d → 2.88d |  | resources none → Scott Seely; Jeff Pike |
| 4 | Develop scene blocking and schedule |  | 2016-02-01 → 2016-02-05 (+4d) | 1w → 2w | 0d → 2.88d |  | resources none → Scott Seely [58%]; Judy Lew [59.7%] |
| 5 | Develop production layouts | 2016-02-02 → 2016-02-05 (+3d) | 2016-02-29 → 2016-02-24 (-5d) | 1mo → 0.5mo | 0d → 3.38d |  | resources none → Jeff Pike; Brenda Diaz; Annete Hill [50%]; Brad Sutton |
| 6 | Identify and reserve locations | 2016-03-01 → 2016-02-24 (-6d) | 2016-04-04 → 2016-03-30 (-5d) |  | 0d → 3.38d |  | resources none → Jeff Pike [50%]; Yan Li [57.1%]; Annete Hill [28.6%]; Ryan Ihrig [75%]; DVD [8 2-hour disc] |
| 7 | Book musicians | 2016-04-05 → 2016-03-30 (-6d) | 2016-04-18 → 2016-04-13 (-5d) |  | 0d → 3.38d |  |  |
| 8 | Book dancers | 2016-04-19 → 2016-04-13 (-6d) | 2016-05-02 → 2016-04-27 (-5d) |  | 0d → 3.38d |  |  |
| 9 | Reserve audio recording equipment | 2016-05-03 → 2016-04-27 (-6d) | 2016-05-09 → 2016-05-04 (-5d) |  | 0d → 3.38d |  | resources none → Yan Li |
| 10 | Reserve video recording equipment | 2016-05-10 → 2016-04-27 (-13d) | 2016-05-16 → 2016-05-04 (-12d) |  | 0d → 8.38d | 9 → 8 | resources none → Yan Li |
| 27 | Pre-Production complete | 2016-05-16 → 2016-05-04 (-12d) | 2016-05-16 → 2016-05-04 (-12d) |  | 0d → 8.38d |  |  |
| 28 | **Production** | 2016-05-16 → 2016-05-04 (-12d) | 2016-06-15 → 2016-06-23 (+8d) | 20.25d → 35.38d |  |  |  |
| 29 | Production begins | 2016-05-16 → 2016-05-04 (-12d) | 2016-05-16 → 2016-05-04 (-12d) |  | 0d → 8.38d |  |  |
| 30 | **Scene 1** | 2016-05-16 → 2016-05-04 (-12d) | 2016-05-25 → 2016-05-13 (-12d) |  | 0d → 8.38d |  |  |
| 31 | Scene 1 begin | 2016-05-16 → 2016-05-04 (-12d) | 2016-05-16 → 2016-05-04 (-12d) |  | 0d → 8.38d |  |  |
| 32 | Scene 1 setup | 2016-05-17 → 2016-05-04 (-13d) | 2016-05-18 → 2016-05-06 (-12d) |  | 0d → 8.38d |  | resources none → Light Banks; Chris Preston; Brad Sutton |
| 33 | Scene 1 rehearsal | 2016-05-19 → 2016-05-06 (-13d) | 2016-05-19 → 2016-05-09 (-10d) |  | 0d → 8.38d |  | resources none → Food [0.1%]; Frank Zhang [50%]; Jim Kim; dancers; musician |
| 34 | Scene 1 vocal recording | 2016-05-19 → 2016-05-09 (-10d) | 2016-05-20 → 2016-05-10 (-10d) |  | 0d → 8.38d |  | resources none → Food [0.1%]; Jeff Pike; Don Funk; Sound Technician; musician |
| 35 | Scene 1 video shoot | 2016-05-20 → 2016-05-10 (-10d) | 2016-05-24 → 2016-05-12 (-12d) |  | 0d → 8.38d |  | resources none → Sound Technician; Microphone Bundles; Don Funk; DVD [1 2-hour disc]; David Barber [50%]; Greg Guzik; Bottled Water [1 24 bottle case] |
| 36 | Scene 1 teardown | 2016-05-24 → 2016-05-12 (-12d) | 2016-05-25 → 2016-05-13 (-12d) |  | 0d → 8.38d |  | resources none → Ido Ben-Sachar; Patricia Doyle |
| 37 | Scene 1 complete | 2016-05-25 → 2016-05-13 (-12d) | 2016-05-25 → 2016-05-13 (-12d) |  | 0d → 8.38d |  |  |
| 38 | **Scene 2** |  | 2016-06-06 → 2016-06-03 (-3d) |  | 0d → 0.5d |  |  |
| 39 | Scene 2 begin |  |  |  | 0d → 0.5d |  | constraint none → start no earlier than 2016-05-25 |
| 40 | Scene 2 setup |  | 2016-05-27 → 2016-05-26 (-1d) |  | 0d → 0.5d |  | resources none → Brad Sutton; Dolly; Chris Preston; electrician |
| 41 | Scene 2 rehearsal |  | 2016-05-31 → 2016-05-27 (-4d) |  | 0d → 0.5d |  | resources none → Food [0.1%]; Luis Bonifaz; dancers; musician |
| 42 | Scene 2 vocal recording | 2016-05-31 → 2016-05-27 (-4d) | 2016-06-01 → 2016-05-31 (-1d) |  | 0d → 0.5d |  | resources none → Yan Li; Sound Technician; Don Funk; musician |
| 43 | Scene 2 video shoot | 2016-06-01 → 2016-05-31 (-1d) | 2016-06-03 → 2016-06-02 (-1d) |  | 0d → 0.5d |  | resources none → Digital Truck-Mounted Video Camera; Dolly; Don Funk; DVD [1 2-hour disc]; dancers; Bottled Water [1 24 bottle case]; Jane Clayton; musician |
| 44 | Scene 2 teardown | 2016-06-03 → 2016-06-02 (-1d) | 2016-06-06 → 2016-06-03 (-3d) |  | 0d → 0.5d |  | resources none → Ido Ben-Sachar; Patricia Doyle |
| 45 | Scene 2 complete | 2016-06-06 → 2016-06-03 (-3d) | 2016-06-06 → 2016-06-03 (-3d) |  | 0d → 0.5d |  |  |
| 46 | **Scene 3** | 2016-06-06 → 2016-06-03 (-3d) | 2016-06-15 → 2016-06-14 (-1d) | 6.75d → 7.25d |  |  |  |
| 47 | Scene 3 begin | 2016-06-06 → 2016-06-03 (-3d) | 2016-06-06 → 2016-06-03 (-3d) |  | 0d → 0.5d |  |  |
| 48 | Scene 3 setup | 2016-06-06 → 2016-06-03 (-3d) | 2016-06-08 → 2016-06-07 (-1d) |  | 0d → 0.5d |  | resources none → Brad Sutton; Chris Preston |
| 49 | Scene 3 rehearsal | 2016-06-08 → 2016-06-07 (-1d) | 2016-06-09 → 2016-06-08 (-1d) |  | 0d → 0.5d |  | resources none → dancers; Eva Corets; musician |
| 50 | Scene 3 vocal recording | 2016-06-09 → 2016-06-08 (-1d) | 2016-06-10 → 2016-06-09 (-1d) |  | 0d → 0.5d |  | resources none → musician; Sound Technician; Don Funk |
| 51 | Scene 3 video shoot | 2016-06-10 → 2016-06-09 (-1d) |  |  | 0d → 0.25d |  | resources none → Bottled Water [1 24 bottle case]; dancers; DVD [1 2-hour disc]; Dry Ice [1 10 lb block]; Don Funk; Florian Voss |
| 52 | Scene 3 teardown |  | 2016-06-15 → 2016-06-14 (-1d) |  |  |  | resources none → Ido Ben-Sachar; Patricia Doyle |
| 53 | Scene 3 complete | 2016-06-15 → 2016-06-14 (-1d) | 2016-06-15 → 2016-06-14 (-1d) |  |  |  |  |
| 62 | Production complete | 2016-06-15 → 2016-06-23 (+8d) | 2016-06-15 → 2016-06-23 (+8d) |  |  | 53 → 61 |  |
| 63 | **Post-Production** | 2016-01-04 → 2016-06-23 (+171d) | 2016-06-15 → 2016-07-29 (+44d) | 115.25d → 26d |  |  |  |
| 64 | Post-Production Begins | 2016-06-15 → 2016-06-23 (+8d) | 2016-06-15 → 2016-06-23 (+8d) |  |  |  |  |
| 78 | Post-Production complete | 2016-01-04 → 2016-07-29 (+207d) | 2016-01-04 → 2016-07-29 (+207d) |  | 115.25d → 0d | none → 77 |  |

## Version 6 (saved 2013-05-28, file Don Funk Music Video 4M.mpp)

Last finish 2016-07-29 → 2016-07-15 (-14d).

Removed: 11 Status Meeting; 12 Status Meeting 1; 13 Status Meeting 2; 14 Status Meeting 3; 15 Status Meeting 4; 16 Status Meeting 5; 17 Status Meeting 6; 18 Status Meeting 7; 19 Status Meeting 8; 20 Status Meeting 9; 21 Status Meeting 10; 22 Status Meeting 11; 23 Status Meeting 12; 24 Status Meeting 13; 25 Status Meeting 14; 26 Status Meeting 15

Changed:

| ID | Task | Start | Finish | Duration | Total float | Predecessors | Other |
| --- | --- | --- | --- | --- | --- | --- | --- |
| 1 | **Pre-Production** |  | 2016-05-04 → 2016-05-02 (-2d) | 86.38d → 85d | 7.88d → 0d |  |  |
| 4 | Develop scene blocking and schedule |  | 2016-02-05 → 2016-02-02 (-3d) | 2w → 1.2w | 2.88d → 0d |  | resources Scott Seely [58%]; Judy Lew [59.7%] → Scott Seely; Judy Lew |
| 5 | Develop production layouts | 2016-02-05 → 2016-02-02 (-3d) | 2016-02-24 → 2016-02-15 (-9d) |  | 3.38d → 0d |  |  |
| 6 | Identify and reserve locations | 2016-02-24 → 2016-02-16 (-8d) | 2016-03-30 → 2016-03-21 (-9d) |  | 3.38d → 0d |  | resources Jeff Pike [50%]; Yan Li [57.1%]; Annete Hill [28.6%]; Ryan Ihrig [75%]; DVD [8 2-hour disc] → Jeff Pike [57.1%]; Yan Li [57.1%]; Annete Hill [28.6%]; Ryan Ihrig [57.1%]; DVD [8 2-hour disc] |
| 7 | Book musicians | 2016-03-30 → 2016-03-22 (-8d) | 2016-04-13 → 2016-04-04 (-9d) |  | 3.38d → 0d |  |  |
| 8 | Book dancers | 2016-04-13 → 2016-04-05 (-8d) | 2016-04-27 → 2016-04-18 (-9d) |  | 3.38d → 0d |  |  |
| 9 | Reserve audio recording equipment | 2016-04-27 → 2016-04-19 (-8d) | 2016-05-04 → 2016-04-25 (-9d) |  | 3.38d → 0d |  | resources Yan Li → none |
| 10 | Reserve video recording equipment | 2016-04-27 → 2016-04-26 (-1d) | 2016-05-04 → 2016-05-02 (-2d) |  | 8.38d → 0d | 8 → 9 | resources Yan Li → none |
| 11 | Pre-Production complete | 2016-05-04 → 2016-05-02 (-2d) | 2016-05-04 → 2016-05-02 (-2d) |  | 8.38d → 0d |  |  |
| 12 | **Production** | 2016-05-04 → 2016-05-02 (-2d) | 2016-06-23 → 2016-06-09 (-14d) | 35.38d → 27d |  |  |  |
| 13 | Production begins | 2016-05-04 → 2016-05-02 (-2d) | 2016-05-04 → 2016-05-02 (-2d) |  | 8.38d → 0d |  |  |
| 14 | **Scene 1** | 2016-05-04 → 2016-05-02 (-2d) | 2016-05-13 → 2016-05-11 (-2d) |  | 8.38d → 0d |  |  |
| 15 | Scene 1 begin | 2016-05-04 → 2016-05-02 (-2d) | 2016-05-04 → 2016-05-02 (-2d) |  | 8.38d → 0d |  |  |
| 16 | Scene 1 setup | 2016-05-04 → 2016-05-03 (-1d) | 2016-05-06 → 2016-05-04 (-2d) |  | 8.38d → 0d |  |  |
| 17 | Scene 1 rehearsal | 2016-05-06 → 2016-05-05 (-1d) | 2016-05-09 → 2016-05-05 (-4d) |  | 8.38d → 0d |  |  |
| 18 | Scene 1 vocal recording | 2016-05-09 → 2016-05-05 (-4d) | 2016-05-10 → 2016-05-06 (-4d) |  | 8.38d → 0d |  |  |
| 19 | Scene 1 video shoot | 2016-05-10 → 2016-05-06 (-4d) | 2016-05-12 → 2016-05-10 (-2d) |  | 8.38d → 0d |  |  |
| 20 | Scene 1 teardown | 2016-05-12 → 2016-05-10 (-2d) | 2016-05-13 → 2016-05-11 (-2d) |  | 8.38d → 0d |  |  |
| 21 | Scene 1 complete | 2016-05-13 → 2016-05-11 (-2d) | 2016-05-13 → 2016-05-11 (-2d) |  | 8.38d → 0d |  |  |
| 22 | **Scene 2** | 2016-05-25 → 2016-05-11 (-14d) | 2016-06-03 → 2016-05-20 (-14d) |  | 0.5d → 0d |  |  |
| 23 | Scene 2 begin | 2016-05-25 → 2016-05-11 (-14d) | 2016-05-25 → 2016-05-11 (-14d) |  | 0.5d → 0d |  | constraint start no earlier than 2016-05-25 → none |
| 24 | Scene 2 setup | 2016-05-25 → 2016-05-11 (-14d) | 2016-05-26 → 2016-05-13 (-13d) |  | 0.5d → 0d |  |  |
| 25 | Scene 2 rehearsal | 2016-05-27 → 2016-05-13 (-14d) | 2016-05-27 → 2016-05-16 (-11d) |  | 0.5d → 0d |  |  |
| 26 | Scene 2 vocal recording | 2016-05-27 → 2016-05-16 (-11d) | 2016-05-31 → 2016-05-17 (-14d) |  | 0.5d → 0d |  |  |
| 27 | Scene 2 video shoot | 2016-05-31 → 2016-05-17 (-14d) | 2016-06-02 → 2016-05-19 (-14d) |  | 0.5d → 0d |  |  |
| 28 | Scene 2 teardown | 2016-06-02 → 2016-05-19 (-14d) | 2016-06-03 → 2016-05-20 (-14d) |  | 0.5d → 0d |  |  |
| 29 | Scene 2 complete | 2016-06-03 → 2016-05-20 (-14d) | 2016-06-03 → 2016-05-20 (-14d) |  | 0.5d → 0d |  |  |
| 30 | **Scene 3** | 2016-06-03 → 2016-05-20 (-14d) | 2016-06-14 → 2016-06-01 (-13d) | 7.25d → 6.75d |  |  |  |
| 31 | Scene 3 begin | 2016-06-03 → 2016-05-20 (-14d) | 2016-06-03 → 2016-05-20 (-14d) |  | 0.5d → 0d |  |  |
| 32 | Scene 3 setup | 2016-06-03 → 2016-05-20 (-14d) | 2016-06-07 → 2016-05-24 (-14d) |  | 0.5d → 0d |  |  |
| 33 | Scene 3 rehearsal | 2016-06-07 → 2016-05-24 (-14d) | 2016-06-08 → 2016-05-25 (-14d) |  | 0.5d → 0d |  |  |
| 34 | Scene 3 vocal recording | 2016-06-08 → 2016-05-25 (-14d) | 2016-06-09 → 2016-05-26 (-14d) |  | 0.5d → 0d |  |  |
| 35 | Scene 3 video shoot | 2016-06-09 → 2016-05-26 (-14d) | 2016-06-14 → 2016-05-31 (-14d) |  | 0.25d → 0d |  |  |
| 36 | Scene 3 teardown | 2016-06-14 → 2016-05-31 (-14d) | 2016-06-14 → 2016-06-01 (-13d) |  |  |  |  |
| 37 | Scene 3 complete | 2016-06-14 → 2016-06-01 (-13d) | 2016-06-14 → 2016-06-01 (-13d) |  |  |  |  |
| 38 | **Scene 4** | 2016-06-14 → 2016-06-01 (-13d) | 2016-06-23 → 2016-06-09 (-14d) |  |  |  |  |
| 39 | Scene 4 begin | 2016-06-14 → 2016-06-01 (-13d) | 2016-06-14 → 2016-06-01 (-13d) |  |  |  |  |
| 40 | Scene 4 setup | 2016-06-15 → 2016-06-01 (-14d) | 2016-06-16 → 2016-06-03 (-13d) |  |  |  |  |
| 41 | Scene 4 rehearsal | 2016-06-17 → 2016-06-03 (-14d) | 2016-06-17 → 2016-06-03 (-14d) |  |  |  |  |
| 42 | Scene 4 vocal recording | 2016-06-17 → 2016-06-06 (-11d) | 2016-06-20 → 2016-06-06 (-14d) |  |  |  |  |
| 43 | Scene 4 video shoot | 2016-06-20 → 2016-06-07 (-13d) | 2016-06-22 → 2016-06-08 (-14d) |  |  |  |  |
| 44 | Scene 4 teardown | 2016-06-22 → 2016-06-09 (-13d) | 2016-06-23 → 2016-06-09 (-14d) |  |  |  |  |
| 45 | Scene 4 complete | 2016-06-23 → 2016-06-09 (-14d) | 2016-06-23 → 2016-06-09 (-14d) |  |  |  |  |
| 46 | Production complete | 2016-06-23 → 2016-06-09 (-14d) | 2016-06-23 → 2016-06-09 (-14d) |  |  |  |  |
| 47 | **Post-Production** | 2016-06-23 → 2016-06-09 (-14d) | 2016-07-29 → 2016-07-15 (-14d) |  |  |  |  |
| 48 | Post-Production Begins | 2016-06-23 → 2016-06-09 (-14d) | 2016-06-23 → 2016-06-09 (-14d) |  |  |  |  |
| 49 | Log video footage | 2016-06-23 → 2016-06-10 (-13d) | 2016-06-28 → 2016-06-14 (-14d) |  |  |  |  |
| 50 | Log audio tracks by scene | 2016-06-23 → 2016-06-10 (-13d) | 2016-06-27 → 2016-06-13 (-14d) |  |  |  |  |
| 51 | Rough edit video - paper | 2016-06-28 → 2016-06-15 (-13d) | 2016-07-05 → 2016-06-21 (-14d) |  |  |  |  |
| 52 | Rough audio edit | 2016-07-05 → 2016-06-22 (-13d) | 2016-07-12 → 2016-06-28 (-14d) |  |  |  |  |
| 53 | Fine audio edit | 2016-07-12 → 2016-06-29 (-13d) | 2016-07-15 → 2016-07-01 (-14d) |  | 10d → 10.25d |  |  |
| 54 | Fine video edit | 2016-07-12 → 2016-06-29 (-13d) | 2016-07-15 → 2016-07-01 (-14d) |  |  |  |  |
| 55 | Dub audio to video | 2016-07-15 → 2016-07-04 (-11d) | 2016-07-19 → 2016-07-05 (-14d) |  |  |  |  |
| 56 | Internal review viewing | 2016-07-19 → 2016-07-05 (-14d) | 2016-07-20 → 2016-07-06 (-14d) |  |  |  |  |
| 57 | Final edits | 2016-07-20 → 2016-07-06 (-14d) | 2016-07-25 → 2016-07-12 (-13d) |  | 0d → 0.25d |  |  |
| 58 | Formal approval viewing | 2016-07-25 → 2016-07-12 (-13d) | 2016-07-26 → 2016-07-12 (-14d) |  |  |  |  |
| 59 | Duplicate audio and video masters | 2016-07-26 → 2016-07-13 (-13d) | 2016-07-27 → 2016-07-13 (-14d) |  |  |  |  |
| 60 | Archive Copy 1 AV masters | 2016-07-27 → 2016-07-14 (-13d) | 2016-07-28 → 2016-07-14 (-14d) |  |  |  |  |
| 61 | Send Copy 2 AV master and dubbed master to | 2016-07-28 → 2016-07-15 (-13d) | 2016-07-29 → 2016-07-15 (-14d) |  |  |  |  |
| 62 | Post-Production complete | 2016-07-29 → 2016-07-15 (-14d) | 2016-07-29 → 2016-07-15 (-14d) |  |  |  |  |

## Version 7 (saved 2013-05-28, file Don Funk Music Video 5-6.mpp)

Last finish 2016-07-15 → 2016-07-29 (+14d).

Added:

| ID | Task | Duration | Start | Finish | Constraint | Resources |
| --- | --- | --- | --- | --- | --- | --- |
| 11 | **Status Meeting** | 69.12d | 2016-01-04 | 2016-04-11 |  |  |
| 12 | Status Meeting 1 | 1h | 2016-01-04 | 2016-01-04 | start no earlier than 2016-01-04 | Brad Sutton; Chris Preston; Eva Corets; Jamie Reding; Jane Clayton; Judy Lew |
| 13 | Status Meeting 2 | 1h | 2016-01-11 | 2016-01-11 | start no earlier than 2016-01-11 | Brad Sutton; Chris Preston; Eva Corets; Jamie Reding; Jane Clayton; Judy Lew |
| 14 | Status Meeting 3 | 1h | 2016-01-19 | 2016-01-19 | start no earlier than 2016-01-18 | Brad Sutton; Chris Preston; Eva Corets; Jamie Reding; Jane Clayton; Judy Lew |
| 15 | Status Meeting 4 | 1h | 2016-01-25 | 2016-01-25 | start no earlier than 2016-01-25 | Brad Sutton; Chris Preston; Eva Corets; Jamie Reding; Jane Clayton; Judy Lew |
| 16 | Status Meeting 5 | 1h | 2016-02-01 | 2016-02-01 | start no earlier than 2016-02-01 | Brad Sutton; Chris Preston; Eva Corets; Jamie Reding; Jane Clayton; Judy Lew |
| 17 | Status Meeting 6 | 1h | 2016-02-08 | 2016-02-08 | start no earlier than 2016-02-08 | Brad Sutton; Chris Preston; Eva Corets; Jamie Reding; Jane Clayton; Judy Lew |
| 18 | Status Meeting 7 | 1h | 2016-02-15 | 2016-02-15 | start no earlier than 2016-02-15 | Brad Sutton; Chris Preston; Eva Corets; Jamie Reding; Jane Clayton; Judy Lew |
| 19 | Status Meeting 8 | 1h | 2016-02-22 | 2016-02-22 | start no earlier than 2016-02-22 | Brad Sutton; Chris Preston; Eva Corets; Jamie Reding; Jane Clayton; Judy Lew |
| 20 | Status Meeting 9 | 1h | 2016-02-29 | 2016-02-29 | start no earlier than 2016-02-29 | Brad Sutton; Chris Preston; Eva Corets; Jamie Reding; Jane Clayton; Judy Lew |
| 21 | Status Meeting 10 | 1h | 2016-03-07 | 2016-03-07 | start no earlier than 2016-03-07 | Brad Sutton; Chris Preston; Eva Corets; Jamie Reding; Jane Clayton; Judy Lew |
| 22 | Status Meeting 11 | 1h | 2016-03-14 | 2016-03-14 | start no earlier than 2016-03-14 | Brad Sutton; Chris Preston; Eva Corets; Jamie Reding; Jane Clayton; Judy Lew |
| 23 | Status Meeting 12 | 1h | 2016-03-21 | 2016-03-21 | start no earlier than 2016-03-21 | Brad Sutton; Chris Preston; Eva Corets; Jamie Reding; Jane Clayton; Judy Lew |
| 24 | Status Meeting 13 | 1h | 2016-03-28 | 2016-03-28 | start no earlier than 2016-03-28 | Brad Sutton; Chris Preston; Eva Corets; Jamie Reding; Jane Clayton; Judy Lew |
| 25 | Status Meeting 14 | 1h | 2016-04-04 | 2016-04-04 | start no earlier than 2016-04-04 | Brad Sutton; Chris Preston; Eva Corets; Jamie Reding; Jane Clayton; Judy Lew |
| 26 | Status Meeting 15 | 1h | 2016-04-11 | 2016-04-11 | start no earlier than 2016-04-11 | Brad Sutton; Chris Preston; Eva Corets; Jamie Reding; Jane Clayton; Judy Lew |

Changed:

| ID | Task | Start | Finish | Duration | Total float | Other |
| --- | --- | --- | --- | --- | --- | --- |
| 1 | **Pre-Production** |  | 2016-05-02 → 2016-05-05 (+3d) | 85d → 88d | 0d → -4d |  |
| 4 | Develop scene blocking and schedule | 2016-01-26 → 2016-01-20 (-6d) | 2016-02-02 → 2016-02-01 (-1d) | 1.2w → 2.12w | 0d → -4d | constraint none → start no later than 2016-01-20; resources Scott Seely; Judy Lew → Scott Seely [58%]; Judy Lew [59.7%] |
| 5 | Develop production layouts |  | 2016-02-15 → 2016-02-18 (+3d) |  | 0d → 6.75d |  |
| 6 | Identify and reserve locations | 2016-02-16 → 2016-02-19 (+3d) | 2016-03-21 → 2016-03-24 (+3d) |  | 0d → 4d | resources Jeff Pike [57.1%]; Yan Li [57.1%]; Annete Hill [28.6%]; Ryan Ihrig [57.1%]; DVD [8 2-hour disc] → Jeff Pike [50%]; Yan Li [57.1%]; Annete Hill [28.6%]; Ryan Ihrig [75%]; DVD [8 2-hour disc] |
| 7 | Book musicians | 2016-03-22 → 2016-03-25 (+3d) | 2016-04-04 → 2016-04-07 (+3d) |  | 0d → 4d |  |
| 8 | Book dancers | 2016-04-05 → 2016-04-08 (+3d) | 2016-04-18 → 2016-04-21 (+3d) |  | 0d → 4d |  |
| 9 | Reserve audio recording equipment | 2016-04-19 → 2016-04-22 (+3d) | 2016-04-25 → 2016-04-28 (+3d) |  | 0d → 6.75d |  |
| 10 | Reserve video recording equipment | 2016-04-26 → 2016-04-29 (+3d) | 2016-05-02 → 2016-05-05 (+3d) |  | 0d → 4d |  |
| 27 | Pre-Production complete | 2016-05-02 → 2016-05-05 (+3d) | 2016-05-02 → 2016-05-05 (+3d) |  | 0d → 6.75d |  |
| 28 | **Production** | 2016-05-02 → 2016-05-05 (+3d) | 2016-06-09 → 2016-06-23 (+14d) | 27d → 33.75d |  |  |
| 29 | Production begins | 2016-05-02 → 2016-05-05 (+3d) | 2016-05-02 → 2016-05-05 (+3d) |  | 0d → 6.75d |  |
| 30 | **Scene 1** | 2016-05-02 → 2016-05-05 (+3d) | 2016-05-11 → 2016-05-16 (+5d) |  | 0d → 6.75d |  |
| 31 | Scene 1 begin | 2016-05-02 → 2016-05-05 (+3d) | 2016-05-02 → 2016-05-05 (+3d) |  | 0d → 6.75d |  |
| 32 | Scene 1 setup | 2016-05-03 → 2016-05-06 (+3d) | 2016-05-04 → 2016-05-09 (+5d) |  | 0d → 6.75d |  |
| 33 | Scene 1 rehearsal | 2016-05-05 → 2016-05-10 (+5d) | 2016-05-05 → 2016-05-10 (+5d) |  | 0d → 6.75d |  |
| 34 | Scene 1 vocal recording | 2016-05-05 → 2016-05-10 (+5d) | 2016-05-06 → 2016-05-11 (+5d) |  | 0d → 6.75d |  |
| 35 | Scene 1 video shoot | 2016-05-06 → 2016-05-11 (+5d) | 2016-05-10 → 2016-05-13 (+3d) |  | 0d → 6.75d |  |
| 36 | Scene 1 teardown | 2016-05-10 → 2016-05-13 (+3d) | 2016-05-11 → 2016-05-16 (+5d) |  | 0d → 6.75d |  |
| 37 | Scene 1 complete | 2016-05-11 → 2016-05-16 (+5d) | 2016-05-11 → 2016-05-16 (+5d) |  | 0d → 6.75d |  |
| 38 | **Scene 2** | 2016-05-11 → 2016-05-25 (+14d) | 2016-05-20 → 2016-06-03 (+14d) |  | 0d → 0.5d |  |
| 39 | Scene 2 begin | 2016-05-11 → 2016-05-25 (+14d) | 2016-05-11 → 2016-05-25 (+14d) |  | 0d → 0.5d | constraint none → start no earlier than 2016-05-25 |
| 40 | Scene 2 setup | 2016-05-11 → 2016-05-25 (+14d) | 2016-05-13 → 2016-05-26 (+13d) |  | 0d → 0.5d |  |
| 41 | Scene 2 rehearsal | 2016-05-13 → 2016-05-27 (+14d) | 2016-05-16 → 2016-05-27 (+11d) |  | 0d → 0.5d |  |
| 42 | Scene 2 vocal recording | 2016-05-16 → 2016-05-27 (+11d) | 2016-05-17 → 2016-05-31 (+14d) |  | 0d → 0.5d |  |
| 43 | Scene 2 video shoot | 2016-05-17 → 2016-05-31 (+14d) | 2016-05-19 → 2016-06-02 (+14d) |  | 0d → 0.5d |  |
| 44 | Scene 2 teardown | 2016-05-19 → 2016-06-02 (+14d) | 2016-05-20 → 2016-06-03 (+14d) |  | 0d → 0.5d |  |
| 45 | Scene 2 complete | 2016-05-20 → 2016-06-03 (+14d) | 2016-05-20 → 2016-06-03 (+14d) |  | 0d → 0.5d |  |
| 46 | **Scene 3** | 2016-05-20 → 2016-06-03 (+14d) | 2016-06-01 → 2016-06-14 (+13d) | 6.75d → 7.25d |  |  |
| 47 | Scene 3 begin | 2016-05-20 → 2016-06-03 (+14d) | 2016-05-20 → 2016-06-03 (+14d) |  | 0d → 0.5d |  |
| 48 | Scene 3 setup | 2016-05-20 → 2016-06-03 (+14d) | 2016-05-24 → 2016-06-07 (+14d) |  | 0d → 0.5d |  |
| 49 | Scene 3 rehearsal | 2016-05-24 → 2016-06-07 (+14d) | 2016-05-25 → 2016-06-08 (+14d) |  | 0d → 0.5d |  |
| 50 | Scene 3 vocal recording | 2016-05-25 → 2016-06-08 (+14d) | 2016-05-26 → 2016-06-09 (+14d) |  | 0d → 0.5d |  |
| 51 | Scene 3 video shoot | 2016-05-26 → 2016-06-09 (+14d) | 2016-05-31 → 2016-06-14 (+14d) |  | 0d → 0.25d |  |
| 52 | Scene 3 teardown | 2016-05-31 → 2016-06-14 (+14d) | 2016-06-01 → 2016-06-14 (+13d) |  |  |  |
| 53 | Scene 3 complete | 2016-06-01 → 2016-06-14 (+13d) | 2016-06-01 → 2016-06-14 (+13d) |  |  |  |
| 54 | **Scene 4** | 2016-06-01 → 2016-06-14 (+13d) | 2016-06-09 → 2016-06-23 (+14d) |  |  |  |
| 55 | Scene 4 begin | 2016-06-01 → 2016-06-14 (+13d) | 2016-06-01 → 2016-06-14 (+13d) |  |  |  |
| 56 | Scene 4 setup | 2016-06-01 → 2016-06-15 (+14d) | 2016-06-03 → 2016-06-16 (+13d) |  |  |  |
| 57 | Scene 4 rehearsal | 2016-06-03 → 2016-06-17 (+14d) | 2016-06-03 → 2016-06-17 (+14d) |  |  |  |
| 58 | Scene 4 vocal recording | 2016-06-06 → 2016-06-17 (+11d) | 2016-06-06 → 2016-06-20 (+14d) |  |  |  |
| 59 | Scene 4 video shoot | 2016-06-07 → 2016-06-20 (+13d) | 2016-06-08 → 2016-06-22 (+14d) |  |  |  |
| 60 | Scene 4 teardown | 2016-06-09 → 2016-06-22 (+13d) | 2016-06-09 → 2016-06-23 (+14d) |  |  |  |
| 61 | Scene 4 complete | 2016-06-09 → 2016-06-23 (+14d) | 2016-06-09 → 2016-06-23 (+14d) |  |  |  |
| 62 | Production complete | 2016-06-09 → 2016-06-23 (+14d) | 2016-06-09 → 2016-06-23 (+14d) |  |  |  |
| 63 | **Post-Production** | 2016-06-09 → 2016-06-23 (+14d) | 2016-07-15 → 2016-07-29 (+14d) |  |  |  |
| 64 | Post-Production Begins | 2016-06-09 → 2016-06-23 (+14d) | 2016-06-09 → 2016-06-23 (+14d) |  |  |  |
| 65 | Log video footage | 2016-06-10 → 2016-06-23 (+13d) | 2016-06-14 → 2016-06-28 (+14d) |  |  |  |
| 66 | Log audio tracks by scene | 2016-06-10 → 2016-06-23 (+13d) | 2016-06-13 → 2016-06-27 (+14d) |  |  |  |
| 67 | Rough edit video - paper | 2016-06-15 → 2016-06-28 (+13d) | 2016-06-21 → 2016-07-05 (+14d) |  |  |  |
| 68 | Rough audio edit | 2016-06-22 → 2016-07-05 (+13d) | 2016-06-28 → 2016-07-12 (+14d) |  |  |  |
| 69 | Fine audio edit | 2016-06-29 → 2016-07-12 (+13d) | 2016-07-01 → 2016-07-15 (+14d) |  | 10.25d → 10d |  |
| 70 | Fine video edit | 2016-06-29 → 2016-07-12 (+13d) | 2016-07-01 → 2016-07-15 (+14d) |  |  |  |
| 71 | Dub audio to video | 2016-07-04 → 2016-07-15 (+11d) | 2016-07-05 → 2016-07-19 (+14d) |  |  |  |
| 72 | Internal review viewing | 2016-07-05 → 2016-07-19 (+14d) | 2016-07-06 → 2016-07-20 (+14d) |  |  |  |
| 73 | Final edits | 2016-07-06 → 2016-07-20 (+14d) | 2016-07-12 → 2016-07-25 (+13d) |  | 0.25d → 0d |  |
| 74 | Formal approval viewing | 2016-07-12 → 2016-07-25 (+13d) | 2016-07-12 → 2016-07-26 (+14d) |  |  |  |
| 75 | Duplicate audio and video masters | 2016-07-13 → 2016-07-26 (+13d) | 2016-07-13 → 2016-07-27 (+14d) |  |  |  |
| 76 | Archive Copy 1 AV masters | 2016-07-14 → 2016-07-27 (+13d) | 2016-07-14 → 2016-07-28 (+14d) |  |  |  |
| 77 | Send Copy 2 AV master and dubbed master to | 2016-07-15 → 2016-07-28 (+13d) | 2016-07-15 → 2016-07-29 (+14d) |  |  |  |
| 78 | Post-Production complete | 2016-07-15 → 2016-07-29 (+14d) | 2016-07-15 → 2016-07-29 (+14d) |  |  |  |

## Version 8 (saved 2013-05-28, file Don Funk Music Video 5M.mpp)

Last finish stays 2016-07-29.

Changed:

| ID | Task | Start | Finish | Duration | Total float | Other |
| --- | --- | --- | --- | --- | --- | --- |
| 1 | **Pre-Production** |  | 2016-05-05 → 2016-05-11 (+6d) | 88d → 91.38d | -4d → 2.88d |  |
| 4 | Develop scene blocking and schedule | 2016-01-20 → 2016-01-26 (+6d) | 2016-02-01 → 2016-02-05 (+4d) | 2.12w → 2w | -4d → 2.88d | constraint start no later than 2016-01-20 → none |
| 5 | Develop production layouts | 2016-02-02 → 2016-02-05 (+3d) | 2016-02-18 → 2016-02-24 (+6d) |  | 6.75d → 0.38d |  |
| 6 | Identify and reserve locations | 2016-02-19 → 2016-02-24 (+5d) | 2016-03-24 → 2016-03-30 (+6d) |  | 4d → 0.38d |  |
| 7 | Book musicians | 2016-03-25 → 2016-03-30 (+5d) | 2016-04-07 → 2016-04-13 (+6d) |  | 4d → 0.38d |  |
| 8 | Book dancers | 2016-04-08 → 2016-04-13 (+5d) | 2016-04-21 → 2016-04-27 (+6d) |  | 4d → 0.38d |  |
| 9 | Reserve audio recording equipment | 2016-04-22 → 2016-04-27 (+5d) | 2016-04-28 → 2016-05-04 (+6d) |  | 6.75d → 0.38d |  |
| 10 | Reserve video recording equipment | 2016-04-29 → 2016-05-04 (+5d) | 2016-05-05 → 2016-05-11 (+6d) |  | 4d → 0.38d |  |
| 27 | Pre-Production complete | 2016-05-05 → 2016-05-11 (+6d) | 2016-05-05 → 2016-05-11 (+6d) |  | 6.75d → 0.38d |  |
| 28 | **Production** | 2016-05-05 → 2016-05-11 (+6d) |  | 33.75d → 30.38d |  |  |
| 29 | Production begins | 2016-05-05 → 2016-05-11 (+6d) | 2016-05-05 → 2016-05-11 (+6d) |  | 6.75d → 0.38d |  |
| 30 | **Scene 1** | 2016-05-05 → 2016-05-11 (+6d) | 2016-05-16 → 2016-05-20 (+4d) |  | 6.75d → 3.38d |  |
| 31 | Scene 1 begin | 2016-05-05 → 2016-05-11 (+6d) | 2016-05-05 → 2016-05-11 (+6d) |  | 6.75d → 0.38d |  |
| 32 | Scene 1 setup | 2016-05-06 → 2016-05-11 (+5d) | 2016-05-09 → 2016-05-13 (+4d) |  | 6.75d → 0.38d |  |
| 33 | Scene 1 rehearsal | 2016-05-10 → 2016-05-13 (+3d) | 2016-05-10 → 2016-05-16 (+6d) |  | 6.75d → 0.38d |  |
| 34 | Scene 1 vocal recording | 2016-05-10 → 2016-05-16 (+6d) | 2016-05-11 → 2016-05-17 (+6d) |  | 6.75d → 0.38d |  |
| 35 | Scene 1 video shoot | 2016-05-11 → 2016-05-17 (+6d) | 2016-05-13 → 2016-05-19 (+6d) |  | 6.75d → 0.38d |  |
| 36 | Scene 1 teardown | 2016-05-13 → 2016-05-19 (+6d) | 2016-05-16 → 2016-05-20 (+4d) |  | 6.75d → 0.38d |  |
| 37 | Scene 1 complete | 2016-05-16 → 2016-05-20 (+4d) | 2016-05-16 → 2016-05-20 (+4d) |  | 6.75d → 0.38d |  |

## Version 9 (saved 2013-05-28, file Don Funk Music Video 6-6.mpp)

Last finish 2016-07-29 → 2016-08-03 (+5d).

Changed:

| ID | Task | Start | Finish | Duration | Total float | Other |
| --- | --- | --- | --- | --- | --- | --- |
| 1 | **Pre-Production** |  |  | 91.38d → 91.75d | 2.88d → 0d |  |
| 5 | Develop production layouts |  |  | 0.5mo → 0.53mo | 0.38d → 0.25d |  |
| 28 | **Production** |  |  | 30.38d → 30d |  |  |
| 35 | Scene 1 video shoot |  |  |  | 0.38d → 3d | resources Sound Technician; Microphone Bundles; Don Funk; DVD [1 2-hour disc]; David Barber [50%]; Greg Guzik; Bottled Water [1 24 bottle case] → Sound Technician; Microphone Bundles; Don Funk; DVD [0.25 2-hour disc]; David Barber [50%]; Greg Guzik; Bottled Water [1 24 bottle case] |
| 63 | **Post-Production** |  | 2016-07-29 → 2016-08-03 (+5d) | 26d → 29.25d |  |  |
| 65 | Log video footage |  |  |  | 0d → 1.75d | resources Video Editing Studio; Shu Ito → Video Editing Studio; Shu Ito; Jim Kim |
| 66 | Log audio tracks by scene |  | 2016-06-27 → 2016-06-30 (+3d) | 2d → 3.75d | 1d → 0d |  |
| 67 | Rough edit video - paper | 2016-06-28 → 2016-06-30 (+2d) | 2016-07-05 → 2016-07-07 (+2d) |  |  |  |
| 68 | Rough audio edit | 2016-07-05 → 2016-07-07 (+2d) | 2016-07-12 → 2016-07-14 (+2d) |  |  |  |
| 69 | Fine audio edit | 2016-07-12 → 2016-07-14 (+2d) | 2016-07-15 → 2016-07-19 (+4d) |  | 10d → 11.5d | resources Sound Editing Studio; Maria Hammond; Jim Kim → Sound Editing Studio; Maria Hammond; Jim Kim; Greg Guzik [50%] |
| 70 | Fine video edit | 2016-07-12 → 2016-07-14 (+2d) | 2016-07-15 → 2016-07-19 (+4d) |  |  | resources Video Editing Studio; Shu Ito; Greg Guzik; David Barber [50%] → Video Editing Studio; Shu Ito; Greg Guzik [50%]; David Barber [50%] |
| 71 | Dub audio to video | 2016-07-15 → 2016-07-19 (+4d) | 2016-07-19 → 2016-07-21 (+2d) |  |  |  |
| 72 | Internal review viewing | 2016-07-19 → 2016-07-21 (+2d) | 2016-07-20 → 2016-07-25 (+5d) | 1d → 1.25d |  | resources Scott Seely; Jamie Reding; Jeff Pike; Judy Lew; Brad Sutton; Brenda Diaz; Annette Hill [50%]; Don Funk; Ryan Ihrig → Scott Seely; Jamie Reding; Jeff Pike; Judy Lew; Brad Sutton; Brenda Diaz; Don Funk; Ryan Ihrig |
| 73 | Final edits | 2016-07-20 → 2016-07-25 (+5d) | 2016-07-25 → 2016-07-28 (+3d) | 4d → 3.5d |  | resources Jamie Reding; Scott Seely; Jeff Pike; Brad Sutton; Annette Hill [50%]; Video Editing Studio → Jamie Reding; Scott Seely; Jeff Pike; Brad Sutton; Video Editing Studio |
| 74 | Formal approval viewing | 2016-07-25 → 2016-07-28 (+3d) | 2016-07-26 → 2016-08-01 (+6d) |  |  | resources Scott Seely; Judy Lew; Brad Sutton; Don Funk; Annette Hill [50%]; Jane Clayton; Video Editing Studio → Scott Seely; Judy Lew; Brad Sutton; Don Funk; Jane Clayton; Video Editing Studio |
| 75 | Duplicate audio and video masters | 2016-07-26 → 2016-08-01 (+6d) | 2016-07-27 → 2016-08-01 (+5d) |  |  |  |
| 76 | Archive Copy 1 AV masters | 2016-07-27 → 2016-08-02 (+6d) | 2016-07-28 → 2016-08-02 (+5d) |  |  |  |
| 77 | Send Copy 2 AV master and dubbed master to | 2016-07-28 → 2016-08-03 (+6d) | 2016-07-29 → 2016-08-03 (+5d) |  |  |  |
| 78 | Post-Production complete | 2016-07-29 → 2016-08-03 (+5d) | 2016-07-29 → 2016-08-03 (+5d) |  |  |  |

## Version 10 (saved 2013-05-28, file Don Funk Music Video 6M.mpp)

Last finish 2016-08-03 → 2016-07-29 (-5d).

Changed:

| ID | Task | Start | Finish | Duration | Total float | Other |
| --- | --- | --- | --- | --- | --- | --- |
| 1 | **Pre-Production** |  |  | 91.75d → 91.38d | 0d → 0.12d |  |
| 5 | Develop production layouts |  |  | 0.53mo → 0.5mo | 0.25d → 0.62d |  |
| 28 | **Production** |  |  | 30d → 30.38d |  |  |
| 35 | Scene 1 video shoot |  |  |  | 3d → 3.38d | resources Sound Technician; Microphone Bundles; Don Funk; DVD [0.25 2-hour disc]; David Barber [50%]; Greg Guzik; Bottled Water [1 24 bottle case] → Sound Technician; Microphone Bundles; Don Funk; DVD [1 2-hour disc]; David Barber [50%]; Greg Guzik; Bottled Water [1 24 bottle case] |
| 63 | **Post-Production** |  | 2016-08-03 → 2016-07-29 (-5d) | 29.25d → 26d |  |  |
| 66 | Log audio tracks by scene |  | 2016-06-30 → 2016-06-27 (-3d) | 3.75d → 2d | 0d → 1d |  |
| 67 | Rough edit video - paper | 2016-06-30 → 2016-06-28 (-2d) | 2016-07-07 → 2016-07-05 (-2d) |  |  |  |
| 68 | Rough audio edit | 2016-07-07 → 2016-07-05 (-2d) | 2016-07-14 → 2016-07-12 (-2d) |  |  |  |
| 69 | Fine audio edit | 2016-07-14 → 2016-07-12 (-2d) | 2016-07-19 → 2016-07-15 (-4d) |  | 11.5d → 10d | resources Sound Editing Studio; Maria Hammond; Jim Kim; Greg Guzik [50%] → Sound Editing Studio; Maria Hammond; Jim Kim; Greg Guzik |
| 70 | Fine video edit | 2016-07-14 → 2016-07-12 (-2d) | 2016-07-19 → 2016-07-15 (-4d) |  |  | resources Video Editing Studio; Shu Ito; Greg Guzik [50%]; David Barber [50%] → Video Editing Studio; Shu Ito; Greg Guzik; David Barber [50%] |
| 71 | Dub audio to video | 2016-07-19 → 2016-07-15 (-4d) | 2016-07-21 → 2016-07-19 (-2d) |  |  |  |
| 72 | Internal review viewing | 2016-07-21 → 2016-07-19 (-2d) | 2016-07-25 → 2016-07-20 (-5d) | 1.25d → 1d |  |  |
| 73 | Final edits | 2016-07-25 → 2016-07-20 (-5d) | 2016-07-28 → 2016-07-25 (-3d) | 3.5d → 4d |  |  |
| 74 | Formal approval viewing | 2016-07-28 → 2016-07-25 (-3d) | 2016-08-01 → 2016-07-26 (-6d) |  |  |  |
| 75 | Duplicate audio and video masters | 2016-08-01 → 2016-07-26 (-6d) | 2016-08-01 → 2016-07-27 (-5d) |  |  |  |
| 76 | Archive Copy 1 AV masters | 2016-08-02 → 2016-07-27 (-6d) | 2016-08-02 → 2016-07-28 (-5d) |  |  |  |
| 77 | Send Copy 2 AV master and dubbed master to | 2016-08-03 → 2016-07-28 (-6d) | 2016-08-03 → 2016-07-29 (-5d) |  |  |  |
| 78 | Post-Production complete | 2016-08-03 → 2016-07-29 (-5d) | 2016-08-03 → 2016-07-29 (-5d) |  |  |  |

## Version 11 (saved 2013-05-28, file Don Funk Music Video 7-3.mpp)

Last finish 2016-07-29 → 2016-08-03 (+5d).

Changed:

| ID | Task | Start | Finish | Duration | Total float | Other |
| --- | --- | --- | --- | --- | --- | --- |
| 1 | **Pre-Production** |  |  | 91.38d → 91.75d | 0.12d → 0d |  |
| 5 | Develop production layouts |  |  | 0.5mo → 0.53mo | 0.62d → 0.25d |  |
| 28 | **Production** |  |  | 30.38d → 30d |  |  |
| 35 | Scene 1 video shoot |  |  |  | 3.38d → 3d | resources Sound Technician; Microphone Bundles; Don Funk; DVD [1 2-hour disc]; David Barber [50%]; Greg Guzik; Bottled Water [1 24 bottle case] → Sound Technician; Microphone Bundles; Don Funk; DVD [0.25 2-hour disc]; David Barber [50%]; Greg Guzik; Bottled Water [1 24 bottle case] |
| 63 | **Post-Production** |  | 2016-07-29 → 2016-08-03 (+5d) | 26d → 29.25d |  |  |
| 66 | Log audio tracks by scene |  | 2016-06-27 → 2016-06-30 (+3d) | 2d → 3.75d | 1d → 0d |  |
| 67 | Rough edit video - paper | 2016-06-28 → 2016-06-30 (+2d) | 2016-07-05 → 2016-07-07 (+2d) |  |  |  |
| 68 | Rough audio edit | 2016-07-05 → 2016-07-07 (+2d) | 2016-07-12 → 2016-07-14 (+2d) |  |  |  |
| 69 | Fine audio edit | 2016-07-12 → 2016-07-14 (+2d) | 2016-07-15 → 2016-07-19 (+4d) |  | 10d → 11.5d | resources Sound Editing Studio; Maria Hammond; Jim Kim; Greg Guzik → Sound Editing Studio; Maria Hammond; Jim Kim; Greg Guzik [50%] |
| 70 | Fine video edit | 2016-07-12 → 2016-07-14 (+2d) | 2016-07-15 → 2016-07-19 (+4d) |  |  | resources Video Editing Studio; Shu Ito; Greg Guzik; David Barber [50%] → Video Editing Studio; Shu Ito; Greg Guzik [50%]; David Barber [50%] |
| 71 | Dub audio to video | 2016-07-15 → 2016-07-19 (+4d) | 2016-07-19 → 2016-07-21 (+2d) |  |  |  |
| 72 | Internal review viewing | 2016-07-19 → 2016-07-21 (+2d) | 2016-07-20 → 2016-07-25 (+5d) | 1d → 1.25d |  |  |
| 73 | Final edits | 2016-07-20 → 2016-07-25 (+5d) | 2016-07-25 → 2016-07-28 (+3d) | 4d → 3.5d |  |  |
| 74 | Formal approval viewing | 2016-07-25 → 2016-07-28 (+3d) | 2016-07-26 → 2016-08-01 (+6d) |  |  |  |
| 75 | Duplicate audio and video masters | 2016-07-26 → 2016-08-01 (+6d) | 2016-07-27 → 2016-08-01 (+5d) |  |  |  |
| 76 | Archive Copy 1 AV masters | 2016-07-27 → 2016-08-02 (+6d) | 2016-07-28 → 2016-08-02 (+5d) |  |  |  |
| 77 | Send Copy 2 AV master and dubbed master to | 2016-07-28 → 2016-08-03 (+6d) | 2016-07-29 → 2016-08-03 (+5d) |  |  |  |
| 78 | Post-Production complete | 2016-07-29 → 2016-08-03 (+5d) | 2016-07-29 → 2016-08-03 (+5d) |  |  |  |

## Version 12 (saved 2013-05-28, file Don Funk Music Video 8-5.mpp)

Last finish 2016-08-03 → 2016-07-29 (-5d).

Changed:

| ID | Task | Start | Finish | Duration | Total float | Other |
| --- | --- | --- | --- | --- | --- | --- |
| 63 | **Post-Production** |  | 2016-08-03 → 2016-07-29 (-5d) | 29.25d → 26d |  |  |
| 66 | Log audio tracks by scene |  | 2016-06-30 → 2016-06-28 (-2d) | 3.75d → 3d |  | resources Sound Editing Studio; Maria Hammond; Jim Kim → Sound Editing Studio; Maria Hammond; David Barber |
| 67 | Rough edit video - paper | 2016-06-30 → 2016-06-28 (-2d) | 2016-07-07 → 2016-07-05 (-2d) |  |  |  |
| 68 | Rough audio edit | 2016-07-07 → 2016-07-05 (-2d) | 2016-07-14 → 2016-07-12 (-2d) |  |  |  |
| 69 | Fine audio edit | 2016-07-14 → 2016-07-12 (-2d) | 2016-07-19 → 2016-07-15 (-4d) |  | 11.5d → 10d |  |
| 70 | Fine video edit | 2016-07-14 → 2016-07-12 (-2d) | 2016-07-19 → 2016-07-15 (-4d) |  |  |  |
| 71 | Dub audio to video | 2016-07-19 → 2016-07-15 (-4d) | 2016-07-21 → 2016-07-19 (-2d) |  |  |  |
| 72 | Internal review viewing | 2016-07-21 → 2016-07-19 (-2d) | 2016-07-25 → 2016-07-20 (-5d) | 1.25d → 1d |  |  |
| 73 | Final edits | 2016-07-25 → 2016-07-20 (-5d) | 2016-07-28 → 2016-07-25 (-3d) | 3.5d → 4d |  |  |
| 74 | Formal approval viewing | 2016-07-28 → 2016-07-25 (-3d) | 2016-08-01 → 2016-07-26 (-6d) |  |  |  |
| 75 | Duplicate audio and video masters | 2016-08-01 → 2016-07-26 (-6d) | 2016-08-01 → 2016-07-27 (-5d) |  |  |  |
| 76 | Archive Copy 1 AV masters | 2016-08-02 → 2016-07-27 (-6d) | 2016-08-02 → 2016-07-28 (-5d) |  |  |  |
| 77 | Send Copy 2 AV master and dubbed master to | 2016-08-03 → 2016-07-28 (-6d) | 2016-08-03 → 2016-07-29 (-5d) |  |  |  |
| 78 | Post-Production complete | 2016-08-03 → 2016-07-29 (-5d) | 2016-08-03 → 2016-07-29 (-5d) |  |  |  |

## Version 13 (data date 2016-02-12, saved 2013-06-29, file Don Funk Music Video 9MA.mpp)

Last finish stays 2016-07-29. Complete tasks 0 → 25.

Changed:

| ID | Task | Start | Finish | Duration | Complete | Total float | Other |
| --- | --- | --- | --- | --- | --- | --- | --- |
| 1 | **Pre-Production** | 2016-01-04 A | 2016-05-11 → 2016-05-09 (-2d) | 91.75d → 89.25d | 0% → 99% | 0d → 58.5d | baseline start none → 2016-01-04; baseline finish none → 2016-05-11 |
| 2 | Pre-Production begins | 2016-01-04 A | 2016-01-04 A |  | 0% → 100% | 0d → none | baseline start none → 2016-01-04; baseline finish none → 2016-01-04 |
| 3 | Review screenplay | 2016-01-04 A | 2016-01-26 A |  | 0% → 100% | 0d → none | baseline start none → 2016-01-04; baseline finish none → 2016-01-26 |
| 4 | Develop scene blocking and schedule | 2016-01-26 A | 2016-02-05 → 2016-02-04 A (-1d) | 2w → 9.62d | 0% → 100% | 0d → none | baseline start none → 2016-01-26; baseline finish none → 2016-02-05 |
| 5 | Develop production layouts | 2016-02-05 A | 2016-02-24 A |  | 0% → 100% | 0.25d → none | baseline start none → 2016-02-05; baseline finish none → 2016-02-24 |
| 6 | Identify and reserve locations | 2016-02-24 A | 2016-03-30 → 2016-03-28 A (-2d) | 5w → 22.5d | 0% → 100% | 0.25d → none | resources Jeff Pike [50%]; Yan Li [57.1%]; Annete Hill [28.6%]; Ryan Ihrig [75%]; DVD [8 2-hour disc] → Jeff Pike [50%]; Yan Li [57.1%]; Annete Hill [28.6%]; Ryan Ihrig [75%]; DVD [7.2 2-hour disc]; baseline start none → 2016-02-24; baseline finish none → 2016-03-30 |
| 7 | Book musicians | 2016-03-30 → 2016-03-28 A (-2d) | 2016-04-13 → 2016-04-11 A (-2d) |  | 0% → 100% | 0.25d → none | resources none → Annette Hill [50%]; David Barber [50%]; baseline start none → 2016-03-28; baseline finish none → 2016-04-11 |
| 8 | Book dancers | 2016-04-13 → 2016-04-11 A (-2d) | 2016-04-27 → 2016-04-25 A (-2d) |  | 0% → 100% | 0.25d → none | resources none → Annette Hill [50%]; David Barber [50%]; baseline start none → 2016-04-11; baseline finish none → 2016-04-25 |
| 9 | Reserve audio recording equipment | 2016-04-27 → 2016-04-25 A (-2d) | 2016-05-04 → 2016-05-02 A (-2d) |  | 0% → 100% | 0.25d → none | resources none → Yan Li; Sound Technician; baseline start none → 2016-04-25; baseline finish none → 2016-05-02 |
| 10 | Reserve video recording equipment | 2016-05-04 → 2016-05-02 A (-2d) | 2016-05-11 → 2016-05-09 A (-2d) |  | 0% → 100% | 0.25d → none | resources none → Sound Technician; Yan Li; baseline start none → 2016-05-02; baseline finish none → 2016-05-09 |
| 11 | **Status Meeting** | 2016-01-04 A |  |  | 0% → 40% |  | baseline start none → 2016-01-04; baseline finish none → 2016-04-11 |
| 12 | Status Meeting 1 | 2016-01-04 A | 2016-01-04 A |  | 0% → 100% | 147.62d → none | baseline start none → 2016-01-04; baseline finish none → 2016-01-04 |
| 13 | Status Meeting 2 | 2016-01-11 A | 2016-01-11 A |  | 0% → 100% | 142.62d → none | baseline start none → 2016-01-11; baseline finish none → 2016-01-11 |
| 14 | Status Meeting 3 | 2016-01-19 A | 2016-01-19 A |  | 0% → 100% | 137.62d → none | baseline start none → 2016-01-19; baseline finish none → 2016-01-19 |
| 15 | Status Meeting 4 | 2016-01-25 A | 2016-01-25 A |  | 0% → 100% | 133.62d → none | baseline start none → 2016-01-25; baseline finish none → 2016-01-25 |
| 16 | Status Meeting 5 | 2016-02-01 A | 2016-02-01 A |  | 0% → 100% | 128.62d → none | baseline start none → 2016-02-01; baseline finish none → 2016-02-01 |
| 17 | Status Meeting 6 | 2016-02-08 A | 2016-02-08 A |  | 0% → 100% | 123.62d → none | baseline start none → 2016-02-08; baseline finish none → 2016-02-08 |
| 18 | Status Meeting 7 |  |  |  |  |  | baseline start none → 2016-02-15; baseline finish none → 2016-02-15 |
| 19 | Status Meeting 8 |  |  |  |  |  | baseline start none → 2016-02-22; baseline finish none → 2016-02-22 |
| 20 | Status Meeting 9 |  |  |  |  |  | baseline start none → 2016-02-29; baseline finish none → 2016-02-29 |
| 21 | Status Meeting 10 |  |  |  |  |  | baseline start none → 2016-03-07; baseline finish none → 2016-03-07 |
| 22 | Status Meeting 11 |  |  |  |  |  | baseline start none → 2016-03-14; baseline finish none → 2016-03-14 |
| 23 | Status Meeting 12 |  |  |  |  |  | baseline start none → 2016-03-21; baseline finish none → 2016-03-21 |
| 24 | Status Meeting 13 |  |  |  |  |  | baseline start none → 2016-03-28; baseline finish none → 2016-03-28 |
| 25 | Status Meeting 14 |  |  |  |  |  | baseline start none → 2016-04-04; baseline finish none → 2016-04-04 |
| 26 | Status Meeting 15 |  |  |  |  |  | baseline start none → 2016-04-11; baseline finish none → 2016-04-11 |
| 27 | Pre-Production complete | 2016-05-11 → 2016-05-09 (-2d) | 2016-05-11 → 2016-05-09 (-2d) |  |  | 0.25d → 2.75d | baseline start none → 2016-05-11; baseline finish none → 2016-05-11 |
| 28 | **Production** | 2016-05-11 → 2016-05-09 A (-2d) |  | 30d → 32.5d | 0% → 57% | 0d → 3.25d | baseline start none → 2016-05-11; baseline finish none → 2016-06-23 |
| 29 | Production begins | 2016-05-11 → 2016-05-09 (-2d) | 2016-05-11 → 2016-05-09 (-2d) |  |  | 3d → 35.75d | baseline start none → 2016-05-11; baseline finish none → 2016-05-11 |
| 30 | **Scene 1** | 2016-05-11 → 2016-05-09 A (-2d) |  | 6.75d → 9.25d | 0% → 99% | 3d → 26.5d | baseline start none → 2016-05-11; baseline finish none → 2016-05-20 |
| 31 | Scene 1 begin | 2016-05-11 → 2016-05-09 (-2d) | 2016-05-11 → 2016-05-09 (-2d) |  |  | 3d → 35.75d | baseline start none → 2016-05-11; baseline finish none → 2016-05-11 |
| 32 | Scene 1 setup | 2016-05-11 A | 2016-05-13 A |  | 0% → 100% | 3d → none | baseline start none → 2016-05-11; baseline finish none → 2016-05-13 |
| 33 | Scene 1 rehearsal | 2016-05-13 A | 2016-05-16 A |  | 0% → 100% | 3d → none | baseline start none → 2016-05-13; baseline finish none → 2016-05-16 |
| 34 | Scene 1 vocal recording | 2016-05-16 A | 2016-05-17 A | 1d → 1.13d | 0% → 100% | 3d → none | baseline start none → 2016-05-16; baseline finish none → 2016-05-17 |
| 35 | Scene 1 video shoot | 2016-05-17 A | 2016-05-19 → 2016-05-20 A (+1d) | 2d → 3d | 0% → 100% | 3d → none | baseline start none → 2016-05-17; baseline finish none → 2016-05-19 |
| 36 | Scene 1 teardown | 2016-05-19 A | 2016-05-20 A |  | 0% → 100% | 3d → none | baseline start none → 2016-05-19; baseline finish none → 2016-05-20 |
| 37 | Scene 1 complete |  |  |  |  | 3d → 26.5d | baseline start none → 2016-05-20; baseline finish none → 2016-05-20 |
| 38 | **Scene 2** | 2016-05-25 A |  |  | 0% → 99% | 0.5d → 17.25d | baseline start none → 2016-05-25; baseline finish none → 2016-06-03 |
| 39 | Scene 2 begin |  |  |  |  | 0.5d → 24d | baseline start none → 2016-05-25; baseline finish none → 2016-05-25 |
| 40 | Scene 2 setup | 2016-05-25 A | 2016-05-26 A |  | 0% → 100% | 0.5d → none | baseline start none → 2016-05-25; baseline finish none → 2016-05-26 |
| 41 | Scene 2 rehearsal | 2016-05-27 A | 2016-05-27 → 2016-05-31 A (+4d) | 6h → 14h | 0% → 100% | 0.5d → none | baseline start none → 2016-05-27; baseline finish none → 2016-05-27 |
| 42 | Scene 2 vocal recording | 2016-05-27 A | 2016-05-31 → 2016-06-02 A (+2d) | 1d → 3d | 0% → 100% | 0.5d → none | baseline start none → 2016-05-27; baseline finish none → 2016-05-31 |
| 43 | Scene 2 video shoot | 2016-05-31 A | 2016-06-02 A |  | 0% → 100% | 0.5d → none | baseline start none → 2016-05-31; baseline finish none → 2016-06-02 |
| 44 | Scene 2 teardown | 2016-06-02 A | 2016-06-03 A |  | 0% → 100% | 0.5d → none | baseline start none → 2016-06-02; baseline finish none → 2016-06-03 |
| 45 | Scene 2 complete |  |  |  |  |  | baseline start none → 2016-06-03; baseline finish none → 2016-06-03 |
| 46 | **Scene 3** |  |  |  |  |  | baseline start none → 2016-06-03; baseline finish none → 2016-06-14 |
| 47 | Scene 3 begin |  |  |  |  |  | baseline start none → 2016-06-03; baseline finish none → 2016-06-03 |
| 48 | Scene 3 setup |  |  |  |  |  | baseline start none → 2016-06-03; baseline finish none → 2016-06-07 |
| 49 | Scene 3 rehearsal |  |  |  |  |  | baseline start none → 2016-06-07; baseline finish none → 2016-06-08 |
| 50 | Scene 3 vocal recording |  |  |  |  |  | baseline start none → 2016-06-08; baseline finish none → 2016-06-09 |
| 51 | Scene 3 video shoot |  |  |  |  |  | baseline start none → 2016-06-09; baseline finish none → 2016-06-14 |
| 52 | Scene 3 teardown |  |  |  |  |  | baseline start none → 2016-06-14; baseline finish none → 2016-06-14 |
| 53 | Scene 3 complete |  |  |  |  |  | baseline start none → 2016-06-14; baseline finish none → 2016-06-14 |
| 54 | **Scene 4** |  |  |  |  |  | baseline start none → 2016-06-14; baseline finish none → 2016-06-23 |
| 55 | Scene 4 begin |  |  |  |  |  | baseline start none → 2016-06-14; baseline finish none → 2016-06-14 |
| 56 | Scene 4 setup |  |  |  |  |  | baseline start none → 2016-06-15; baseline finish none → 2016-06-16 |
| 57 | Scene 4 rehearsal |  |  |  |  |  | baseline start none → 2016-06-17; baseline finish none → 2016-06-17 |
| 58 | Scene 4 vocal recording |  |  |  |  |  | baseline start none → 2016-06-17; baseline finish none → 2016-06-20 |
| 59 | Scene 4 video shoot |  |  |  |  |  | baseline start none → 2016-06-20; baseline finish none → 2016-06-22 |
| 60 | Scene 4 teardown |  |  |  |  |  | baseline start none → 2016-06-22; baseline finish none → 2016-06-23 |
| 61 | Scene 4 complete |  |  |  |  |  | resources none → Ido Ben-Sachar; Patricia Doyle; baseline start none → 2016-06-23; baseline finish none → 2016-06-23 |
| 62 | Production complete |  |  |  |  |  | baseline start none → 2016-06-23; baseline finish none → 2016-06-23 |
| 63 | **Post-Production** |  |  |  |  |  | baseline start none → 2016-06-23; baseline finish none → 2016-07-29 |
| 64 | Post-Production Begins |  |  |  |  |  | baseline start none → 2016-06-23; baseline finish none → 2016-06-23 |
| 65 | Log video footage |  |  |  |  |  | baseline start none → 2016-06-23; baseline finish none → 2016-06-28 |
| 66 | Log audio tracks by scene |  |  |  |  |  | baseline start none → 2016-06-23; baseline finish none → 2016-06-28 |
| 67 | Rough edit video - paper |  |  |  |  |  | baseline start none → 2016-06-28; baseline finish none → 2016-07-05 |
| 68 | Rough audio edit |  |  |  |  |  | baseline start none → 2016-07-05; baseline finish none → 2016-07-12 |
| 69 | Fine audio edit |  |  |  |  |  | baseline start none → 2016-07-12; baseline finish none → 2016-07-15 |
| 70 | Fine video edit |  |  |  |  |  | baseline start none → 2016-07-12; baseline finish none → 2016-07-15 |

| ID | Task | Other |
| --- | --- | --- |
| 71 | Dub audio to video | baseline start none → 2016-07-15; baseline finish none → 2016-07-19 |
| 72 | Internal review viewing | baseline start none → 2016-07-19; baseline finish none → 2016-07-20 |
| 73 | Final edits | baseline start none → 2016-07-20; baseline finish none → 2016-07-25 |
| 74 | Formal approval viewing | baseline start none → 2016-07-25; baseline finish none → 2016-07-26 |
| 75 | Duplicate audio and video masters | baseline start none → 2016-07-26; baseline finish none → 2016-07-27 |
| 76 | Archive Copy 1 AV masters | baseline start none → 2016-07-27; baseline finish none → 2016-07-28 |
| 77 | Send Copy 2 AV master and dubbed master to | baseline start none → 2016-07-28; baseline finish none → 2016-07-29 |
| 78 | Post-Production complete | baseline start none → 2016-07-29; baseline finish none → 2016-07-29 |

## Version 14 (data date 2016-02-12, saved 2013-06-29, file Don Funk Music Video 9MB.mpp)

Last finish stays 2016-07-29. Complete tasks 25 → 41.

Changed:

| ID | Task | Start | Finish | Complete | Total float |
| --- | --- | --- | --- | --- | --- |
| 1 | **Pre-Production** |  | 2016-05-09 A | 99% → 100% | 58.5d → none |
| 11 | **Status Meeting** |  | 2016-04-11 A | 40% → 100% | 78.62d → none |
| 18 | Status Meeting 7 | 2016-02-15 A | 2016-02-15 A | 0% → 100% | 118.62d → none |
| 19 | Status Meeting 8 | 2016-02-22 A | 2016-02-22 A | 0% → 100% | 113.62d → none |
| 20 | Status Meeting 9 | 2016-02-29 A | 2016-02-29 A | 0% → 100% | 108.62d → none |
| 21 | Status Meeting 10 | 2016-03-07 A | 2016-03-07 A | 0% → 100% | 103.62d → none |
| 22 | Status Meeting 11 | 2016-03-14 A | 2016-03-14 A | 0% → 100% | 98.62d → none |
| 23 | Status Meeting 12 | 2016-03-21 A | 2016-03-21 A | 0% → 100% | 93.62d → none |
| 24 | Status Meeting 13 | 2016-03-28 A | 2016-03-28 A | 0% → 100% | 88.62d → none |
| 25 | Status Meeting 14 | 2016-04-04 A | 2016-04-04 A | 0% → 100% | 83.62d → none |
| 26 | Status Meeting 15 | 2016-04-11 A | 2016-04-11 A | 0% → 100% | 78.62d → none |
| 27 | Pre-Production complete | 2016-05-09 A | 2016-05-09 A | 0% → 100% | 2.75d → none |
| 28 | **Production** |  |  | 57% → 60% | 3.25d → 0d |
| 29 | Production begins | 2016-05-09 A | 2016-05-09 A | 0% → 100% | 35.75d → none |
| 30 | **Scene 1** |  | 2016-05-20 A | 99% → 100% | 26.5d → none |
| 31 | Scene 1 begin | 2016-05-09 A | 2016-05-09 A | 0% → 100% | 35.75d → none |
| 37 | Scene 1 complete | 2016-05-20 A | 2016-05-20 A | 0% → 100% | 26.5d → none |
| 38 | **Scene 2** |  | 2016-06-03 A | 99% → 100% | 17.25d → none |
| 39 | Scene 2 begin | 2016-05-25 A | 2016-05-25 A | 0% → 100% | 24d → none |
| 45 | Scene 2 complete | 2016-06-03 A | 2016-06-03 A | 0% → 100% | 0.5d → none |
| 46 | **Scene 3** | 2016-06-03 A |  | 0% → 15% |  |
| 47 | Scene 3 begin | 2016-06-03 A | 2016-06-03 A | 0% → 100% | 0.5d → none |
| 48 | Scene 3 setup | 2016-06-03 A |  | 0% → 50% |  |

## Version 15 (data date 2016-02-12, saved 2013-06-29, file Don Funk Music Video 9-6.mpp)

Last finish 2016-07-29 → 2016-08-04 (+6d). Complete tasks 41 → 47.

Changed:

| ID | Task | Start | Finish | Duration | Complete | Total float | Other |
| --- | --- | --- | --- | --- | --- | --- | --- |
| 28 | **Production** |  | 2016-06-23 → 2016-06-28 (+5d) | 32.5d → 35.5d | 60% → 78% | 0d → 0.25d |  |
| 46 | **Scene 3** |  | 2016-06-14 → 2016-06-17 A (+3d) | 7.25d → 10.25d | 15% → 100% | 0d → none |  |
| 48 | Scene 3 setup |  | 2016-06-07 → 2016-06-10 A (+3d) |  | 50% → 100% | 0.5d → none |  |
| 49 | Scene 3 rehearsal | 2016-06-07 → 2016-06-13 A (+6d) | 2016-06-08 → 2016-06-13 A (+5d) |  | 0% → 100% | 0.5d → none | constraint none → start no earlier than 2016-06-09 |
| 50 | Scene 3 vocal recording | 2016-06-08 → 2016-06-13 A (+5d) | 2016-06-09 → 2016-06-14 A (+5d) |  | 0% → 100% | 0.5d → none | constraint none → start no earlier than 2016-06-09 |
| 51 | Scene 3 video shoot | 2016-06-09 → 2016-06-14 A (+5d) | 2016-06-14 → 2016-06-17 A (+3d) |  | 0% → 100% | 0.25d → none |  |
| 52 | Scene 3 teardown | 2016-06-14 → 2016-06-17 A (+3d) | 2016-06-14 → 2016-06-17 A (+3d) |  | 0% → 100% | 0d → none |  |
| 53 | Scene 3 complete | 2016-06-14 → 2016-06-17 A (+3d) | 2016-06-14 → 2016-06-17 A (+3d) |  | 0% → 100% | 0d → none |  |
| 54 | **Scene 4** | 2016-06-14 → 2016-06-17 (+3d) | 2016-06-23 → 2016-06-28 (+5d) |  |  | 0d → 0.25d |  |
| 55 | Scene 4 begin | 2016-06-14 → 2016-06-17 (+3d) | 2016-06-14 → 2016-06-17 (+3d) |  |  | 0d → 0.25d |  |
| 56 | Scene 4 setup | 2016-06-15 → 2016-06-20 (+5d) | 2016-06-16 → 2016-06-21 (+5d) |  |  | 0d → 0.25d |  |
| 57 | Scene 4 rehearsal | 2016-06-17 → 2016-06-22 (+5d) | 2016-06-17 → 2016-06-22 (+5d) |  |  | 0d → 0.25d |  |
| 58 | Scene 4 vocal recording | 2016-06-17 → 2016-06-22 (+5d) | 2016-06-20 → 2016-06-23 (+3d) |  |  | 0d → 0.25d |  |
| 59 | Scene 4 video shoot | 2016-06-20 → 2016-06-23 (+3d) | 2016-06-22 → 2016-06-27 (+5d) |  |  | 0d → 0.25d |  |
| 60 | Scene 4 teardown | 2016-06-22 → 2016-06-27 (+5d) | 2016-06-23 → 2016-06-28 (+5d) |  |  | 0d → 0.25d |  |
| 61 | Scene 4 complete | 2016-06-23 → 2016-06-28 (+5d) | 2016-06-23 → 2016-06-28 (+5d) |  |  | 0d → 0.25d |  |
| 62 | Production complete | 2016-06-23 → 2016-06-28 (+5d) | 2016-06-23 → 2016-06-28 (+5d) |  |  | 0d → 0.25d |  |
| 63 | **Post-Production** | 2016-06-23 → 2016-06-28 (+5d) | 2016-07-29 → 2016-08-04 (+6d) | 26d → 26.88d |  |  |  |
| 64 | Post-Production Begins | 2016-06-23 → 2016-06-28 (+5d) | 2016-06-23 → 2016-06-28 (+5d) |  |  | 0d → 0.25d |  |
| 65 | Log video footage | 2016-06-23 → 2016-06-28 (+5d) | 2016-06-28 → 2016-07-01 (+3d) |  |  | 0d → 0.25d |  |
| 66 | Log audio tracks by scene | 2016-06-23 → 2016-06-28 (+5d) | 2016-06-28 → 2016-07-01 (+3d) |  |  | 0d → 0.25d |  |
| 67 | Rough edit video - paper | 2016-06-28 → 2016-07-01 (+3d) | 2016-07-05 → 2016-07-08 (+3d) |  |  | 0d → 0.25d |  |
| 68 | Rough audio edit | 2016-07-05 → 2016-07-08 (+3d) | 2016-07-12 → 2016-07-15 (+3d) |  |  | 0d → 0.25d |  |
| 69 | Fine audio edit | 2016-07-12 → 2016-07-15 (+3d) | 2016-07-15 → 2016-07-20 (+5d) |  |  | 10d → 10.88d |  |
| 70 | Fine video edit | 2016-07-12 → 2016-07-15 (+3d) | 2016-07-15 → 2016-07-20 (+5d) |  |  | 0d → 0.25d |  |
| 71 | Dub audio to video | 2016-07-15 → 2016-07-20 (+5d) | 2016-07-19 → 2016-07-22 (+3d) |  |  | 0d → 0.25d |  |
| 72 | Internal review viewing | 2016-07-19 → 2016-07-22 (+3d) | 2016-07-20 → 2016-07-25 (+5d) | 1d → 1.25d |  |  |  |
| 73 | Final edits | 2016-07-20 → 2016-07-25 (+5d) | 2016-07-25 → 2016-07-28 (+3d) | 4d → 3.75d |  |  |  |
| 74 | Formal approval viewing | 2016-07-25 → 2016-07-28 (+3d) | 2016-07-26 → 2016-08-01 (+6d) | 1d → 1.62d |  |  |  |
| 75 | Duplicate audio and video masters | 2016-07-26 → 2016-08-01 (+6d) | 2016-07-27 → 2016-08-02 (+6d) |  |  |  |  |
| 76 | Archive Copy 1 AV masters | 2016-07-27 → 2016-08-02 (+6d) | 2016-07-28 → 2016-08-03 (+6d) |  |  |  |  |
| 77 | Send Copy 2 AV master and dubbed master to | 2016-07-28 → 2016-08-03 (+6d) | 2016-07-29 → 2016-08-04 (+6d) |  |  |  |  |
| 78 | Post-Production complete | 2016-07-29 → 2016-08-04 (+6d) | 2016-07-29 → 2016-08-04 (+6d) |  |  |  |  |

## Version 16 (data date 2016-02-12, saved 2013-06-30, file Don Funk Music Video 10M.mpp)

Last finish stays 2016-08-04. Complete tasks 47 → 41.

Changed:

| ID | Task | Start | Finish | Complete | Total float |
| --- | --- | --- | --- | --- | --- |
| 28 | **Production** |  |  | 78% → 60% |  |
| 46 | **Scene 3** |  | 2016-06-17 A → 2016-06-17 | 100% → 15% | none → 0d |
| 48 | Scene 3 setup |  | 2016-06-10 A → 2016-06-10 | 100% → 50% | none → 0.25d |
| 49 | Scene 3 rehearsal | 2016-06-13 A → 2016-06-13 | 2016-06-13 A → 2016-06-13 | 100% → 0% | none → 0.25d |
| 50 | Scene 3 vocal recording | 2016-06-13 A → 2016-06-13 | 2016-06-14 A → 2016-06-14 | 100% → 0% | none → 0.25d |
| 51 | Scene 3 video shoot | 2016-06-14 A → 2016-06-14 | 2016-06-17 A → 2016-06-17 | 100% → 0% | none → 0.25d |
| 52 | Scene 3 teardown | 2016-06-17 A → 2016-06-17 | 2016-06-17 A → 2016-06-17 | 100% → 0% | none → 0d |
| 53 | Scene 3 complete | 2016-06-17 A → 2016-06-17 | 2016-06-17 A → 2016-06-17 | 100% → 0% | none → 0d |

## Version 17 (data date 2016-06-10, saved 2013-07-01, file Don Funk Music Video 11-6.mpp)

Last finish 2016-08-04 → 2016-08-08 (+4d). Complete tasks 41 → 23.

Changed:

| ID | Task | Start | Finish | Duration | Complete | Total float | Other |
| --- | --- | --- | --- | --- | --- | --- | --- |
| 1 | **Pre-Production** |  | 2016-05-09 A → 2016-05-11 (+2d) | 89.25d → 92d | 100% → 98% | none → 61.75d |  |
| 2 | Pre-Production complete |  |  |  |  |  | was named Pre-Production begins |
| 7 | Book musicians | 2016-03-28 A → 2016-03-25 A (-3d) | 2016-04-11 A → 2016-04-07 A (-4d) |  |  |  |  |
| 8 | Book dancers | 2016-04-11 A → 2016-04-08 A (-3d) | 2016-04-25 A → 2016-04-26 A (+1d) | 2w → 13d |  |  |  |
| 9 | Reserve audio recording equipment | 2016-04-25 A → 2016-04-27 A (+2d) | 2016-05-02 A → 2016-05-03 A (+1d) |  |  |  |  |
| 10 | Reserve video recording equipment | 2016-05-02 A → 2016-05-04 A (+2d) | 2016-05-09 A → 2016-05-11 A (+2d) | 5d → 6d |  |  |  |
| 11 | **Status Meeting** | 2016-01-04 A → 2016-01-04 | 2016-04-11 A → 2016-04-11 |  | 100% → 0% | none → 84.62d |  |
| 12 | Status Meeting 1 | 2016-01-04 A → 2016-01-04 | 2016-01-04 A → 2016-01-04 |  | 100% → 0% | none → 153.62d |  |
| 13 | Status Meeting 2 | 2016-01-11 A → 2016-01-11 | 2016-01-11 A → 2016-01-11 |  | 100% → 0% | none → 148.62d |  |
| 14 | Status Meeting 3 | 2016-01-19 A → 2016-01-19 | 2016-01-19 A → 2016-01-19 |  | 100% → 0% | none → 143.62d |  |
| 15 | Status Meeting 4 | 2016-01-25 A → 2016-01-25 | 2016-01-25 A → 2016-01-25 |  | 100% → 0% | none → 139.62d |  |
| 16 | Status Meeting 5 | 2016-02-01 A → 2016-02-01 | 2016-02-01 A → 2016-02-01 |  | 100% → 0% | none → 134.62d |  |
| 17 | Status Meeting 6 | 2016-02-08 A → 2016-02-08 | 2016-02-08 A → 2016-02-08 |  | 100% → 0% | none → 129.62d |  |
| 18 | Status Meeting 7 | 2016-02-15 A → 2016-02-15 | 2016-02-15 A → 2016-02-15 |  | 100% → 0% | none → 124.62d |  |
| 19 | Status Meeting 8 | 2016-02-22 A → 2016-02-22 | 2016-02-22 A → 2016-02-22 |  | 100% → 0% | none → 119.62d |  |
| 20 | Status Meeting 9 | 2016-02-29 A → 2016-02-29 | 2016-02-29 A → 2016-02-29 |  | 100% → 0% | none → 114.62d |  |
| 21 | Status Meeting 10 | 2016-03-07 A → 2016-03-07 | 2016-03-07 A → 2016-03-07 |  | 100% → 0% | none → 109.62d |  |
| 22 | Status Meeting 11 | 2016-03-14 A → 2016-03-14 | 2016-03-14 A → 2016-03-14 |  | 100% → 0% | none → 104.62d |  |
| 23 | Status Meeting 12 | 2016-03-21 A → 2016-03-21 | 2016-03-21 A → 2016-03-21 |  | 100% → 0% | none → 99.62d |  |
| 24 | Status Meeting 13 | 2016-03-28 A → 2016-03-28 | 2016-03-28 A → 2016-03-28 |  | 100% → 0% | none → 94.62d |  |
| 25 | Status Meeting 14 | 2016-04-04 A → 2016-04-04 | 2016-04-04 A → 2016-04-04 |  | 100% → 0% | none → 89.62d |  |
| 26 | Status Meeting 15 | 2016-04-11 A → 2016-04-11 | 2016-04-11 A → 2016-04-11 |  | 100% → 0% | none → 84.62d |  |
| 27 | Pre-Production complete | 2016-05-09 A → 2016-05-11 (+2d) | 2016-05-09 A → 2016-05-11 (+2d) |  | 100% → 0% | none → 0d |  |
| 28 | **Production** | 2016-05-09 A → 2016-05-11 A (+2d) | 2016-06-28 → 2016-07-01 (+3d) | 35.5d → 35.75d | 60% → 57% |  |  |
| 29 | Production begins | 2016-05-09 A → 2016-05-11 (+2d) | 2016-05-09 A → 2016-05-11 (+2d) |  | 100% → 0% | none → 36d |  |
| 30 | **Scene 1** | 2016-05-09 A → 2016-05-11 A (+2d) | 2016-05-20 A → 2016-05-23 A (+3d) | 9.25d → 7.88d |  |  |  |
| 31 | Scene 1 begin | 2016-05-09 A → 2016-05-11 A (+2d) | 2016-05-09 A → 2016-05-11 A (+2d) |  |  |  |  |
| 32 | Scene 1 setup | 2016-05-11 A → 2016-05-12 A (+1d) |  |  |  |  |  |
| 33 | Scene 1 rehearsal | 2016-05-13 A → 2016-05-16 A (+3d) |  |  |  |  |  |
| 36 | Scene 1 teardown | 2016-05-19 A → 2016-05-20 A (+1d) | 2016-05-20 A → 2016-05-23 A (+3d) |  |  |  |  |
| 37 | Scene 1 complete | 2016-05-20 A → 2016-05-23 A (+3d) | 2016-05-20 A → 2016-05-23 A (+3d) |  |  |  |  |
| 38 | **Scene 2** |  | 2016-06-03 A → 2016-06-08 A (+5d) | 6.75d → 9.75d |  |  |  |
| 42 | Scene 2 vocal recording | 2016-05-27 A → 2016-05-31 A (+4d) | 2016-06-02 A → 2016-06-03 A (+1d) |  |  |  |  |
| 43 | Scene 2 video shoot | 2016-05-31 A → 2016-06-03 A (+3d) | 2016-06-02 A → 2016-06-07 A (+5d) |  |  |  |  |
| 44 | Scene 2 teardown | 2016-06-02 A → 2016-06-07 A (+5d) | 2016-06-03 A → 2016-06-08 A (+5d) |  |  |  |  |
| 45 | Scene 2 complete | 2016-06-03 A → 2016-06-08 A (+5d) | 2016-06-03 A → 2016-06-08 A (+5d) |  |  |  |  |
| 46 | **Scene 3** | 2016-06-03 A → 2016-06-08 (+5d) | 2016-06-17 → 2016-06-22 (+5d) |  | 15% → 0% |  |  |
| 47 | Scene 3 begin | 2016-06-03 A → 2016-06-08 (+5d) | 2016-06-03 A → 2016-06-08 (+5d) |  | 100% → 0% | none → 0.25d |  |
| 48 | Scene 3 setup | 2016-06-03 A → 2016-06-08 (+5d) | 2016-06-10 → 2016-06-15 (+5d) |  | 50% → 0% |  |  |
| 49 | Scene 3 rehearsal | 2016-06-13 → 2016-06-16 (+3d) | 2016-06-13 → 2016-06-16 (+3d) |  |  |  |  |
| 50 | Scene 3 vocal recording | 2016-06-13 → 2016-06-16 (+3d) | 2016-06-14 → 2016-06-17 (+3d) |  |  |  |  |
| 51 | Scene 3 video shoot | 2016-06-14 → 2016-06-17 (+3d) | 2016-06-17 → 2016-06-22 (+5d) |  |  |  |  |
| 52 | Scene 3 teardown | 2016-06-17 → 2016-06-22 (+5d) | 2016-06-17 → 2016-06-22 (+5d) |  |  |  |  |
| 53 | Scene 3 complete | 2016-06-17 → 2016-06-22 (+5d) | 2016-06-17 → 2016-06-22 (+5d) |  |  |  |  |
| 54 | **Scene 4** | 2016-06-17 → 2016-06-22 (+5d) | 2016-06-28 → 2016-07-01 (+3d) |  |  | 0.25d → 0d |  |
| 55 | Scene 4 begin | 2016-06-17 → 2016-06-22 (+5d) | 2016-06-17 → 2016-06-22 (+5d) |  |  | 0.25d → 0d |  |
| 56 | Scene 4 setup | 2016-06-20 → 2016-06-23 (+3d) | 2016-06-21 → 2016-06-24 (+3d) |  |  | 0.25d → 0d |  |
| 57 | Scene 4 rehearsal | 2016-06-22 → 2016-06-27 (+5d) | 2016-06-22 → 2016-06-27 (+5d) |  |  | 0.25d → 0d |  |
| 58 | Scene 4 vocal recording | 2016-06-22 → 2016-06-27 (+5d) | 2016-06-23 → 2016-06-28 (+5d) |  |  | 0.25d → 0d |  |
| 59 | Scene 4 video shoot | 2016-06-23 → 2016-06-28 (+5d) | 2016-06-27 → 2016-06-30 (+3d) |  |  | 0.25d → 0d |  |
| 60 | Scene 4 teardown | 2016-06-27 → 2016-06-30 (+3d) | 2016-06-28 → 2016-07-01 (+3d) |  |  | 0.25d → 0d |  |
| 61 | Scene 4 complete | 2016-06-28 → 2016-07-01 (+3d) | 2016-06-28 → 2016-07-01 (+3d) |  |  | 0.25d → 0d |  |
| 62 | Production complete | 2016-06-28 → 2016-07-01 (+3d) | 2016-06-28 → 2016-07-01 (+3d) |  |  | 0.25d → 0d |  |
| 63 | **Post-Production** | 2016-06-28 → 2016-07-01 (+3d) | 2016-08-04 → 2016-08-08 (+4d) | 26.88d → 26d |  |  |  |
| 64 | Post-Production Begins | 2016-06-28 → 2016-07-01 (+3d) | 2016-06-28 → 2016-07-01 (+3d) |  |  | 0.25d → 0d |  |
| 65 | Log video footage | 2016-06-28 → 2016-07-01 (+3d) | 2016-07-01 → 2016-07-06 (+5d) |  |  | 0.25d → 0d |  |
| 66 | Log audio tracks by scene | 2016-06-28 → 2016-07-01 (+3d) | 2016-07-01 → 2016-07-06 (+5d) |  |  | 0.25d → 0d |  |
| 67 | Rough edit video - paper | 2016-07-01 → 2016-07-06 (+5d) | 2016-07-08 → 2016-07-13 (+5d) |  |  | 0.25d → 0d |  |
| 68 | Rough audio edit | 2016-07-08 → 2016-07-13 (+5d) | 2016-07-15 → 2016-07-20 (+5d) |  |  | 0.25d → 0d |  |
| 69 | Fine audio edit | 2016-07-15 → 2016-07-20 (+5d) | 2016-07-20 → 2016-07-25 (+5d) |  |  | 10.88d → 10d |  |
| 70 | Fine video edit | 2016-07-15 → 2016-07-20 (+5d) | 2016-07-20 → 2016-07-25 (+5d) |  |  | 0.25d → 0d |  |
| 71 | Dub audio to video | 2016-07-20 → 2016-07-25 (+5d) | 2016-07-22 → 2016-07-27 (+5d) |  |  | 0.25d → 0d |  |
| 72 | Internal review viewing | 2016-07-22 → 2016-07-27 (+5d) | 2016-07-25 → 2016-07-28 (+3d) | 1.25d → 1d |  |  |  |
| 73 | Final edits | 2016-07-25 → 2016-07-28 (+3d) | 2016-07-28 → 2016-08-02 (+5d) | 3.75d → 4d |  |  |  |
| 74 | Formal approval viewing | 2016-07-28 → 2016-08-02 (+5d) | 2016-08-01 → 2016-08-03 (+2d) | 1.62d → 1d |  |  |  |
| 75 | Duplicate audio and video masters | 2016-08-01 → 2016-08-03 (+2d) | 2016-08-02 → 2016-08-04 (+2d) |  |  |  |  |
| 76 | Archive Copy 1 AV masters | 2016-08-02 → 2016-08-04 (+2d) | 2016-08-03 → 2016-08-05 (+2d) |  |  |  |  |
| 77 | Send Copy 2 AV master and dubbed master to | 2016-08-03 → 2016-08-05 (+2d) | 2016-08-04 → 2016-08-08 (+4d) |  |  |  |  |
| 78 | Post-Production complete | 2016-08-04 → 2016-08-08 (+4d) | 2016-08-04 → 2016-08-08 (+4d) |  |  |  |  |

## Version 18 (data date 2016-06-10, saved 2013-07-01, file Don Funk Music Video 12M.mpp)

Last finish 2016-08-08 → 2016-08-11 (+3d). Complete tasks 23 → 25.

Changed:

| ID | Task | Start | Finish | Duration | Complete | Total float |
| --- | --- | --- | --- | --- | --- | --- |
| 28 | **Production** |  | 2016-07-01 → 2016-07-05 (+4d) | 35.75d → 37.75d | 57% → 67% | 0.25d → -1.75d |
| 46 | **Scene 3** | 2016-06-08 A | 2016-06-22 → 2016-06-24 (+2d) | 10.25d → 12.25d | 0% → 51% |  |
| 47 | Scene 3 begin | 2016-06-08 A | 2016-06-08 A |  | 0% → 100% | 0.25d → none |
| 48 | Scene 3 setup | 2016-06-08 A | 2016-06-15 → 2016-06-17 A (+2d) | 2d → 4d | 0% → 100% | 0.25d → none |
| 49 | Scene 3 rehearsal | 2016-06-16 → 2016-06-20 A (+4d) | 2016-06-16 → 2016-06-20 (+4d) | 6h → 6.67h | 0% → 60% | 0.25d → -1.83d |
| 50 | Scene 3 vocal recording | 2016-06-16 → 2016-06-20 (+4d) | 2016-06-17 → 2016-06-21 (+4d) |  |  | 0.25d → -1.83d |
| 51 | Scene 3 video shoot | 2016-06-17 → 2016-06-21 (+4d) | 2016-06-22 → 2016-06-24 (+2d) |  |  | 0.25d → -1.25d |
| 52 | Scene 3 teardown | 2016-06-22 → 2016-06-24 (+2d) | 2016-06-22 → 2016-06-24 (+2d) |  |  | 0d → -1.75d |
| 53 | Scene 3 complete | 2016-06-22 → 2016-06-24 (+2d) | 2016-06-22 → 2016-06-24 (+2d) |  |  | 0d → -1.75d |
| 54 | **Scene 4** | 2016-06-22 → 2016-06-24 (+2d) | 2016-07-01 → 2016-07-05 (+4d) |  |  | 0d → -1.75d |
| 55 | Scene 4 begin | 2016-06-22 → 2016-06-24 (+2d) | 2016-06-22 → 2016-06-24 (+2d) |  |  | 0d → -1.75d |
| 56 | Scene 4 setup | 2016-06-23 → 2016-06-27 (+4d) | 2016-06-24 → 2016-06-28 (+4d) |  |  | 0d → -1.75d |
| 57 | Scene 4 rehearsal | 2016-06-27 → 2016-06-29 (+2d) | 2016-06-27 → 2016-06-29 (+2d) |  |  | 0d → -1.75d |
| 58 | Scene 4 vocal recording | 2016-06-27 → 2016-06-29 (+2d) | 2016-06-28 → 2016-06-30 (+2d) |  |  | 0d → -1.75d |
| 59 | Scene 4 video shoot | 2016-06-28 → 2016-06-30 (+2d) | 2016-06-30 → 2016-07-04 (+4d) |  |  | 0d → -1.75d |
| 60 | Scene 4 teardown | 2016-06-30 → 2016-07-04 (+4d) | 2016-07-01 → 2016-07-05 (+4d) |  |  | 0d → -1.75d |
| 61 | Scene 4 complete | 2016-07-01 → 2016-07-05 (+4d) | 2016-07-01 → 2016-07-05 (+4d) |  |  | 0d → -1.75d |
| 62 | Production complete | 2016-07-01 → 2016-07-05 (+4d) | 2016-07-01 → 2016-07-05 (+4d) |  |  | 0d → -1.75d |
| 63 | **Post-Production** | 2016-07-01 → 2016-07-05 (+4d) | 2016-08-08 → 2016-08-11 (+3d) | 26d → 26.88d |  |  |
| 64 | Post-Production Begins | 2016-07-01 → 2016-07-05 (+4d) | 2016-07-01 → 2016-07-05 (+4d) |  |  | 0d → 0.25d |
| 65 | Log video footage | 2016-07-01 → 2016-07-05 (+4d) | 2016-07-06 → 2016-07-08 (+2d) |  |  | 0d → 0.25d |
| 66 | Log audio tracks by scene | 2016-07-01 → 2016-07-05 (+4d) | 2016-07-06 → 2016-07-08 (+2d) |  |  | 0d → 0.25d |
| 67 | Rough edit video - paper | 2016-07-06 → 2016-07-08 (+2d) | 2016-07-13 → 2016-07-15 (+2d) |  |  | 0d → 0.25d |
| 68 | Rough audio edit | 2016-07-13 → 2016-07-15 (+2d) | 2016-07-20 → 2016-07-22 (+2d) |  |  | 0d → 0.25d |
| 69 | Fine audio edit | 2016-07-20 → 2016-07-22 (+2d) | 2016-07-25 → 2016-07-27 (+2d) |  |  | 10d → 10.88d |
| 70 | Fine video edit | 2016-07-20 → 2016-07-22 (+2d) | 2016-07-25 → 2016-07-27 (+2d) |  |  | 0d → 0.25d |
| 71 | Dub audio to video | 2016-07-25 → 2016-07-27 (+2d) | 2016-07-27 → 2016-07-29 (+2d) |  |  | 0d → 0.25d |
| 72 | Internal review viewing | 2016-07-27 → 2016-07-29 (+2d) | 2016-07-28 → 2016-08-01 (+4d) | 1d → 1.25d |  |  |
| 73 | Final edits | 2016-07-28 → 2016-08-01 (+4d) | 2016-08-02 → 2016-08-04 (+2d) | 4d → 3.75d |  |  |
| 74 | Formal approval viewing | 2016-08-02 → 2016-08-04 (+2d) | 2016-08-03 → 2016-08-08 (+5d) | 1d → 1.62d |  |  |
| 75 | Duplicate audio and video masters | 2016-08-03 → 2016-08-08 (+5d) | 2016-08-04 → 2016-08-09 (+5d) |  |  |  |
| 76 | Archive Copy 1 AV masters | 2016-08-04 → 2016-08-09 (+5d) | 2016-08-05 → 2016-08-10 (+5d) |  |  |  |
| 77 | Send Copy 2 AV master and dubbed master to | 2016-08-05 → 2016-08-10 (+5d) | 2016-08-08 → 2016-08-11 (+3d) |  |  |  |
| 78 | Post-Production complete | 2016-08-08 → 2016-08-11 (+3d) | 2016-08-08 → 2016-08-11 (+3d) |  |  |  |

## Version 19 (saved 2013-07-04, file Don Funk Music Video 14M.mpp)

Last finish 2016-08-11 → 2016-08-03 (-8d). Complete tasks 25 → 0.

Changed:

| ID | Task | Start | Finish | Duration | Complete | Total float | Other |
| --- | --- | --- | --- | --- | --- | --- | --- |
| 1 | **Pre-Production** | 2016-01-04 A → 2016-01-04 |  | 92d → 91.75d | 98% → 0% | 64.62d → 0d | baseline start 2016-01-04 → none; baseline finish 2016-05-11 → none |
| 2 | Pre-Production complete | 2016-01-04 A → 2016-01-04 | 2016-01-04 A → 2016-01-04 |  | 100% → 0% | none → 0d | baseline start 2016-01-04 → none; baseline finish 2016-01-04 → none |
| 3 | Review screenplay | 2016-01-04 A → 2016-01-04 | 2016-01-26 A → 2016-01-26 |  | 100% → 0% | none → 0d | baseline start 2016-01-04 → none; baseline finish 2016-01-26 → none |
| 4 | Develop scene blocking and schedule | 2016-01-26 A → 2016-01-26 | 2016-02-04 A → 2016-02-05 (+1d) | 9.62d → 2w | 100% → 0% | none → 0d | baseline start 2016-01-26 → none; baseline finish 2016-02-05 → none |
| 5 | Develop production layouts | 2016-02-05 A → 2016-02-05 | 2016-02-24 A → 2016-02-24 |  | 100% → 0% | none → 0.25d | baseline start 2016-02-05 → none; baseline finish 2016-02-24 → none |
| 6 | Identify and reserve locations | 2016-02-24 A → 2016-02-24 | 2016-03-28 A → 2016-03-30 (+2d) | 22.5d → 5w | 100% → 0% | none → 0.25d | resources Jeff Pike [50%]; Yan Li [57.1%]; Annete Hill [28.6%]; Ryan Ihrig [75%]; DVD [7.2 2-hour disc] → Jeff Pike [50%]; Yan Li [57.1%]; Annete Hill [28.6%]; Ryan Ihrig [75%]; DVD [8 2-hour disc]; baseline start 2016-02-24 → none; baseline finish 2016-03-30 → none |
| 7 | Book musicians | 2016-03-25 A → 2016-03-30 (+5d) | 2016-04-07 A → 2016-04-13 (+6d) |  | 100% → 0% | none → 0.25d | resources Annette Hill [50%]; David Barber [50%] → none; baseline start 2016-03-28 → none; baseline finish 2016-04-11 → none |
| 8 | Book dancers | 2016-04-08 A → 2016-04-13 (+5d) | 2016-04-26 A → 2016-04-27 (+1d) | 13d → 2w | 100% → 0% | none → 0.25d | resources Annette Hill [50%]; David Barber [50%] → none; baseline start 2016-04-11 → none; baseline finish 2016-04-25 → none |
| 9 | Reserve audio recording equipment | 2016-04-27 A → 2016-04-27 | 2016-05-03 A → 2016-05-04 (+1d) |  | 100% → 0% | none → 0.25d | resources Yan Li; Sound Technician → none; baseline start 2016-04-25 → none; baseline finish 2016-05-02 → none |
| 10 | Reserve video recording equipment | 2016-05-04 A → 2016-05-04 | 2016-05-11 A → 2016-05-11 | 6d → 5d | 100% → 0% | none → 0.25d | resources Sound Technician; Yan Li → none; baseline start 2016-05-02 → none; baseline finish 2016-05-09 → none |
| 11 | **Status Meeting** |  |  |  |  | 87.5d → 81.88d | baseline start 2016-01-04 → none; baseline finish 2016-04-11 → none |
| 12 | Status Meeting 1 |  |  |  |  | 156.5d → 147.62d | baseline start 2016-01-04 → none; baseline finish 2016-01-04 → none |
| 13 | Status Meeting 2 |  |  |  |  | 151.5d → 142.62d | baseline start 2016-01-11 → none; baseline finish 2016-01-11 → none |
| 14 | Status Meeting 3 |  |  |  |  | 146.5d → 137.62d | baseline start 2016-01-19 → none; baseline finish 2016-01-19 → none |
| 15 | Status Meeting 4 |  |  |  |  | 142.5d → 133.62d | baseline start 2016-01-25 → none; baseline finish 2016-01-25 → none |
| 16 | Status Meeting 5 |  |  |  |  | 137.5d → 128.62d | baseline start 2016-02-01 → none; baseline finish 2016-02-01 → none |
| 17 | Status Meeting 6 |  |  |  |  | 132.5d → 123.62d | baseline start 2016-02-08 → none; baseline finish 2016-02-08 → none |
| 18 | Status Meeting 7 |  |  |  |  | 127.5d → 118.62d | baseline start 2016-02-15 → none; baseline finish 2016-02-15 → none |
| 19 | Status Meeting 8 |  |  |  |  | 122.5d → 113.62d | baseline start 2016-02-22 → none; baseline finish 2016-02-22 → none |
| 20 | Status Meeting 9 |  |  |  |  | 117.5d → 108.62d | baseline start 2016-02-29 → none; baseline finish 2016-02-29 → none |
| 21 | Status Meeting 10 |  |  |  |  | 112.5d → 103.62d | baseline start 2016-03-07 → none; baseline finish 2016-03-07 → none |
| 22 | Status Meeting 11 |  |  |  |  | 107.5d → 98.62d | baseline start 2016-03-14 → none; baseline finish 2016-03-14 → none |
| 23 | Status Meeting 12 |  |  |  |  | 102.5d → 93.62d | baseline start 2016-03-21 → none; baseline finish 2016-03-21 → none |
| 24 | Status Meeting 13 |  |  |  |  | 97.5d → 88.62d | baseline start 2016-03-28 → none; baseline finish 2016-03-28 → none |
| 25 | Status Meeting 14 |  |  |  |  | 92.5d → 83.62d | baseline start 2016-04-04 → none; baseline finish 2016-04-04 → none |
| 26 | Status Meeting 15 |  |  |  |  | 87.5d → 78.62d | baseline start 2016-04-11 → none; baseline finish 2016-04-11 → none |
| 27 | Pre-Production complete |  |  |  |  | 0d → 0.25d | baseline start 2016-05-11 → none; baseline finish 2016-05-11 → none |
| 28 | **Production** | 2016-05-11 A → 2016-05-11 | 2016-07-05 → 2016-06-23 (-12d) | 37.75d → 30d | 67% → 0% | -1.75d → 0d | baseline start 2016-05-11 → none; baseline finish 2016-06-23 → none |
| 29 | Production begins |  |  |  |  | 36d → 3d | baseline start 2016-05-11 → none; baseline finish 2016-05-11 → none |
| 30 | **Scene 1** | 2016-05-11 A → 2016-05-11 | 2016-05-23 A → 2016-05-20 (-3d) | 7.88d → 6.75d | 100% → 0% | none → 3d | baseline start 2016-05-11 → none; baseline finish 2016-05-20 → none |
| 31 | Scene 1 begin | 2016-05-11 A → 2016-05-11 | 2016-05-11 A → 2016-05-11 |  | 100% → 0% | none → 3d | baseline start 2016-05-11 → none; baseline finish 2016-05-11 → none |
| 32 | Scene 1 setup | 2016-05-12 A → 2016-05-11 (-1d) | 2016-05-13 A → 2016-05-13 |  | 100% → 0% | none → 3d | baseline start 2016-05-11 → none; baseline finish 2016-05-13 → none |
| 33 | Scene 1 rehearsal | 2016-05-16 A → 2016-05-13 (-3d) | 2016-05-16 A → 2016-05-16 |  | 100% → 0% | none → 3d | baseline start 2016-05-13 → none; baseline finish 2016-05-16 → none |
| 34 | Scene 1 vocal recording | 2016-05-16 A → 2016-05-16 | 2016-05-17 A → 2016-05-17 | 1.13d → 1d | 100% → 0% | none → 3d | baseline start 2016-05-16 → none; baseline finish 2016-05-17 → none |
| 35 | Scene 1 video shoot | 2016-05-17 A → 2016-05-17 | 2016-05-20 A → 2016-05-19 (-1d) | 3d → 2d | 100% → 0% | none → 3d | baseline start 2016-05-17 → none; baseline finish 2016-05-19 → none |
| 36 | Scene 1 teardown | 2016-05-20 A → 2016-05-19 (-1d) | 2016-05-23 A → 2016-05-20 (-3d) |  | 100% → 0% | none → 3d | baseline start 2016-05-19 → none; baseline finish 2016-05-20 → none |
| 37 | Scene 1 complete | 2016-05-23 A → 2016-05-20 (-3d) | 2016-05-23 A → 2016-05-20 (-3d) |  | 100% → 0% | none → 3d | baseline start 2016-05-20 → none; baseline finish 2016-05-20 → none |
| 38 | **Scene 2** | 2016-05-25 A → 2016-05-25 | 2016-06-08 A → 2016-06-03 (-5d) | 9.75d → 6.75d | 100% → 0% | none → 0.5d | baseline start 2016-05-25 → none; baseline finish 2016-06-03 → none |
| 39 | Scene 2 begin | 2016-05-25 A → 2016-05-25 | 2016-05-25 A → 2016-05-25 |  | 100% → 0% | none → 0.5d | baseline start 2016-05-25 → none; baseline finish 2016-05-25 → none |
| 40 | Scene 2 setup | 2016-05-25 A → 2016-05-25 | 2016-05-26 A → 2016-05-26 |  | 100% → 0% | none → 0.5d | baseline start 2016-05-25 → none; baseline finish 2016-05-26 → none |
| 41 | Scene 2 rehearsal | 2016-05-27 A → 2016-05-27 | 2016-05-31 A → 2016-05-27 (-4d) | 14h → 6h | 100% → 0% | none → 0.5d | baseline start 2016-05-27 → none; baseline finish 2016-05-27 → none |
| 42 | Scene 2 vocal recording | 2016-05-31 A → 2016-05-27 (-4d) | 2016-06-03 A → 2016-05-31 (-3d) | 3d → 1d | 100% → 0% | none → 0.5d | baseline start 2016-05-27 → none; baseline finish 2016-05-31 → none |
| 43 | Scene 2 video shoot | 2016-06-03 A → 2016-05-31 (-3d) | 2016-06-07 A → 2016-06-02 (-5d) |  | 100% → 0% | none → 0.5d | baseline start 2016-05-31 → none; baseline finish 2016-06-02 → none |
| 44 | Scene 2 teardown | 2016-06-07 A → 2016-06-02 (-5d) | 2016-06-08 A → 2016-06-03 (-5d) |  | 100% → 0% | none → 0.5d | baseline start 2016-06-02 → none; baseline finish 2016-06-03 → none |
| 45 | Scene 2 complete | 2016-06-08 A → 2016-06-03 (-5d) | 2016-06-08 A → 2016-06-03 (-5d) |  | 100% → 0% | none → 0.5d | baseline start 2016-06-03 → none; baseline finish 2016-06-03 → none |
| 46 | **Scene 3** | 2016-06-08 A → 2016-06-03 (-5d) | 2016-06-24 → 2016-06-14 (-10d) | 12.25d → 7.25d | 51% → 0% |  | baseline start 2016-06-03 → none; baseline finish 2016-06-14 → none |
| 47 | Scene 3 begin | 2016-06-08 A → 2016-06-03 (-5d) | 2016-06-08 A → 2016-06-03 (-5d) |  | 100% → 0% | none → 0.5d | baseline start 2016-06-03 → none; baseline finish 2016-06-03 → none |
| 48 | Scene 3 setup | 2016-06-08 A → 2016-06-03 (-5d) | 2016-06-17 A → 2016-06-07 (-10d) | 4d → 2d | 100% → 0% | none → 0.5d | baseline start 2016-06-03 → none; baseline finish 2016-06-07 → none |
| 49 | Scene 3 rehearsal | 2016-06-20 A → 2016-06-07 (-13d) | 2016-06-20 → 2016-06-08 (-12d) | 6.67h → 6h | 60% → 0% | -1.83d → 0.5d | constraint start no earlier than 2016-06-09 → none; baseline start 2016-06-07 → none; baseline finish 2016-06-08 → none |
| 50 | Scene 3 vocal recording | 2016-06-20 → 2016-06-08 (-12d) | 2016-06-21 → 2016-06-09 (-12d) |  |  | -1.83d → 0.5d | constraint start no earlier than 2016-06-09 → none; baseline start 2016-06-08 → none; baseline finish 2016-06-09 → none |
| 51 | Scene 3 video shoot | 2016-06-21 → 2016-06-09 (-12d) | 2016-06-24 → 2016-06-14 (-10d) |  |  | -1.25d → 0.25d | baseline start 2016-06-09 → none; baseline finish 2016-06-14 → none |
| 52 | Scene 3 teardown | 2016-06-24 → 2016-06-14 (-10d) | 2016-06-24 → 2016-06-14 (-10d) |  |  | -1.75d → 0d | baseline start 2016-06-14 → none; baseline finish 2016-06-14 → none |
| 53 | Scene 3 complete | 2016-06-24 → 2016-06-14 (-10d) | 2016-06-24 → 2016-06-14 (-10d) |  |  | -1.75d → 0d | baseline start 2016-06-14 → none; baseline finish 2016-06-14 → none |
| 54 | **Scene 4** | 2016-06-24 → 2016-06-14 (-10d) | 2016-07-05 → 2016-06-23 (-12d) |  |  | -1.75d → 0d | baseline start 2016-06-14 → none; baseline finish 2016-06-23 → none |
| 55 | Scene 4 begin | 2016-06-24 → 2016-06-14 (-10d) | 2016-06-24 → 2016-06-14 (-10d) |  |  | -1.75d → 0d | baseline start 2016-06-14 → none; baseline finish 2016-06-14 → none |
| 56 | Scene 4 setup | 2016-06-27 → 2016-06-15 (-12d) | 2016-06-28 → 2016-06-16 (-12d) |  |  | -1.75d → 0d | baseline start 2016-06-15 → none; baseline finish 2016-06-16 → none |
| 57 | Scene 4 rehearsal | 2016-06-29 → 2016-06-17 (-12d) | 2016-06-29 → 2016-06-17 (-12d) |  |  | -1.75d → 0d | baseline start 2016-06-17 → none; baseline finish 2016-06-17 → none |
| 58 | Scene 4 vocal recording | 2016-06-29 → 2016-06-17 (-12d) | 2016-06-30 → 2016-06-20 (-10d) |  |  | -1.75d → 0d | baseline start 2016-06-17 → none; baseline finish 2016-06-20 → none |
| 59 | Scene 4 video shoot | 2016-06-30 → 2016-06-20 (-10d) | 2016-07-04 → 2016-06-22 (-12d) |  |  | -1.75d → 0d | baseline start 2016-06-20 → none; baseline finish 2016-06-22 → none |
| 60 | Scene 4 teardown | 2016-07-04 → 2016-06-22 (-12d) | 2016-07-05 → 2016-06-23 (-12d) |  |  | -1.75d → 0d | baseline start 2016-06-22 → none; baseline finish 2016-06-23 → none |
| 61 | Scene 4 complete | 2016-07-05 → 2016-06-23 (-12d) | 2016-07-05 → 2016-06-23 (-12d) |  |  | -1.75d → 0d | resources Ido Ben-Sachar; Patricia Doyle → none; baseline start 2016-06-23 → none; baseline finish 2016-06-23 → none |
| 62 | Production complete | 2016-07-05 → 2016-06-23 (-12d) | 2016-07-05 → 2016-06-23 (-12d) |  |  | -1.75d → 0d | baseline start 2016-06-23 → none; baseline finish 2016-06-23 → none |
| 63 | **Post-Production** | 2016-07-05 → 2016-06-23 (-12d) | 2016-08-11 → 2016-08-03 (-8d) | 26.88d → 29.25d |  |  | baseline start 2016-06-23 → none; baseline finish 2016-07-29 → none |
| 64 | Post-Production Begins | 2016-07-05 → 2016-06-23 (-12d) | 2016-07-05 → 2016-06-23 (-12d) |  |  | 0.25d → 0d | baseline start 2016-06-23 → none; baseline finish 2016-06-23 → none |
| 65 | Log video footage | 2016-07-05 → 2016-06-23 (-12d) | 2016-07-08 → 2016-06-28 (-10d) |  |  | 0.25d → 1.75d | baseline start 2016-06-23 → none; baseline finish 2016-06-28 → none |
| 66 | Log audio tracks by scene | 2016-07-05 → 2016-06-23 (-12d) | 2016-07-08 → 2016-06-30 (-8d) | 3d → 3.75d |  | 0.25d → 0d | resources Sound Editing Studio; Maria Hammond; David Barber → Sound Editing Studio; Maria Hammond; Jim Kim; baseline start 2016-06-23 → none; baseline finish 2016-06-28 → none |
| 67 | Rough edit video - paper | 2016-07-08 → 2016-06-30 (-8d) | 2016-07-15 → 2016-07-07 (-8d) |  |  | 0.25d → 0d | baseline start 2016-06-28 → none; baseline finish 2016-07-05 → none |
| 68 | Rough audio edit | 2016-07-15 → 2016-07-07 (-8d) | 2016-07-22 → 2016-07-14 (-8d) |  |  | 0.25d → 0d | baseline start 2016-07-05 → none; baseline finish 2016-07-12 → none |
| 69 | Fine audio edit | 2016-07-22 → 2016-07-14 (-8d) | 2016-07-27 → 2016-07-19 (-8d) |  |  | 10.88d → 11.5d | baseline start 2016-07-12 → none; baseline finish 2016-07-15 → none |
| 70 | Fine video edit | 2016-07-22 → 2016-07-14 (-8d) | 2016-07-27 → 2016-07-19 (-8d) |  |  | 0.25d → 0d | baseline start 2016-07-12 → none; baseline finish 2016-07-15 → none |

| ID | Task | Start | Finish | Duration | Total float | Other |
| --- | --- | --- | --- | --- | --- | --- |
| 71 | Dub audio to video | 2016-07-27 → 2016-07-19 (-8d) | 2016-07-29 → 2016-07-21 (-8d) |  | 0.25d → 0d | baseline start 2016-07-15 → none; baseline finish 2016-07-19 → none |
| 72 | Internal review viewing | 2016-07-29 → 2016-07-21 (-8d) | 2016-08-01 → 2016-07-25 (-7d) |  |  | baseline start 2016-07-19 → none; baseline finish 2016-07-20 → none |
| 73 | Final edits | 2016-08-01 → 2016-07-25 (-7d) | 2016-08-04 → 2016-07-28 (-7d) | 3.75d → 3.5d |  | baseline start 2016-07-20 → none; baseline finish 2016-07-25 → none |
| 74 | Formal approval viewing | 2016-08-04 → 2016-07-28 (-7d) | 2016-08-08 → 2016-08-01 (-7d) | 1.62d → 1d |  | baseline start 2016-07-25 → none; baseline finish 2016-07-26 → none |
| 75 | Duplicate audio and video masters | 2016-08-08 → 2016-08-01 (-7d) | 2016-08-09 → 2016-08-01 (-8d) |  |  | baseline start 2016-07-26 → none; baseline finish 2016-07-27 → none |
| 76 | Archive Copy 1 AV masters | 2016-08-09 → 2016-08-02 (-7d) | 2016-08-10 → 2016-08-02 (-8d) |  |  | baseline start 2016-07-27 → none; baseline finish 2016-07-28 → none |
| 77 | Send Copy 2 AV master and dubbed master to | 2016-08-10 → 2016-08-03 (-7d) | 2016-08-11 → 2016-08-03 (-8d) |  |  | baseline start 2016-07-28 → none; baseline finish 2016-07-29 → none |
| 78 | Post-Production complete | 2016-08-11 → 2016-08-03 (-8d) | 2016-08-11 → 2016-08-03 (-8d) |  |  | baseline start 2016-07-29 → none; baseline finish 2016-07-29 → none |

## Version 20 (data date 2016-06-10, saved 2013-07-06, file Don Funk Music Video 16M.mpp)

Last finish 2016-08-03 → 2016-08-11 (+8d). Complete tasks 0 → 25.

Changed:

| ID | Task | Start | Finish | Duration | Complete | Total float | Other |
| --- | --- | --- | --- | --- | --- | --- | --- |
| 1 | **Pre-Production** | 2016-01-04 A |  | 91.75d → 92d | 0% → 98% | 0d → 64.62d | baseline start none → 2016-01-04; baseline finish none → 2016-05-11 |
| 2 | Pre-Production complete | 2016-01-04 A | 2016-01-04 A |  | 0% → 100% | 0d → none | baseline start none → 2016-01-04; baseline finish none → 2016-01-04 |
| 3 | Review screenplay | 2016-01-04 A | 2016-01-26 A |  | 0% → 100% | 0d → none | baseline start none → 2016-01-04; baseline finish none → 2016-01-26 |
| 4 | Develop scene blocking and schedule | 2016-01-26 A | 2016-02-05 → 2016-02-04 A (-1d) | 2w → 9.62d | 0% → 100% | 0d → none | baseline start none → 2016-01-26; baseline finish none → 2016-02-05 |
| 5 | Develop production layouts | 2016-02-05 A | 2016-02-24 A |  | 0% → 100% | 0.25d → none | baseline start none → 2016-02-05; baseline finish none → 2016-02-24 |
| 6 | Identify and reserve locations | 2016-02-24 A | 2016-03-30 → 2016-03-28 A (-2d) | 5w → 22.5d | 0% → 100% | 0.25d → none | resources Jeff Pike [50%]; Yan Li [57.1%]; Annete Hill [28.6%]; Ryan Ihrig [75%]; DVD [8 2-hour disc] → Jeff Pike [50%]; Yan Li [57.1%]; Annete Hill [28.6%]; Ryan Ihrig [75%]; DVD [7.2 2-hour disc]; baseline start none → 2016-02-24; baseline finish none → 2016-03-30 |
| 7 | Book musicians | 2016-03-30 → 2016-03-25 A (-5d) | 2016-04-13 → 2016-04-07 A (-6d) |  | 0% → 100% | 0.25d → none | resources none → Annete Hill [50%]; David Barber [50%]; baseline start none → 2016-03-28; baseline finish none → 2016-04-11 |
| 8 | Book dancers | 2016-04-13 → 2016-04-08 A (-5d) | 2016-04-27 → 2016-04-26 A (-1d) | 2w → 13d | 0% → 100% | 0.25d → none | resources none → Annete Hill [50%]; David Barber [50%]; baseline start none → 2016-04-11; baseline finish none → 2016-04-25 |
| 9 | Reserve audio recording equipment | 2016-04-27 A | 2016-05-04 → 2016-05-03 A (-1d) |  | 0% → 100% | 0.25d → none | resources none → Yan Li; Sound Technician; baseline start none → 2016-04-25; baseline finish none → 2016-05-02 |
| 10 | Reserve video recording equipment | 2016-05-04 A | 2016-05-11 A | 5d → 6d | 0% → 100% | 0.25d → none | resources none → Sound Technician; Yan Li; baseline start none → 2016-05-02; baseline finish none → 2016-05-09 |
| 11 | **Status Meeting** |  |  |  |  | 81.88d → 87.5d | baseline start none → 2016-01-04; baseline finish none → 2016-04-11 |
| 12 | Status Meeting 1 |  |  |  |  | 147.62d → 156.5d | baseline start none → 2016-01-04; baseline finish none → 2016-01-04 |
| 13 | Status Meeting 2 |  |  |  |  | 142.62d → 151.5d | baseline start none → 2016-01-11; baseline finish none → 2016-01-11 |
| 14 | Status Meeting 3 |  |  |  |  | 137.62d → 146.5d | baseline start none → 2016-01-19; baseline finish none → 2016-01-19 |
| 15 | Status Meeting 4 |  |  |  |  | 133.62d → 142.5d | baseline start none → 2016-01-25; baseline finish none → 2016-01-25 |
| 16 | Status Meeting 5 |  |  |  |  | 128.62d → 137.5d | baseline start none → 2016-02-01; baseline finish none → 2016-02-01 |
| 17 | Status Meeting 6 |  |  |  |  | 123.62d → 132.5d | baseline start none → 2016-02-08; baseline finish none → 2016-02-08 |
| 18 | Status Meeting 7 |  |  |  |  | 118.62d → 127.5d | baseline start none → 2016-02-15; baseline finish none → 2016-02-15 |
| 19 | Status Meeting 8 |  |  |  |  | 113.62d → 122.5d | baseline start none → 2016-02-22; baseline finish none → 2016-02-22 |
| 20 | Status Meeting 9 |  |  |  |  | 108.62d → 117.5d | baseline start none → 2016-02-29; baseline finish none → 2016-02-29 |
| 21 | Status Meeting 10 |  |  |  |  | 103.62d → 112.5d | baseline start none → 2016-03-07; baseline finish none → 2016-03-07 |
| 22 | Status Meeting 11 |  |  |  |  | 98.62d → 107.5d | baseline start none → 2016-03-14; baseline finish none → 2016-03-14 |
| 23 | Status Meeting 12 |  |  |  |  | 93.62d → 102.5d | baseline start none → 2016-03-21; baseline finish none → 2016-03-21 |
| 24 | Status Meeting 13 |  |  |  |  | 88.62d → 97.5d | baseline start none → 2016-03-28; baseline finish none → 2016-03-28 |
| 25 | Status Meeting 14 |  |  |  |  | 83.62d → 92.5d | baseline start none → 2016-04-04; baseline finish none → 2016-04-04 |
| 26 | Status Meeting 15 |  |  |  |  | 78.62d → 87.5d | baseline start none → 2016-04-11; baseline finish none → 2016-04-11 |
| 27 | Pre-Production complete |  |  |  |  | 0.25d → 0d | baseline start none → 2016-05-11; baseline finish none → 2016-05-11 |
| 28 | **Production** | 2016-05-11 A | 2016-06-23 → 2016-07-05 (+12d) | 30d → 37.75d | 0% → 67% | 0d → -1.75d | baseline start none → 2016-05-11; baseline finish none → 2016-06-23 |
| 29 | Production begins |  |  |  |  | 3d → 36d | baseline start none → 2016-05-11; baseline finish none → 2016-05-11 |
| 30 | **Scene 1** | 2016-05-11 A | 2016-05-20 → 2016-05-23 A (+3d) | 6.75d → 7.88d | 0% → 100% | 3d → none | baseline start none → 2016-05-11; baseline finish none → 2016-05-20 |
| 31 | Scene 1 begin | 2016-05-11 A | 2016-05-11 A |  | 0% → 100% | 3d → none | baseline start none → 2016-05-11; baseline finish none → 2016-05-11 |
| 32 | Scene 1 setup | 2016-05-11 → 2016-05-12 A (+1d) | 2016-05-13 A |  | 0% → 100% | 3d → none | baseline start none → 2016-05-11; baseline finish none → 2016-05-13 |
| 33 | Scene 1 rehearsal | 2016-05-13 → 2016-05-16 A (+3d) | 2016-05-16 A |  | 0% → 100% | 3d → none | baseline start none → 2016-05-13; baseline finish none → 2016-05-16 |
| 34 | Scene 1 vocal recording | 2016-05-16 A | 2016-05-17 A | 1d → 1.13d | 0% → 100% | 3d → none | baseline start none → 2016-05-16; baseline finish none → 2016-05-17 |
| 35 | Scene 1 video shoot | 2016-05-17 A | 2016-05-19 → 2016-05-20 A (+1d) | 2d → 3d | 0% → 100% | 3d → none | baseline start none → 2016-05-17; baseline finish none → 2016-05-19 |
| 36 | Scene 1 teardown | 2016-05-19 → 2016-05-20 A (+1d) | 2016-05-20 → 2016-05-23 A (+3d) |  | 0% → 100% | 3d → none | baseline start none → 2016-05-19; baseline finish none → 2016-05-20 |
| 37 | Scene 1 complete | 2016-05-20 → 2016-05-23 A (+3d) | 2016-05-20 → 2016-05-23 A (+3d) |  | 0% → 100% | 3d → none | baseline start none → 2016-05-20; baseline finish none → 2016-05-20 |
| 38 | **Scene 2** | 2016-05-25 A | 2016-06-03 → 2016-06-08 A (+5d) | 6.75d → 9.75d | 0% → 100% | 0.5d → none | baseline start none → 2016-05-25; baseline finish none → 2016-06-03 |
| 39 | Scene 2 begin | 2016-05-25 A | 2016-05-25 A |  | 0% → 100% | 0.5d → none | baseline start none → 2016-05-25; baseline finish none → 2016-05-25 |
| 40 | Scene 2 setup | 2016-05-25 A | 2016-05-26 A |  | 0% → 100% | 0.5d → none | baseline start none → 2016-05-25; baseline finish none → 2016-05-26 |
| 41 | Scene 2 rehearsal | 2016-05-27 A | 2016-05-27 → 2016-05-31 A (+4d) | 6h → 14h | 0% → 100% | 0.5d → none | baseline start none → 2016-05-27; baseline finish none → 2016-05-27 |
| 42 | Scene 2 vocal recording | 2016-05-27 → 2016-05-31 A (+4d) | 2016-05-31 → 2016-06-03 A (+3d) | 1d → 3d | 0% → 100% | 0.5d → none | baseline start none → 2016-05-27; baseline finish none → 2016-05-31 |
| 43 | Scene 2 video shoot | 2016-05-31 → 2016-06-03 A (+3d) | 2016-06-02 → 2016-06-07 A (+5d) |  | 0% → 100% | 0.5d → none | baseline start none → 2016-05-31; baseline finish none → 2016-06-02 |
| 44 | Scene 2 teardown | 2016-06-02 → 2016-06-07 A (+5d) | 2016-06-03 → 2016-06-08 A (+5d) |  | 0% → 100% | 0.5d → none | baseline start none → 2016-06-02; baseline finish none → 2016-06-03 |
| 45 | Scene 2 complete | 2016-06-03 → 2016-06-08 A (+5d) | 2016-06-03 → 2016-06-08 A (+5d) |  | 0% → 100% | 0.5d → none | baseline start none → 2016-06-03; baseline finish none → 2016-06-03 |
| 46 | **Scene 3** | 2016-06-03 → 2016-06-08 A (+5d) | 2016-06-14 → 2016-06-24 (+10d) | 7.25d → 12.25d | 0% → 51% |  | baseline start none → 2016-06-03; baseline finish none → 2016-06-14 |
| 47 | Scene 3 begin | 2016-06-03 → 2016-06-08 A (+5d) | 2016-06-03 → 2016-06-08 A (+5d) |  | 0% → 100% | 0.5d → none | baseline start none → 2016-06-03; baseline finish none → 2016-06-03 |
| 48 | Scene 3 setup | 2016-06-03 → 2016-06-08 A (+5d) | 2016-06-07 → 2016-06-17 A (+10d) | 2d → 4d | 0% → 100% | 0.5d → none | baseline start none → 2016-06-03; baseline finish none → 2016-06-07 |
| 49 | Scene 3 rehearsal | 2016-06-07 → 2016-06-20 A (+13d) | 2016-06-08 → 2016-06-20 (+12d) | 6h → 6.67h | 0% → 60% | 0.5d → -1.83d | constraint none → start no earlier than 2016-06-09; baseline start none → 2016-06-07; baseline finish none → 2016-06-08 |
| 50 | Scene 3 vocal recording | 2016-06-08 → 2016-06-20 (+12d) | 2016-06-09 → 2016-06-21 (+12d) |  |  | 0.5d → -1.83d | constraint none → start no earlier than 2016-06-09; baseline start none → 2016-06-08; baseline finish none → 2016-06-09 |
| 51 | Scene 3 video shoot | 2016-06-09 → 2016-06-21 (+12d) | 2016-06-14 → 2016-06-24 (+10d) |  |  | 0.25d → -1.25d | baseline start none → 2016-06-09; baseline finish none → 2016-06-14 |
| 52 | Scene 3 teardown | 2016-06-14 → 2016-06-24 (+10d) | 2016-06-14 → 2016-06-24 (+10d) |  |  | 0d → -1.75d | baseline start none → 2016-06-14; baseline finish none → 2016-06-14 |
| 53 | Scene 3 complete | 2016-06-14 → 2016-06-24 (+10d) | 2016-06-14 → 2016-06-24 (+10d) |  |  | 0d → -1.75d | baseline start none → 2016-06-14; baseline finish none → 2016-06-14 |
| 54 | **Scene 4** | 2016-06-14 → 2016-06-24 (+10d) | 2016-06-23 → 2016-07-05 (+12d) |  |  | 0d → -1.75d | baseline start none → 2016-06-14; baseline finish none → 2016-06-23 |
| 55 | Scene 4 begin | 2016-06-14 → 2016-06-24 (+10d) | 2016-06-14 → 2016-06-24 (+10d) |  |  | 0d → -1.75d | baseline start none → 2016-06-14; baseline finish none → 2016-06-14 |
| 56 | Scene 4 setup | 2016-06-15 → 2016-06-27 (+12d) | 2016-06-16 → 2016-06-28 (+12d) |  |  | 0d → -1.75d | baseline start none → 2016-06-15; baseline finish none → 2016-06-16 |
| 57 | Scene 4 rehearsal | 2016-06-17 → 2016-06-29 (+12d) | 2016-06-17 → 2016-06-29 (+12d) |  |  | 0d → -1.75d | baseline start none → 2016-06-17; baseline finish none → 2016-06-17 |
| 58 | Scene 4 vocal recording | 2016-06-17 → 2016-06-29 (+12d) | 2016-06-20 → 2016-06-30 (+10d) |  |  | 0d → -1.75d | baseline start none → 2016-06-17; baseline finish none → 2016-06-20 |
| 59 | Scene 4 video shoot | 2016-06-20 → 2016-06-30 (+10d) | 2016-06-22 → 2016-07-04 (+12d) |  |  | 0d → -1.75d | baseline start none → 2016-06-20; baseline finish none → 2016-06-22 |
| 60 | Scene 4 teardown | 2016-06-22 → 2016-07-04 (+12d) | 2016-06-23 → 2016-07-05 (+12d) |  |  | 0d → -1.75d | baseline start none → 2016-06-22; baseline finish none → 2016-06-23 |
| 61 | Scene 4 complete | 2016-06-23 → 2016-07-05 (+12d) | 2016-06-23 → 2016-07-05 (+12d) |  |  | 0d → -1.75d | resources none → Ido Ben-Sachar; Patricia Doyle; baseline start none → 2016-06-23; baseline finish none → 2016-06-23 |
| 62 | Production complete | 2016-06-23 → 2016-07-05 (+12d) | 2016-06-23 → 2016-07-05 (+12d) |  |  | 0d → -1.75d | baseline start none → 2016-06-23; baseline finish none → 2016-06-23 |
| 63 | **Post-Production** | 2016-06-23 → 2016-07-05 (+12d) | 2016-08-03 → 2016-08-11 (+8d) | 29.25d → 26.88d |  |  | baseline start none → 2016-06-23; baseline finish none → 2016-07-29 |
| 64 | Post-Production Begins | 2016-06-23 → 2016-07-05 (+12d) | 2016-06-23 → 2016-07-05 (+12d) |  |  | 0d → 0.25d | baseline start none → 2016-06-23; baseline finish none → 2016-06-23 |
| 65 | Log video footage | 2016-06-23 → 2016-07-05 (+12d) | 2016-06-28 → 2016-07-08 (+10d) |  |  | 1.75d → 0.25d | baseline start none → 2016-06-23; baseline finish none → 2016-06-28 |
| 66 | Log audio tracks by scene | 2016-06-23 → 2016-07-05 (+12d) | 2016-06-30 → 2016-07-08 (+8d) | 3.75d → 3d |  | 0d → 0.25d | resources Sound Editing Studio; Maria Hammond; Jim Kim → Sound Editing Studio; Maria Hammond; David Barber; baseline start none → 2016-06-23; baseline finish none → 2016-06-28 |
| 67 | Rough edit video - paper | 2016-06-30 → 2016-07-08 (+8d) | 2016-07-07 → 2016-07-15 (+8d) |  |  | 0d → 0.25d | baseline start none → 2016-06-28; baseline finish none → 2016-07-05 |
| 68 | Rough audio edit | 2016-07-07 → 2016-07-15 (+8d) | 2016-07-14 → 2016-07-22 (+8d) |  |  | 0d → 0.25d | baseline start none → 2016-07-05; baseline finish none → 2016-07-12 |
| 69 | Fine audio edit | 2016-07-14 → 2016-07-22 (+8d) | 2016-07-19 → 2016-07-27 (+8d) |  |  | 11.5d → 10.88d | baseline start none → 2016-07-12; baseline finish none → 2016-07-15 |
| 70 | Fine video edit | 2016-07-14 → 2016-07-22 (+8d) | 2016-07-19 → 2016-07-27 (+8d) |  |  | 0d → 0.25d | baseline start none → 2016-07-12; baseline finish none → 2016-07-15 |

| ID | Task | Start | Finish | Duration | Total float | Other |
| --- | --- | --- | --- | --- | --- | --- |
| 71 | Dub audio to video | 2016-07-19 → 2016-07-27 (+8d) | 2016-07-21 → 2016-07-29 (+8d) |  | 0d → 0.25d | baseline start none → 2016-07-15; baseline finish none → 2016-07-19 |
| 72 | Internal review viewing | 2016-07-21 → 2016-07-29 (+8d) | 2016-07-25 → 2016-08-01 (+7d) |  |  | baseline start none → 2016-07-19; baseline finish none → 2016-07-20 |
| 73 | Final edits | 2016-07-25 → 2016-08-01 (+7d) | 2016-07-28 → 2016-08-04 (+7d) | 3.5d → 3.75d |  | baseline start none → 2016-07-20; baseline finish none → 2016-07-25 |
| 74 | Formal approval viewing | 2016-07-28 → 2016-08-04 (+7d) | 2016-08-01 → 2016-08-08 (+7d) | 1d → 1.62d |  | baseline start none → 2016-07-25; baseline finish none → 2016-07-26 |
| 75 | Duplicate audio and video masters | 2016-08-01 → 2016-08-08 (+7d) | 2016-08-01 → 2016-08-09 (+8d) |  |  | baseline start none → 2016-07-26; baseline finish none → 2016-07-27 |
| 76 | Archive Copy 1 AV masters | 2016-08-02 → 2016-08-09 (+7d) | 2016-08-02 → 2016-08-10 (+8d) |  |  | baseline start none → 2016-07-27; baseline finish none → 2016-07-28 |
| 77 | Send Copy 2 AV master and dubbed master to | 2016-08-03 → 2016-08-10 (+7d) | 2016-08-03 → 2016-08-11 (+8d) |  |  | baseline start none → 2016-07-28; baseline finish none → 2016-07-29 |
| 78 | Post-Production complete | 2016-08-03 → 2016-08-11 (+8d) | 2016-08-03 → 2016-08-11 (+8d) |  |  | baseline start none → 2016-07-29; baseline finish none → 2016-07-29 |

## Version 21 (saved 2013-07-18, file Don Funk Music Video 9M.mpp)

Last finish 2016-08-11 → 2016-07-29 (-13d). Complete tasks 25 → 0.

Changed:

| ID | Task | Start | Finish | Duration | Complete | Total float | Other |
| --- | --- | --- | --- | --- | --- | --- | --- |
| 1 | **Pre-Production** | 2016-01-04 A → 2016-01-04 |  | 92d → 91.75d | 98% → 0% | 64.62d → 0d | baseline start 2016-01-04 → none; baseline finish 2016-05-11 → none |
| 2 | Pre-Production begins | 2016-01-04 A → 2016-01-04 | 2016-01-04 A → 2016-01-04 |  | 100% → 0% | none → 0d | was named Pre-Production complete; baseline start 2016-01-04 → none; baseline finish 2016-01-04 → none |
| 3 | Review screenplay | 2016-01-04 A → 2016-01-04 | 2016-01-26 A → 2016-01-26 |  | 100% → 0% | none → 0d | baseline start 2016-01-04 → none; baseline finish 2016-01-26 → none |
| 4 | Develop scene blocking and schedule | 2016-01-26 A → 2016-01-26 | 2016-02-04 A → 2016-02-05 (+1d) | 9.62d → 2w | 100% → 0% | none → 0d | baseline start 2016-01-26 → none; baseline finish 2016-02-05 → none |
| 5 | Develop production layouts | 2016-02-05 A → 2016-02-05 | 2016-02-24 A → 2016-02-24 |  | 100% → 0% | none → 0.25d | baseline start 2016-02-05 → none; baseline finish 2016-02-24 → none |
| 6 | Identify and reserve locations | 2016-02-24 A → 2016-02-24 | 2016-03-28 A → 2016-03-30 (+2d) | 22.5d → 5w | 100% → 0% | none → 0.25d | resources Jeff Pike [50%]; Yan Li [57.1%]; Annete Hill [28.6%]; Ryan Ihrig [75%]; DVD [7.2 2-hour disc] → Jeff Pike [50%]; Yan Li [57.1%]; Annete Hill [28.6%]; Ryan Ihrig [75%]; DVD [8 2-hour disc]; baseline start 2016-02-24 → none; baseline finish 2016-03-30 → none |
| 7 | Book musicians | 2016-03-25 A → 2016-03-30 (+5d) | 2016-04-07 A → 2016-04-13 (+6d) |  | 100% → 0% | none → 0.25d | resources Annete Hill [50%]; David Barber [50%] → none; baseline start 2016-03-28 → none; baseline finish 2016-04-11 → none |
| 8 | Book dancers | 2016-04-08 A → 2016-04-13 (+5d) | 2016-04-26 A → 2016-04-27 (+1d) | 13d → 2w | 100% → 0% | none → 0.25d | resources Annete Hill [50%]; David Barber [50%] → none; baseline start 2016-04-11 → none; baseline finish 2016-04-25 → none |
| 9 | Reserve audio recording equipment | 2016-04-27 A → 2016-04-27 | 2016-05-03 A → 2016-05-04 (+1d) |  | 100% → 0% | none → 0.25d | resources Yan Li; Sound Technician → none; baseline start 2016-04-25 → none; baseline finish 2016-05-02 → none |
| 10 | Reserve video recording equipment | 2016-05-04 A → 2016-05-04 | 2016-05-11 A → 2016-05-11 | 6d → 5d | 100% → 0% | none → 0.25d | resources Sound Technician; Yan Li → none; baseline start 2016-05-02 → none; baseline finish 2016-05-09 → none |
| 11 | **Status Meeting** |  |  |  |  | 87.5d → 78.62d | baseline start 2016-01-04 → none; baseline finish 2016-04-11 → none |
| 12 | Status Meeting 1 |  |  |  |  | 156.5d → 147.62d | baseline start 2016-01-04 → none; baseline finish 2016-01-04 → none |
| 13 | Status Meeting 2 |  |  |  |  | 151.5d → 142.62d | baseline start 2016-01-11 → none; baseline finish 2016-01-11 → none |
| 14 | Status Meeting 3 |  |  |  |  | 146.5d → 137.62d | baseline start 2016-01-19 → none; baseline finish 2016-01-19 → none |
| 15 | Status Meeting 4 |  |  |  |  | 142.5d → 133.62d | baseline start 2016-01-25 → none; baseline finish 2016-01-25 → none |
| 16 | Status Meeting 5 |  |  |  |  | 137.5d → 128.62d | baseline start 2016-02-01 → none; baseline finish 2016-02-01 → none |
| 17 | Status Meeting 6 |  |  |  |  | 132.5d → 123.62d | baseline start 2016-02-08 → none; baseline finish 2016-02-08 → none |
| 18 | Status Meeting 7 |  |  |  |  | 127.5d → 118.62d | baseline start 2016-02-15 → none; baseline finish 2016-02-15 → none |
| 19 | Status Meeting 8 |  |  |  |  | 122.5d → 113.62d | baseline start 2016-02-22 → none; baseline finish 2016-02-22 → none |
| 20 | Status Meeting 9 |  |  |  |  | 117.5d → 108.62d | baseline start 2016-02-29 → none; baseline finish 2016-02-29 → none |
| 21 | Status Meeting 10 |  |  |  |  | 112.5d → 103.62d | baseline start 2016-03-07 → none; baseline finish 2016-03-07 → none |
| 22 | Status Meeting 11 |  |  |  |  | 107.5d → 98.62d | baseline start 2016-03-14 → none; baseline finish 2016-03-14 → none |
| 23 | Status Meeting 12 |  |  |  |  | 102.5d → 93.62d | baseline start 2016-03-21 → none; baseline finish 2016-03-21 → none |
| 24 | Status Meeting 13 |  |  |  |  | 97.5d → 88.62d | baseline start 2016-03-28 → none; baseline finish 2016-03-28 → none |
| 25 | Status Meeting 14 |  |  |  |  | 92.5d → 83.62d | baseline start 2016-04-04 → none; baseline finish 2016-04-04 → none |
| 26 | Status Meeting 15 |  |  |  |  | 87.5d → 78.62d | baseline start 2016-04-11 → none; baseline finish 2016-04-11 → none |
| 27 | Pre-Production complete |  |  |  |  | 0d → 0.25d | baseline start 2016-05-11 → none; baseline finish 2016-05-11 → none |
| 28 | **Production** | 2016-05-11 A → 2016-05-11 | 2016-07-05 → 2016-06-23 (-12d) | 37.75d → 30d | 67% → 0% | -1.75d → 0d | baseline start 2016-05-11 → none; baseline finish 2016-06-23 → none |
| 29 | Production begins |  |  |  |  | 36d → 3d | baseline start 2016-05-11 → none; baseline finish 2016-05-11 → none |
| 30 | **Scene 1** | 2016-05-11 A → 2016-05-11 | 2016-05-23 A → 2016-05-20 (-3d) | 7.88d → 6.75d | 100% → 0% | none → 3d | baseline start 2016-05-11 → none; baseline finish 2016-05-20 → none |
| 31 | Scene 1 begin | 2016-05-11 A → 2016-05-11 | 2016-05-11 A → 2016-05-11 |  | 100% → 0% | none → 3d | baseline start 2016-05-11 → none; baseline finish 2016-05-11 → none |
| 32 | Scene 1 setup | 2016-05-12 A → 2016-05-11 (-1d) | 2016-05-13 A → 2016-05-13 |  | 100% → 0% | none → 3d | baseline start 2016-05-11 → none; baseline finish 2016-05-13 → none |
| 33 | Scene 1 rehearsal | 2016-05-16 A → 2016-05-13 (-3d) | 2016-05-16 A → 2016-05-16 |  | 100% → 0% | none → 3d | baseline start 2016-05-13 → none; baseline finish 2016-05-16 → none |
| 34 | Scene 1 vocal recording | 2016-05-16 A → 2016-05-16 | 2016-05-17 A → 2016-05-17 | 1.13d → 1d | 100% → 0% | none → 3d | baseline start 2016-05-16 → none; baseline finish 2016-05-17 → none |
| 35 | Scene 1 video shoot | 2016-05-17 A → 2016-05-17 | 2016-05-20 A → 2016-05-19 (-1d) | 3d → 2d | 100% → 0% | none → 3d | baseline start 2016-05-17 → none; baseline finish 2016-05-19 → none |
| 36 | Scene 1 teardown | 2016-05-20 A → 2016-05-19 (-1d) | 2016-05-23 A → 2016-05-20 (-3d) |  | 100% → 0% | none → 3d | baseline start 2016-05-19 → none; baseline finish 2016-05-20 → none |
| 37 | Scene 1 complete | 2016-05-23 A → 2016-05-20 (-3d) | 2016-05-23 A → 2016-05-20 (-3d) |  | 100% → 0% | none → 3d | baseline start 2016-05-20 → none; baseline finish 2016-05-20 → none |
| 38 | **Scene 2** | 2016-05-25 A → 2016-05-25 | 2016-06-08 A → 2016-06-03 (-5d) | 9.75d → 6.75d | 100% → 0% | none → 0.5d | baseline start 2016-05-25 → none; baseline finish 2016-06-03 → none |
| 39 | Scene 2 begin | 2016-05-25 A → 2016-05-25 | 2016-05-25 A → 2016-05-25 |  | 100% → 0% | none → 0.5d | baseline start 2016-05-25 → none; baseline finish 2016-05-25 → none |
| 40 | Scene 2 setup | 2016-05-25 A → 2016-05-25 | 2016-05-26 A → 2016-05-26 |  | 100% → 0% | none → 0.5d | baseline start 2016-05-25 → none; baseline finish 2016-05-26 → none |
| 41 | Scene 2 rehearsal | 2016-05-27 A → 2016-05-27 | 2016-05-31 A → 2016-05-27 (-4d) | 14h → 6h | 100% → 0% | none → 0.5d | baseline start 2016-05-27 → none; baseline finish 2016-05-27 → none |
| 42 | Scene 2 vocal recording | 2016-05-31 A → 2016-05-27 (-4d) | 2016-06-03 A → 2016-05-31 (-3d) | 3d → 1d | 100% → 0% | none → 0.5d | baseline start 2016-05-27 → none; baseline finish 2016-05-31 → none |
| 43 | Scene 2 video shoot | 2016-06-03 A → 2016-05-31 (-3d) | 2016-06-07 A → 2016-06-02 (-5d) |  | 100% → 0% | none → 0.5d | baseline start 2016-05-31 → none; baseline finish 2016-06-02 → none |
| 44 | Scene 2 teardown | 2016-06-07 A → 2016-06-02 (-5d) | 2016-06-08 A → 2016-06-03 (-5d) |  | 100% → 0% | none → 0.5d | baseline start 2016-06-02 → none; baseline finish 2016-06-03 → none |
| 45 | Scene 2 complete | 2016-06-08 A → 2016-06-03 (-5d) | 2016-06-08 A → 2016-06-03 (-5d) |  | 100% → 0% | none → 0.5d | baseline start 2016-06-03 → none; baseline finish 2016-06-03 → none |
| 46 | **Scene 3** | 2016-06-08 A → 2016-06-03 (-5d) | 2016-06-24 → 2016-06-14 (-10d) | 12.25d → 7.25d | 51% → 0% |  | baseline start 2016-06-03 → none; baseline finish 2016-06-14 → none |
| 47 | Scene 3 begin | 2016-06-08 A → 2016-06-03 (-5d) | 2016-06-08 A → 2016-06-03 (-5d) |  | 100% → 0% | none → 0.5d | baseline start 2016-06-03 → none; baseline finish 2016-06-03 → none |
| 48 | Scene 3 setup | 2016-06-08 A → 2016-06-03 (-5d) | 2016-06-17 A → 2016-06-07 (-10d) | 4d → 2d | 100% → 0% | none → 0.5d | baseline start 2016-06-03 → none; baseline finish 2016-06-07 → none |
| 49 | Scene 3 rehearsal | 2016-06-20 A → 2016-06-07 (-13d) | 2016-06-20 → 2016-06-08 (-12d) | 6.67h → 6h | 60% → 0% | -1.83d → 0.5d | constraint start no earlier than 2016-06-09 → none; baseline start 2016-06-07 → none; baseline finish 2016-06-08 → none |
| 50 | Scene 3 vocal recording | 2016-06-20 → 2016-06-08 (-12d) | 2016-06-21 → 2016-06-09 (-12d) |  |  | -1.83d → 0.5d | constraint start no earlier than 2016-06-09 → none; baseline start 2016-06-08 → none; baseline finish 2016-06-09 → none |
| 51 | Scene 3 video shoot | 2016-06-21 → 2016-06-09 (-12d) | 2016-06-24 → 2016-06-14 (-10d) |  |  | -1.25d → 0.25d | baseline start 2016-06-09 → none; baseline finish 2016-06-14 → none |
| 52 | Scene 3 teardown | 2016-06-24 → 2016-06-14 (-10d) | 2016-06-24 → 2016-06-14 (-10d) |  |  | -1.75d → 0d | baseline start 2016-06-14 → none; baseline finish 2016-06-14 → none |
| 53 | Scene 3 complete | 2016-06-24 → 2016-06-14 (-10d) | 2016-06-24 → 2016-06-14 (-10d) |  |  | -1.75d → 0d | baseline start 2016-06-14 → none; baseline finish 2016-06-14 → none |
| 54 | **Scene 4** | 2016-06-24 → 2016-06-14 (-10d) | 2016-07-05 → 2016-06-23 (-12d) |  |  | -1.75d → 0d | baseline start 2016-06-14 → none; baseline finish 2016-06-23 → none |
| 55 | Scene 4 begin | 2016-06-24 → 2016-06-14 (-10d) | 2016-06-24 → 2016-06-14 (-10d) |  |  | -1.75d → 0d | baseline start 2016-06-14 → none; baseline finish 2016-06-14 → none |
| 56 | Scene 4 setup | 2016-06-27 → 2016-06-15 (-12d) | 2016-06-28 → 2016-06-16 (-12d) |  |  | -1.75d → 0d | baseline start 2016-06-15 → none; baseline finish 2016-06-16 → none |
| 57 | Scene 4 rehearsal | 2016-06-29 → 2016-06-17 (-12d) | 2016-06-29 → 2016-06-17 (-12d) |  |  | -1.75d → 0d | baseline start 2016-06-17 → none; baseline finish 2016-06-17 → none |
| 58 | Scene 4 vocal recording | 2016-06-29 → 2016-06-17 (-12d) | 2016-06-30 → 2016-06-20 (-10d) |  |  | -1.75d → 0d | baseline start 2016-06-17 → none; baseline finish 2016-06-20 → none |
| 59 | Scene 4 video shoot | 2016-06-30 → 2016-06-20 (-10d) | 2016-07-04 → 2016-06-22 (-12d) |  |  | -1.75d → 0d | baseline start 2016-06-20 → none; baseline finish 2016-06-22 → none |
| 60 | Scene 4 teardown | 2016-07-04 → 2016-06-22 (-12d) | 2016-07-05 → 2016-06-23 (-12d) |  |  | -1.75d → 0d | baseline start 2016-06-22 → none; baseline finish 2016-06-23 → none |
| 61 | Scene 4 complete | 2016-07-05 → 2016-06-23 (-12d) | 2016-07-05 → 2016-06-23 (-12d) |  |  | -1.75d → 0d | resources Ido Ben-Sachar; Patricia Doyle → none; baseline start 2016-06-23 → none; baseline finish 2016-06-23 → none |
| 62 | Production complete | 2016-07-05 → 2016-06-23 (-12d) | 2016-07-05 → 2016-06-23 (-12d) |  |  | -1.75d → 0d | baseline start 2016-06-23 → none; baseline finish 2016-06-23 → none |
| 63 | **Post-Production** | 2016-07-05 → 2016-06-23 (-12d) | 2016-08-11 → 2016-07-29 (-13d) | 26.88d → 26d |  |  | baseline start 2016-06-23 → none; baseline finish 2016-07-29 → none |
| 64 | Post-Production Begins | 2016-07-05 → 2016-06-23 (-12d) | 2016-07-05 → 2016-06-23 (-12d) |  |  | 0.25d → 0d | baseline start 2016-06-23 → none; baseline finish 2016-06-23 → none |
| 65 | Log video footage | 2016-07-05 → 2016-06-23 (-12d) | 2016-07-08 → 2016-06-28 (-10d) |  |  | 0.25d → 0d | baseline start 2016-06-23 → none; baseline finish 2016-06-28 → none |
| 66 | Log audio tracks by scene | 2016-07-05 → 2016-06-23 (-12d) | 2016-07-08 → 2016-06-28 (-10d) |  |  | 0.25d → 0d | baseline start 2016-06-23 → none; baseline finish 2016-06-28 → none |
| 67 | Rough edit video - paper | 2016-07-08 → 2016-06-28 (-10d) | 2016-07-15 → 2016-07-05 (-10d) |  |  | 0.25d → 0d | baseline start 2016-06-28 → none; baseline finish 2016-07-05 → none |
| 68 | Rough audio edit | 2016-07-15 → 2016-07-05 (-10d) | 2016-07-22 → 2016-07-12 (-10d) |  |  | 0.25d → 0d | baseline start 2016-07-05 → none; baseline finish 2016-07-12 → none |
| 69 | Fine audio edit | 2016-07-22 → 2016-07-12 (-10d) | 2016-07-27 → 2016-07-15 (-12d) |  |  | 10.88d → 10d | baseline start 2016-07-12 → none; baseline finish 2016-07-15 → none |
| 70 | Fine video edit | 2016-07-22 → 2016-07-12 (-10d) | 2016-07-27 → 2016-07-15 (-12d) |  |  | 0.25d → 0d | baseline start 2016-07-12 → none; baseline finish 2016-07-15 → none |

| ID | Task | Start | Finish | Duration | Total float | Other |
| --- | --- | --- | --- | --- | --- | --- |
| 71 | Dub audio to video | 2016-07-27 → 2016-07-15 (-12d) | 2016-07-29 → 2016-07-19 (-10d) |  | 0.25d → 0d | baseline start 2016-07-15 → none; baseline finish 2016-07-19 → none |
| 72 | Internal review viewing | 2016-07-29 → 2016-07-19 (-10d) | 2016-08-01 → 2016-07-20 (-12d) | 1.25d → 1d |  | baseline start 2016-07-19 → none; baseline finish 2016-07-20 → none |
| 73 | Final edits | 2016-08-01 → 2016-07-20 (-12d) | 2016-08-04 → 2016-07-25 (-10d) | 3.75d → 4d |  | baseline start 2016-07-20 → none; baseline finish 2016-07-25 → none |
| 74 | Formal approval viewing | 2016-08-04 → 2016-07-25 (-10d) | 2016-08-08 → 2016-07-26 (-13d) | 1.62d → 1d |  | baseline start 2016-07-25 → none; baseline finish 2016-07-26 → none |
| 75 | Duplicate audio and video masters | 2016-08-08 → 2016-07-26 (-13d) | 2016-08-09 → 2016-07-27 (-13d) |  |  | baseline start 2016-07-26 → none; baseline finish 2016-07-27 → none |
| 76 | Archive Copy 1 AV masters | 2016-08-09 → 2016-07-27 (-13d) | 2016-08-10 → 2016-07-28 (-13d) |  |  | baseline start 2016-07-27 → none; baseline finish 2016-07-28 → none |
| 77 | Send Copy 2 AV master and dubbed master to | 2016-08-10 → 2016-07-28 (-13d) | 2016-08-11 → 2016-07-29 (-13d) |  |  | baseline start 2016-07-28 → none; baseline finish 2016-07-29 → none |
| 78 | Post-Production complete | 2016-08-11 → 2016-07-29 (-13d) | 2016-08-11 → 2016-07-29 (-13d) |  |  | baseline start 2016-07-29 → none; baseline finish 2016-07-29 → none |

## Version 22 (saved 2018-08-28, file Don Funk Music Video 2.mpp)

Last finish 2016-07-29 → 2016-06-15 (-44d).

Removed: 11 Status Meeting; 12 Status Meeting 1; 13 Status Meeting 2; 14 Status Meeting 3; 15 Status Meeting 4; 16 Status Meeting 5; 17 Status Meeting 6; 18 Status Meeting 7; 19 Status Meeting 8; 20 Status Meeting 9; 21 Status Meeting 10; 22 Status Meeting 11; 23 Status Meeting 12; 24 Status Meeting 13; 25 Status Meeting 14; 26 Status Meeting 15; 54 Scene 4; 55 Scene 4 begin; 56 Scene 4 setup; 57 Scene 4 rehearsal; 58 Scene 4 vocal recording; 59 Scene 4 video shoot; 60 Scene 4 teardown; 61 Scene 4 complete; 65 Log video footage; 66 Log audio tracks by scene; 67 Rough edit video - paper; 68 Rough audio edit; 69 Fine audio edit; 70 Fine video edit; 71 Dub audio to video; 72 Internal review viewing; 73 Final edits; 74 Formal approval viewing; 75 Duplicate audio and video masters; 76 Archive Copy 1 AV masters; 77 Send Copy 2 AV master and dubbed master to

Changed:

| ID | Task | Start | Finish | Duration | Total float | Predecessors | Other |
| --- | --- | --- | --- | --- | --- | --- | --- |
| 1 | **Pre-Production** |  | 2016-05-11 → 2016-05-16 (+5d) | 91.75d → 95d |  |  |  |
| 3 | Review screenplay |  | 2016-01-26 → 2016-01-25 (-1d) | 3.6w → 3w |  |  | resources Scott Seely; Jeff Pike → none |
| 4 | Develop scene blocking and schedule |  | 2016-02-05 → 2016-02-01 (-4d) | 2w → 1w |  |  | resources Scott Seely [58%]; Judy Lew [59.7%] → none |
| 5 | Develop production layouts | 2016-02-05 → 2016-02-02 (-3d) | 2016-02-24 → 2016-02-29 (+5d) | 0.53mo → 1mo | 0.25d → 0d |  | resources Jeff Pike; Brenda Diaz; Annete Hill [50%]; Brad Sutton → none |
| 6 | Identify and reserve locations | 2016-02-24 → 2016-03-01 (+6d) | 2016-03-30 → 2016-04-04 (+5d) |  | 0.25d → 0d |  | resources Jeff Pike [50%]; Yan Li [57.1%]; Annete Hill [28.6%]; Ryan Ihrig [75%]; DVD [8 2-hour disc] → none |
| 7 | Book musicians | 2016-03-30 → 2016-04-05 (+6d) | 2016-04-13 → 2016-04-18 (+5d) |  | 0.25d → 0d |  |  |
| 8 | Book dancers | 2016-04-13 → 2016-04-19 (+6d) | 2016-04-27 → 2016-05-02 (+5d) |  | 0.25d → 0d |  |  |
| 9 | Reserve audio recording equipment | 2016-04-27 → 2016-05-03 (+6d) | 2016-05-04 → 2016-05-09 (+5d) |  | 0.25d → 0d |  |  |
| 10 | Reserve video recording equipment | 2016-05-04 → 2016-05-10 (+6d) | 2016-05-11 → 2016-05-16 (+5d) |  | 0.25d → 0d |  |  |
| 11 | Pre-Production complete | 2016-05-11 → 2016-05-16 (+5d) | 2016-05-11 → 2016-05-16 (+5d) |  | 0.25d → 0d |  |  |
| 12 | **Production** | 2016-05-11 → 2016-05-16 (+5d) | 2016-06-23 → 2016-06-15 (-8d) | 30d → 20.25d |  |  |  |
| 13 | Production begins | 2016-05-11 → 2016-05-16 (+5d) | 2016-05-11 → 2016-05-16 (+5d) |  | 3d → 0d |  |  |
| 14 | **Scene 1** | 2016-05-11 → 2016-05-16 (+5d) | 2016-05-20 → 2016-05-25 (+5d) |  | 3d → 0d |  |  |
| 15 | Scene 1 begin | 2016-05-11 → 2016-05-16 (+5d) | 2016-05-11 → 2016-05-16 (+5d) |  | 3d → 0d |  |  |
| 16 | Scene 1 setup | 2016-05-11 → 2016-05-17 (+6d) | 2016-05-13 → 2016-05-18 (+5d) |  | 3d → 0d |  | resources Light Banks; Chris Preston; Brad Sutton → none |
| 17 | Scene 1 rehearsal | 2016-05-13 → 2016-05-19 (+6d) | 2016-05-16 → 2016-05-19 (+3d) |  | 3d → 0d |  | resources Food [0.1%]; Frank Zhang [50%]; Jim Kim; dancers; musician → none |
| 18 | Scene 1 vocal recording | 2016-05-16 → 2016-05-19 (+3d) | 2016-05-17 → 2016-05-20 (+3d) |  | 3d → 0d |  | resources Food [0.1%]; Jeff Pike; Don Funk; Sound Technician; musician → none |
| 19 | Scene 1 video shoot | 2016-05-17 → 2016-05-20 (+3d) | 2016-05-19 → 2016-05-24 (+5d) |  | 3d → 0d |  | resources Sound Technician; Microphone Bundles; Don Funk; DVD [0.25 2-hour disc]; David Barber [50%]; Greg Guzik; Bottled Water [1 24 bottle case] → none |
| 20 | Scene 1 teardown | 2016-05-19 → 2016-05-24 (+5d) | 2016-05-20 → 2016-05-25 (+5d) |  | 3d → 0d |  | resources Ido Ben-Sachar; Patricia Doyle → none |
| 21 | Scene 1 complete | 2016-05-20 → 2016-05-25 (+5d) | 2016-05-20 → 2016-05-25 (+5d) |  | 3d → 0d |  |  |
| 22 | **Scene 2** |  | 2016-06-03 → 2016-06-06 (+3d) |  | 0.5d → 0d |  |  |
| 23 | Scene 2 begin |  |  |  | 0.5d → 0d |  | constraint start no earlier than 2016-05-25 → none |
| 24 | Scene 2 setup |  | 2016-05-26 → 2016-05-27 (+1d) |  | 0.5d → 0d |  | resources Brad Sutton; Dolly; Chris Preston; electrician → none |
| 25 | Scene 2 rehearsal |  | 2016-05-27 → 2016-05-31 (+4d) |  | 0.5d → 0d |  | resources Food [0.1%]; Luis Bonifaz; dancers; musician → none |
| 26 | Scene 2 vocal recording | 2016-05-27 → 2016-05-31 (+4d) | 2016-05-31 → 2016-06-01 (+1d) |  | 0.5d → 0d |  | resources Yan Li; Sound Technician; Don Funk; musician → none |
| 27 | Scene 2 video shoot | 2016-05-31 → 2016-06-01 (+1d) | 2016-06-02 → 2016-06-03 (+1d) |  | 0.5d → 0d |  | resources Digital Truck-Mounted Video Camera; Dolly; Don Funk; DVD [1 2-hour disc]; dancers; Bottled Water [1 24 bottle case]; Jane Clayton; musician → none |
| 28 | Scene 2 teardown | 2016-06-02 → 2016-06-03 (+1d) | 2016-06-03 → 2016-06-06 (+3d) |  | 0.5d → 0d |  | resources Ido Ben-Sachar; Patricia Doyle → none |
| 29 | Scene 2 complete | 2016-06-03 → 2016-06-06 (+3d) | 2016-06-03 → 2016-06-06 (+3d) |  | 0.5d → 0d |  |  |
| 30 | **Scene 3** | 2016-06-03 → 2016-06-06 (+3d) | 2016-06-14 → 2016-06-15 (+1d) | 7.25d → 6.75d |  |  |  |
| 31 | Scene 3 begin | 2016-06-03 → 2016-06-06 (+3d) | 2016-06-03 → 2016-06-06 (+3d) |  | 0.5d → 0d |  |  |
| 32 | Scene 3 setup | 2016-06-03 → 2016-06-06 (+3d) | 2016-06-07 → 2016-06-08 (+1d) |  | 0.5d → 0d |  | resources Brad Sutton; Chris Preston → none |
| 33 | Scene 3 rehearsal | 2016-06-07 → 2016-06-08 (+1d) | 2016-06-08 → 2016-06-09 (+1d) |  | 0.5d → 0d |  | resources dancers; Eva Corets; musician → none |
| 34 | Scene 3 vocal recording | 2016-06-08 → 2016-06-09 (+1d) | 2016-06-09 → 2016-06-10 (+1d) |  | 0.5d → 0d |  | resources musician; Sound Technician; Don Funk → none |
| 35 | Scene 3 video shoot | 2016-06-09 → 2016-06-10 (+1d) |  |  | 0.25d → 0d |  | resources Bottled Water [1 24 bottle case]; dancers; DVD [1 2-hour disc]; Dry Ice [1 10 lb block]; Don Funk; Florian Voss → none |
| 36 | Scene 3 teardown |  | 2016-06-14 → 2016-06-15 (+1d) |  |  |  | resources Ido Ben-Sachar; Patricia Doyle → none |
| 37 | Scene 3 complete | 2016-06-14 → 2016-06-15 (+1d) | 2016-06-14 → 2016-06-15 (+1d) |  |  |  |  |
| 38 | Production complete | 2016-06-23 → 2016-06-15 (-8d) | 2016-06-23 → 2016-06-15 (-8d) |  |  | Scene 4 complete → 37 |  |
| 39 | **Post-Production** | 2016-06-23 → 2016-01-04 (-171d) | 2016-07-29 → 2016-06-15 (-44d) | 26d → 115.25d |  |  |  |
| 40 | Post-Production Begins | 2016-06-23 → 2016-06-15 (-8d) | 2016-06-23 → 2016-06-15 (-8d) |  |  |  |  |
| 41 | Post-Production complete | 2016-07-29 → 2016-01-04 (-207d) | 2016-07-29 → 2016-01-04 (-207d) |  | 0d → 115.25d | Send Copy 2 AV master and dubbed master to → none |  |

## Version 23 (saved 2018-09-11, file Don Funk Music Video 4.mpp)

Last finish 2016-06-15 → 2016-07-29 (+44d).

Added:

| ID | Task | Duration | Start | Finish | Predecessors | Constraint | Resources |
| --- | --- | --- | --- | --- | --- | --- | --- |
| 11 | **Weekly status meeting** | 69.12d | 2016-01-04 | 2016-04-11 |  |  |  |
| 12 | Weekly status meeting 1 | 1h | 2016-01-04 | 2016-01-04 |  | start no earlier than 2016-01-04 |  |
| 13 | Weekly status meeting 2 | 1h | 2016-01-11 | 2016-01-11 |  | start no earlier than 2016-01-11 |  |
| 14 | Weekly status meeting 3 | 1h | 2016-01-19 | 2016-01-19 |  | start no earlier than 2016-01-18 |  |
| 15 | Weekly status meeting 4 | 1h | 2016-01-25 | 2016-01-25 |  | start no earlier than 2016-01-25 |  |
| 16 | Weekly status meeting 5 | 1h | 2016-02-01 | 2016-02-01 |  | start no earlier than 2016-02-01 |  |
| 17 | Weekly status meeting 6 | 1h | 2016-02-08 | 2016-02-08 |  | start no earlier than 2016-02-08 |  |
| 18 | Weekly status meeting 7 | 1h | 2016-02-15 | 2016-02-15 |  | start no earlier than 2016-02-15 |  |
| 19 | Weekly status meeting 8 | 1h | 2016-02-22 | 2016-02-22 |  | start no earlier than 2016-02-22 |  |
| 20 | Weekly status meeting 9 | 1h | 2016-02-29 | 2016-02-29 |  | start no earlier than 2016-02-29 |  |
| 21 | Weekly status meeting 10 | 1h | 2016-03-07 | 2016-03-07 |  | start no earlier than 2016-03-07 |  |
| 22 | Weekly status meeting 11 | 1h | 2016-03-14 | 2016-03-14 |  | start no earlier than 2016-03-14 |  |
| 23 | Weekly status meeting 12 | 1h | 2016-03-21 | 2016-03-21 |  | start no earlier than 2016-03-21 |  |
| 24 | Weekly status meeting 13 | 1h | 2016-03-28 | 2016-03-28 |  | start no earlier than 2016-03-28 |  |
| 25 | Weekly status meeting 14 | 1h | 2016-04-04 | 2016-04-04 |  | start no earlier than 2016-04-04 |  |
| 26 | Weekly status meeting 15 | 1h | 2016-04-11 | 2016-04-11 |  | start no earlier than 2016-04-11 |  |
| 54 | **Scene 4** | 6.75d | 2016-06-14 | 2016-06-23 |  |  |  |
| 55 | Scene 4 begin | 0d | 2016-06-14 | 2016-06-14 | 53 |  |  |
| 56 | Scene 4 setup | 2d | 2016-06-14 | 2016-06-16 | 55 |  | Brad Sutton; Chris Preston; electrician |
| 57 | Scene 4 rehearsal | 6h | 2016-06-16 | 2016-06-17 | 56 |  | dancers; musician |
| 58 | Scene 4 vocal recording | 1d | 2016-06-17 | 2016-06-20 | 57 |  | musician; Sound Technician; Don Funk; Luis Bonifaz |
| 59 | Scene 4 video shoot | 2d | 2016-06-20 | 2016-06-22 | 58 |  | Sound Technician; DVD [1 2-hour disc]; Don Funk; David Barber [50%]; Dry Ice [1 10 lb block]; Frank Zhang [50%]; Bottled Water [1 24 bottle case] |
| 60 | Scene 4 teardown | 1d | 2016-06-22 | 2016-06-23 | 59 |  | Patricia Doyle; Ido Ben-Sachar |
| 61 | Scene 4 complete | 0d | 2016-06-23 | 2016-06-23 | 60 |  |  |
| 65 | Log video footage | 3d | 2016-06-23 | 2016-06-28 | 64 |  | Video Editing Studio; Shu Ito |
| 66 | Log audio tracks by scene | 2d | 2016-06-23 | 2016-06-27 | 64 |  | Sound Editing Studio; Maria Hammond; Jim Kim |
| 67 | Rough edit video - paper | 1w | 2016-06-28 | 2016-07-05 | 65, 66 |  | Bjorn Rettig [50%]; Florian Voss; Jamie Reding; Jane Clayton; Shu Ito |
| 68 | Rough audio edit | 1w | 2016-07-05 | 2016-07-12 | 67 |  |  |
| 69 | Fine audio edit | 3d | 2016-07-12 | 2016-07-15 | 68 |  | Sound Editing Studio; Maria Hammond; Jim Kim |
| 70 | Fine video edit | 3d | 2016-07-12 | 2016-07-15 | 68 |  | Video Editing Studio; Shu Ito; Greg Guzik; David Barber [50%] |
| 71 | Dub audio to video | 2d | 2016-07-15 | 2016-07-19 | 70 |  | Video Editing Studio; Shu Ito |
| 72 | Internal review viewing | 1d | 2016-07-19 | 2016-07-20 | 71 |  | Scott Seely; Jamie Reding; Jeff Pike; Judy Lew; Brad Sutton; Brenda Diaz; Annette Hill [50%]; Don Funk; Ryan Ihrig |
| 73 | Final edits | 4d | 2016-07-20 | 2016-07-25 | 72 |  | Jamie Reding; Scott Seely; Jeff Pike; Brad Sutton; Annette Hill [50%]; Video Editing Studio |
| 74 | Formal approval viewing | 1d | 2016-07-25 | 2016-07-26 | 73 |  | Scott Seely; Judy Lew; Brad Sutton; Don Funk; Annette Hill [50%]; Jane Clayton; Video Editing Studio |
| 75 | Duplicate audio and video masters | 1d | 2016-07-26 | 2016-07-27 | 74 |  | Sound Technician; Sound Editing Studio; Video Editing Studio; Shu Ito; Patricia Doyle; Luis Bonifaz |
| 76 | Archive Copy 1 AV masters | 1d | 2016-07-27 | 2016-07-28 | 75 |  | Yan Li |
| 77 | Send Copy 2 AV master and dubbed master to | 1d | 2016-07-28 | 2016-07-29 | 76 |  | Yan Li |

Changed:

| ID | Task | Start | Finish | Duration | Total float | Predecessors | Other |
| --- | --- | --- | --- | --- | --- | --- | --- |
| 1 | **Pre-Production** |  | 2016-05-16 → 2016-05-06 (-10d) | 95d → 88.38d | 0d → 5.38d |  |  |
| 3 | Review screenplay |  | 2016-01-25 → 2016-01-26 (+1d) | 3w → 3.6w | 0d → 5.38d |  | resources none → Scott Seely; Jeff Pike |
| 4 | Develop scene blocking and schedule |  | 2016-02-01 → 2016-02-05 (+4d) | 1w → 2w | 0d → 5.38d |  | resources none → Scott Seely [58%]; Judy Lew [59.7%] |
| 5 | Develop production layouts | 2016-02-02 → 2016-02-05 (+3d) | 2016-02-29 → 2016-02-19 (-10d) | 1mo → 0.5mo | 0d → 0.5d |  | resources none → Jeff Pike; Brenda Diaz; Annete Hill [50%]; Brad Sutton |
| 6 | Identify and reserve locations | 2016-03-01 → 2016-02-19 (-11d) | 2016-04-04 → 2016-03-25 (-10d) |  | 0d → 0.5d |  | resources none → Jeff Pike [50%]; Yan Li [57.1%]; Annete Hill [28.6%]; Ryan Ihrig [75%]; DVD [8 2-hour disc] |
| 7 | Book musicians | 2016-04-05 → 2016-03-25 (-11d) | 2016-04-18 → 2016-04-08 (-10d) |  | 0d → 0.5d |  |  |
| 8 | Book dancers | 2016-04-19 → 2016-04-08 (-11d) | 2016-05-02 → 2016-04-22 (-10d) |  | 0d → 0.5d |  |  |
| 9 | Reserve audio recording equipment | 2016-05-03 → 2016-04-22 (-11d) | 2016-05-09 → 2016-04-29 (-10d) |  | 0d → 0.5d |  |  |
| 10 | Reserve video recording equipment | 2016-05-10 → 2016-04-29 (-11d) | 2016-05-16 → 2016-05-06 (-10d) |  | 0d → 0.5d |  |  |
| 27 | Pre-Production complete | 2016-05-16 → 2016-05-06 (-10d) | 2016-05-16 → 2016-05-06 (-10d) |  | 0d → 0.5d |  |  |
| 28 | **Production** | 2016-05-16 → 2016-05-06 (-10d) | 2016-06-15 → 2016-06-23 (+8d) | 20.25d → 32.88d |  |  |  |
| 29 | Production begins | 2016-05-16 → 2016-05-06 (-10d) | 2016-05-16 → 2016-05-06 (-10d) |  | 0d → 0.5d |  |  |
| 30 | **Scene 1** | 2016-05-16 → 2016-05-06 (-10d) | 2016-05-25 → 2016-05-17 (-8d) |  | 0d → 5.88d |  |  |
| 31 | Scene 1 begin | 2016-05-16 → 2016-05-06 (-10d) | 2016-05-16 → 2016-05-06 (-10d) |  | 0d → 0.5d |  |  |
| 32 | Scene 1 setup | 2016-05-17 → 2016-05-06 (-11d) | 2016-05-18 → 2016-05-10 (-8d) |  | 0d → 0.5d |  | resources none → Light Banks; Chris Preston; Brad Sutton |
| 33 | Scene 1 rehearsal | 2016-05-19 → 2016-05-10 (-9d) | 2016-05-19 → 2016-05-11 (-8d) |  | 0d → 0.5d |  | resources none → Food [0.1%]; Frank Zhang [50%]; Jim Kim; dancers; musician |
| 34 | Scene 1 vocal recording | 2016-05-19 → 2016-05-11 (-8d) | 2016-05-20 → 2016-05-12 (-8d) |  | 0d → 0.5d |  | resources none → Food [0.1%]; Jeff Pike; Don Funk; Sound Technician; musician |
| 35 | Scene 1 video shoot | 2016-05-20 → 2016-05-12 (-8d) | 2016-05-24 → 2016-05-16 (-8d) |  | 0d → 0.5d |  | resources none → Sound Technician; Microphone Bundles; Don Funk; DVD [1 2-hour disc]; David Barber [50%]; Greg Guzik; Bottled Water [1 24 bottle case] |
| 36 | Scene 1 teardown | 2016-05-24 → 2016-05-16 (-8d) | 2016-05-25 → 2016-05-17 (-8d) |  | 0d → 0.5d |  | resources none → Ido Ben-Sachar; Patricia Doyle |
| 37 | Scene 1 complete | 2016-05-25 → 2016-05-17 (-8d) | 2016-05-25 → 2016-05-17 (-8d) |  | 0d → 0.5d |  |  |
| 38 | **Scene 2** |  | 2016-06-06 → 2016-06-03 (-3d) |  |  |  |  |
| 39 | Scene 2 begin |  |  |  |  |  | constraint none → start no earlier than 2016-05-25 |
| 40 | Scene 2 setup |  | 2016-05-27 → 2016-05-26 (-1d) |  |  |  | resources none → Brad Sutton; Dolly; Chris Preston; electrician |
| 41 | Scene 2 rehearsal |  | 2016-05-31 → 2016-05-27 (-4d) |  |  |  | resources none → Food [0.1%]; Luis Bonifaz; dancers; musician |
| 42 | Scene 2 vocal recording | 2016-05-31 → 2016-05-27 (-4d) | 2016-06-01 → 2016-05-31 (-1d) |  |  |  | resources none → Yan Li; Sound Technician; Don Funk; musician |
| 43 | Scene 2 video shoot | 2016-06-01 → 2016-05-31 (-1d) | 2016-06-03 → 2016-06-02 (-1d) |  |  |  | resources none → Digital Truck-Mounted Video Camera; Dolly; Don Funk; DVD [1 2-hour disc]; dancers; Bottled Water [1 24 bottle case]; Jane Clayton; musician |
| 44 | Scene 2 teardown | 2016-06-03 → 2016-06-02 (-1d) | 2016-06-06 → 2016-06-03 (-3d) |  |  |  | resources none → Ido Ben-Sachar; Patricia Doyle |
| 45 | Scene 2 complete | 2016-06-06 → 2016-06-03 (-3d) | 2016-06-06 → 2016-06-03 (-3d) |  |  |  |  |
| 46 | **Scene 3** | 2016-06-06 → 2016-06-03 (-3d) | 2016-06-15 → 2016-06-14 (-1d) |  |  |  |  |
| 47 | Scene 3 begin | 2016-06-06 → 2016-06-03 (-3d) | 2016-06-06 → 2016-06-03 (-3d) |  |  |  |  |
| 48 | Scene 3 setup | 2016-06-06 → 2016-06-03 (-3d) | 2016-06-08 → 2016-06-07 (-1d) |  |  |  | resources none → Brad Sutton; Chris Preston |
| 49 | Scene 3 rehearsal | 2016-06-08 → 2016-06-07 (-1d) | 2016-06-09 → 2016-06-08 (-1d) |  |  |  | resources none → dancers; Eva Corets; musician |
| 50 | Scene 3 vocal recording | 2016-06-09 → 2016-06-08 (-1d) | 2016-06-10 → 2016-06-09 (-1d) |  |  |  | resources none → musician; Sound Technician; Don Funk |
| 51 | Scene 3 video shoot | 2016-06-10 → 2016-06-09 (-1d) | 2016-06-14 → 2016-06-13 (-1d) |  |  |  | resources none → Bottled Water [1 24 bottle case]; dancers; DVD [1 2-hour disc]; Dry Ice [1 10 lb block]; Don Funk; Florian Voss |
| 52 | Scene 3 teardown | 2016-06-14 → 2016-06-13 (-1d) | 2016-06-15 → 2016-06-14 (-1d) |  |  |  | resources none → Ido Ben-Sachar; Patricia Doyle |
| 53 | Scene 3 complete | 2016-06-15 → 2016-06-14 (-1d) | 2016-06-15 → 2016-06-14 (-1d) |  |  |  |  |
| 62 | Production complete | 2016-06-15 → 2016-06-23 (+8d) | 2016-06-15 → 2016-06-23 (+8d) |  |  | 53 → 61 |  |
| 63 | **Post-Production** | 2016-01-04 → 2016-06-23 (+171d) | 2016-06-15 → 2016-07-29 (+44d) | 115.25d → 26d |  |  |  |
| 64 | Post-Production Begins | 2016-06-15 → 2016-06-23 (+8d) | 2016-06-15 → 2016-06-23 (+8d) |  |  |  |  |
| 78 | Post-Production complete | 2016-01-04 → 2016-07-29 (+207d) | 2016-01-04 → 2016-07-29 (+207d) |  | 115.25d → 0d | none → 77 |  |

## Version 24 (saved 2018-09-13, file Don Funk Music Video 5.mpp)

Last finish stays 2016-07-29.

Changed:

| ID | Task | Start | Finish | Duration | Total float | Other |
| --- | --- | --- | --- | --- | --- | --- |
| 1 | **Pre-Production** |  | 2016-05-06 → 2016-05-05 (-1d) | 88.38d → 88d | 5.38d → -4d |  |
| 4 | Develop scene blocking and schedule | 2016-01-26 → 2016-01-20 (-6d) | 2016-02-05 → 2016-02-01 (-4d) | 2w → 2.12w | 5.38d → -4d | constraint none → start no later than 2016-01-20 |
| 5 | Develop production layouts | 2016-02-05 → 2016-02-02 (-3d) | 2016-02-19 → 2016-02-18 (-1d) |  | 0.5d → 6.75d |  |
| 6 | Identify and reserve locations |  | 2016-03-25 → 2016-03-24 (-1d) |  | 0.5d → 4d |  |
| 7 | Book musicians |  | 2016-04-08 → 2016-04-07 (-1d) |  | 0.5d → 4d |  |
| 8 | Book dancers |  | 2016-04-22 → 2016-04-21 (-1d) |  | 0.5d → 4d |  |
| 9 | Reserve audio recording equipment |  | 2016-04-29 → 2016-04-28 (-1d) |  | 0.5d → 4d |  |
| 10 | Reserve video recording equipment |  | 2016-05-06 → 2016-05-05 (-1d) |  | 0.5d → 4d |  |
| 11 | **Status Meeting** |  |  |  | 78.12d → 78.62d | was named Weekly status meeting |
| 12 | Status Meeting 1 |  |  |  | 141.75d → 147.62d | was named Weekly status meeting 1; resources none → Brad Sutton; Chris Preston; Eva Corets; Jamie Reding; Jane Clayton; Judy Lew |
| 13 | Status Meeting 2 |  |  |  | 136.75d → 142.62d | was named Weekly status meeting 2; resources none → Brad Sutton; Chris Preston; Eva Corets; Jamie Reding; Jane Clayton; Judy Lew |
| 14 | Status Meeting 3 |  |  |  | 131.75d → 137.62d | was named Weekly status meeting 3; resources none → Brad Sutton; Chris Preston; Eva Corets; Jamie Reding; Jane Clayton; Judy Lew |
| 15 | Status Meeting 4 |  |  |  | 127.75d → 133.62d | was named Weekly status meeting 4; resources none → Brad Sutton; Chris Preston; Eva Corets; Jamie Reding; Jane Clayton; Judy Lew |
| 16 | Status Meeting 5 |  |  |  | 122.75d → 128.62d | was named Weekly status meeting 5; resources none → Brad Sutton; Chris Preston; Eva Corets; Jamie Reding; Jane Clayton; Judy Lew |
| 17 | Status Meeting 6 |  |  |  | 117.75d → 123.62d | was named Weekly status meeting 6; resources none → Brad Sutton; Chris Preston; Eva Corets; Jamie Reding; Jane Clayton; Judy Lew |
| 18 | Status Meeting 7 |  |  |  | 112.75d → 118.62d | was named Weekly status meeting 7; resources none → Brad Sutton; Chris Preston; Eva Corets; Jamie Reding; Jane Clayton; Judy Lew |
| 19 | Status Meeting 8 |  |  |  | 107.75d → 113.62d | was named Weekly status meeting 8; resources none → Brad Sutton; Chris Preston; Eva Corets; Jamie Reding; Jane Clayton; Judy Lew |
| 20 | Status Meeting 9 |  |  |  | 102.75d → 108.62d | was named Weekly status meeting 9; resources none → Brad Sutton; Chris Preston; Eva Corets; Jamie Reding; Jane Clayton; Judy Lew |
| 21 | Status Meeting 10 |  |  |  | 97.75d → 103.62d | was named Weekly status meeting 10; resources none → Brad Sutton; Chris Preston; Eva Corets; Jamie Reding; Jane Clayton; Judy Lew |
| 22 | Status Meeting 11 |  |  |  | 92.75d → 98.62d | was named Weekly status meeting 11; resources none → Brad Sutton; Chris Preston; Eva Corets; Jamie Reding; Jane Clayton; Judy Lew |
| 23 | Status Meeting 12 |  |  |  | 87.75d → 93.62d | was named Weekly status meeting 12; resources none → Brad Sutton; Chris Preston; Eva Corets; Jamie Reding; Jane Clayton; Judy Lew |
| 24 | Status Meeting 13 |  |  |  | 82.75d → 88.62d | was named Weekly status meeting 13; resources none → Brad Sutton; Chris Preston; Eva Corets; Jamie Reding; Jane Clayton; Judy Lew |
| 25 | Status Meeting 14 |  |  |  | 77.75d → 83.62d | was named Weekly status meeting 14; resources none → Brad Sutton; Chris Preston; Eva Corets; Jamie Reding; Jane Clayton; Judy Lew |
| 26 | Status Meeting 15 |  |  |  | 72.75d → 78.62d | was named Weekly status meeting 15; resources none → Brad Sutton; Chris Preston; Eva Corets; Jamie Reding; Jane Clayton; Judy Lew |
| 27 | Pre-Production complete | 2016-05-06 → 2016-05-05 (-1d) | 2016-05-06 → 2016-05-05 (-1d) |  | 0.5d → 4d |  |
| 28 | **Production** | 2016-05-06 → 2016-05-05 (-1d) |  | 32.88d → 33.75d |  |  |
| 29 | Production begins | 2016-05-06 → 2016-05-05 (-1d) | 2016-05-06 → 2016-05-05 (-1d) |  | 0.5d → 6.75d |  |
| 30 | **Scene 1** | 2016-05-06 → 2016-05-05 (-1d) | 2016-05-17 → 2016-05-16 (-1d) |  | 5.88d → 6.75d |  |
| 31 | Scene 1 begin | 2016-05-06 → 2016-05-05 (-1d) | 2016-05-06 → 2016-05-05 (-1d) |  | 0.5d → 6.75d |  |
| 32 | Scene 1 setup |  | 2016-05-10 → 2016-05-09 (-1d) |  | 0.5d → 6.75d |  |
| 33 | Scene 1 rehearsal |  | 2016-05-11 → 2016-05-10 (-1d) |  | 0.5d → 6.75d |  |
| 34 | Scene 1 vocal recording | 2016-05-11 → 2016-05-10 (-1d) | 2016-05-12 → 2016-05-11 (-1d) |  | 0.5d → 6.75d |  |
| 35 | Scene 1 video shoot | 2016-05-12 → 2016-05-11 (-1d) | 2016-05-16 → 2016-05-13 (-3d) |  | 0.5d → 6.75d |  |
| 36 | Scene 1 teardown | 2016-05-16 → 2016-05-13 (-3d) | 2016-05-17 → 2016-05-16 (-1d) |  | 0.5d → 6.75d |  |
| 37 | Scene 1 complete | 2016-05-17 → 2016-05-16 (-1d) | 2016-05-17 → 2016-05-16 (-1d) |  | 0.5d → 6.75d |  |
| 46 | **Scene 3** |  |  | 6.75d → 7.25d |  |  |
| 51 | Scene 3 video shoot |  | 2016-06-13 → 2016-06-14 (+1d) |  | 0d → 0.25d |  |
| 52 | Scene 3 teardown | 2016-06-13 → 2016-06-14 (+1d) |  |  |  |  |
| 56 | Scene 4 setup | 2016-06-14 → 2016-06-15 (+1d) |  |  |  |  |
| 57 | Scene 4 rehearsal | 2016-06-16 → 2016-06-17 (+1d) |  |  |  |  |
