# Don Funk Music Video

How a schedule from MS Project changed from version to version. A marks actual dates.

## Version 1 (data date 2016-02-12, saved 2018-11-01, file Don Funk Cost Report.mpp)

| ID | WBS | Task | Duration | Start | Finish | Predecessors | Complete | Total float | Constraint |
| --- | --- | --- | --- | --- | --- | --- | --- | --- | --- |
| 1 | 1 | **Pre-Production** | 89.25d | 2016-01-04 A | 2016-05-09 A |  | 100% |  |  |
| 2 |  | Pre-Production begins | 0d | 2016-01-04 A | 2016-01-04 A |  | 100% |  |  |
| 3 |  | Review screenplay | 3.6w | 2016-01-04 A | 2016-01-26 A | 2 | 100% |  |  |
| 4 |  | Develop scene blocking and schedule | 9.62d | 2016-01-26 A | 2016-02-04 A | 3 | 100% |  |  |
| 5 |  | Develop production layouts | 0.53mo | 2016-02-05 A | 2016-02-24 A | 4 | 100% |  |  |
| 6 |  | Identify and reserve locations | 22.5d | 2016-02-24 A | 2016-03-28 A | 5 | 100% |  |  |
| 7 |  | Book musicians | 2w | 2016-03-28 A | 2016-04-11 A | 6 | 100% |  |  |
| 8 |  | Book dancers | 2w | 2016-04-11 A | 2016-04-25 A | 7 | 100% |  |  |
| 9 |  | Reserve audio recording equipment | 1w | 2016-04-25 A | 2016-05-02 A | 8 | 100% |  |  |
| 10 |  | Reserve video recording equipment | 5d | 2016-05-02 A | 2016-05-09 A | 9 | 100% |  |  |
| 11 | 1.10 | **Status Meeting** | 69.12d | 2016-01-04 A | 2016-04-11 A |  | 100% |  |  |
| 12 |  | Status Meeting 1 | 1h | 2016-01-04 A | 2016-01-04 A |  | 100% |  | start no earlier than 2016-01-04 |
| 13 |  | Status Meeting 2 | 1h | 2016-01-11 A | 2016-01-11 A |  | 100% |  | start no earlier than 2016-01-11 |
| 14 |  | Status Meeting 3 | 1h | 2016-01-19 A | 2016-01-19 A |  | 100% |  | start no earlier than 2016-01-18 |
| 15 |  | Status Meeting 4 | 1h | 2016-01-25 A | 2016-01-25 A |  | 100% |  | start no earlier than 2016-01-25 |
| 16 |  | Status Meeting 5 | 1h | 2016-02-01 A | 2016-02-01 A |  | 100% |  | start no earlier than 2016-02-01 |
| 17 |  | Status Meeting 6 | 1h | 2016-02-08 A | 2016-02-08 A |  | 100% |  | start no earlier than 2016-02-08 |
| 18 |  | Status Meeting 7 | 1h | 2016-02-15 A | 2016-02-15 A |  | 100% |  | start no earlier than 2016-02-15 |
| 19 |  | Status Meeting 8 | 1h | 2016-02-22 A | 2016-02-22 A |  | 100% |  | start no earlier than 2016-02-22 |
| 20 |  | Status Meeting 9 | 1h | 2016-02-29 A | 2016-02-29 A |  | 100% |  | start no earlier than 2016-02-29 |
| 21 |  | Status Meeting 10 | 1h | 2016-03-07 A | 2016-03-07 A |  | 100% |  | start no earlier than 2016-03-07 |
| 22 |  | Status Meeting 11 | 1h | 2016-03-14 A | 2016-03-14 A |  | 100% |  | start no earlier than 2016-03-14 |
| 23 |  | Status Meeting 12 | 1h | 2016-03-21 A | 2016-03-21 A |  | 100% |  | start no earlier than 2016-03-21 |
| 24 |  | Status Meeting 13 | 1h | 2016-03-28 A | 2016-03-28 A |  | 100% |  | start no earlier than 2016-03-28 |
| 25 |  | Status Meeting 14 | 1h | 2016-04-04 A | 2016-04-04 A |  | 100% |  | start no earlier than 2016-04-04 |
| 26 |  | Status Meeting 15 | 1h | 2016-04-11 A | 2016-04-11 A |  | 100% |  | start no earlier than 2016-04-11 |
| 27 |  | Pre-Production complete | 0d | 2016-05-09 A | 2016-05-09 A | 10 | 100% |  |  |
| 28 | 2 | **Production** | 35.5d | 2016-05-09 A | 2016-06-28 |  | 60% | 0.25d |  |
| 29 |  | Production begins | 0d | 2016-05-09 A | 2016-05-09 A | 27 | 100% |  |  |
| 30 | 2.2 | **Scene 1** | 9.25d | 2016-05-09 A | 2016-05-20 A |  | 100% |  |  |
| 31 |  | Scene 1 begin | 0d | 2016-05-09 A | 2016-05-09 A | 29 | 100% |  |  |
| 32 |  | Scene 1 setup | 2d | 2016-05-11 A | 2016-05-13 A | 31 | 100% |  |  |
| 33 |  | Scene 1 rehearsal | 6h | 2016-05-13 A | 2016-05-16 A | 32 | 100% |  |  |
| 34 |  | Scene 1 vocal recording | 1.13d | 2016-05-16 A | 2016-05-17 A | 33 | 100% |  |  |
| 35 |  | Scene 1 video shoot | 3d | 2016-05-17 A | 2016-05-20 A | 34 | 100% |  |  |
| 36 |  | Scene 1 teardown | 1d | 2016-05-19 A | 2016-05-20 A | 35 | 100% |  |  |
| 37 |  | Scene 1 complete | 0d | 2016-05-20 A | 2016-05-20 A | 36 | 100% |  |  |
| 38 | 2.3 | **Scene 2** | 6.75d | 2016-05-25 A | 2016-06-03 A |  | 100% |  |  |
| 39 |  | Scene 2 begin | 0d | 2016-05-25 A | 2016-05-25 A | 37 | 100% |  | start no earlier than 2016-05-25 |
| 40 |  | Scene 2 setup | 2d | 2016-05-25 A | 2016-05-26 A | 39 | 100% |  |  |
| 41 |  | Scene 2 rehearsal | 14h | 2016-05-27 A | 2016-05-31 A | 40 | 100% |  |  |
| 42 |  | Scene 2 vocal recording | 3d | 2016-05-27 A | 2016-06-02 A | 41 | 100% |  |  |
| 43 |  | Scene 2 video shoot | 2d | 2016-05-31 A | 2016-06-02 A | 42 | 100% |  |  |
| 44 |  | Scene 2 teardown | 1d | 2016-06-02 A | 2016-06-03 A | 43 | 100% |  |  |
| 45 |  | Scene 2 complete | 0d | 2016-06-03 A | 2016-06-03 A | 44 | 100% |  |  |
| 46 | 2.4 | **Scene 3** | 10.25d | 2016-06-03 A | 2016-06-17 |  | 15% | 0d |  |
| 47 |  | Scene 3 begin | 0d | 2016-06-03 A | 2016-06-03 A | 45 | 100% |  |  |
| 48 |  | Scene 3 setup | 2d | 2016-06-03 A | 2016-06-10 | 47 | 50% | 0.25d |  |
| 49 |  | Scene 3 rehearsal | 6h | 2016-06-13 | 2016-06-13 | 48 |  | 0.25d | start no earlier than 2016-06-09 |
| 50 |  | Scene 3 vocal recording | 1d | 2016-06-13 | 2016-06-14 | 49 |  | 0.25d | start no earlier than 2016-06-09 |
| 51 |  | Scene 3 video shoot | 2d | 2016-06-14 | 2016-06-17 | 50 |  | 0.25d |  |
| 52 |  | Scene 3 teardown | 1d | 2016-06-17 | 2016-06-17 | 51 |  | 0d |  |
| 53 |  | Scene 3 complete | 0d | 2016-06-17 A | 2016-06-17 A | 52 | 100% |  |  |
| 54 | 2.5 | **Scene 4** | 6.75d | 2016-06-17 | 2016-06-28 |  |  | 0.25d |  |
| 55 |  | Scene 4 begin | 0d | 2016-06-17 | 2016-06-17 | 53 |  | 0.25d |  |
| 56 |  | Scene 4 setup | 2d | 2016-06-20 | 2016-06-21 | 55 |  | 0.25d |  |
| 57 |  | Scene 4 rehearsal | 6h | 2016-06-22 | 2016-06-22 | 56 |  | 0.25d |  |
| 58 |  | Scene 4 vocal recording | 1d | 2016-06-22 | 2016-06-23 | 57 |  | 0.25d |  |
| 59 |  | Scene 4 video shoot | 2d | 2016-06-23 | 2016-06-27 | 58 |  | 0.25d |  |
| 60 |  | Scene 4 teardown | 1d | 2016-06-27 | 2016-06-28 | 59 |  | 0.25d |  |
| 61 |  | Scene 4 complete | 0d | 2016-06-28 | 2016-06-28 | 60 |  | 0.25d |  |
| 62 |  | Production complete | 0d | 2016-06-28 | 2016-06-28 | 61 |  | 0.25d |  |
| 63 | 3 | **Post-Production** | 26.88d | 2016-06-28 | 2016-08-04 |  |  | 0d |  |
| 64 |  | Post-Production Begins | 0d | 2016-06-28 | 2016-06-28 | 62 |  | 0.25d |  |
| 65 |  | Log video footage | 3d | 2016-06-28 | 2016-07-01 | 64 |  | 0.25d |  |
| 66 |  | Log audio tracks by scene | 3d | 2016-06-28 | 2016-07-01 | 64 |  | 0.25d |  |
| 67 |  | Rough edit video - paper | 1w | 2016-07-01 | 2016-07-08 | 65, 66 |  | 0.25d |  |
| 68 |  | Rough audio edit | 1w | 2016-07-08 | 2016-07-15 | 67 |  | 0.25d |  |
| 69 |  | Fine audio edit | 3d | 2016-07-15 | 2016-07-20 | 68 |  | 10.88d |  |
| 70 |  | Fine video edit | 3d | 2016-07-15 | 2016-07-20 | 68 |  | 0.25d |  |

| ID | Task | Duration | Start | Finish | Predecessors | Total float |
| --- | --- | --- | --- | --- | --- | --- |
| 71 | Dub audio to video | 2d | 2016-07-20 | 2016-07-22 | 70 | 0.25d |
| 72 | Internal review viewing | 1.25d | 2016-07-22 | 2016-07-25 | 71 | 0d |
| 73 | Final edits | 3.75d | 2016-07-25 | 2016-07-28 | 72 | 0d |
| 74 | Formal approval viewing | 1.62d | 2016-07-28 | 2016-08-01 | 73 | 0d |
| 75 | Duplicate audio and video masters | 1d | 2016-08-01 | 2016-08-02 | 74 | 0d |
| 76 | Archive Copy 1 AV masters | 1d | 2016-08-02 | 2016-08-03 | 75 | 0d |
| 77 | Send Copy 2 AV master and dubbed master to | 1d | 2016-08-03 | 2016-08-04 | 76 | 0d |
| 78 | Post-Production complete | 0d | 2016-08-04 | 2016-08-04 | 77 | 0d |

## Version 2 (data date 2016-06-15, saved 2018-10-30, file Don Funk On Schedule.mpp)

Last finish stays 2016-08-04. Complete tasks 42 → 47.

Changed:

| ID | Task | Start | Finish | Complete | Total float |
| --- | --- | --- | --- | --- | --- |
| 28 | **Production** |  |  | 60% → 78% |  |
| 46 | **Scene 3** |  | 2016-06-17 A | 15% → 100% | 0d → none |
| 48 | Scene 3 setup |  | 2016-06-10 A | 50% → 100% | 0.25d → none |
| 49 | Scene 3 rehearsal | 2016-06-13 A | 2016-06-13 A | 0% → 100% | 0.25d → none |
| 50 | Scene 3 vocal recording | 2016-06-13 A | 2016-06-14 A | 0% → 100% | 0.25d → none |
| 51 | Scene 3 video shoot | 2016-06-14 A | 2016-06-17 A | 0% → 100% | 0.25d → none |
| 52 | Scene 3 teardown | 2016-06-17 A | 2016-06-17 A | 0% → 100% | 0d → none |
