# Don Funk Music Video

How a schedule from MS Project changed from version to version. A marks actual dates.

## Version 1 (data date 2016-06-10, saved 2013-07-01, file Don Funk Music Video 11-6.mpp)

| ID | WBS | Task | Duration | Start | Finish | Predecessors | Complete | Total float | Constraint |
| --- | --- | --- | --- | --- | --- | --- | --- | --- | --- |
| 1 | 1 | **Pre-Production** | 92d | 2016-01-04 A | 2016-05-11 |  | 98% | 61.75d |  |
| 2 |  | Pre-Production complete | 0d | 2016-01-04 A | 2016-01-04 A |  | 100% |  |  |
| 3 |  | Review screenplay | 3.6w | 2016-01-04 A | 2016-01-26 A | 2 | 100% |  |  |
| 4 |  | Develop scene blocking and schedule | 9.62d | 2016-01-26 A | 2016-02-04 A | 3 | 100% |  |  |
| 5 |  | Develop production layouts | 0.53mo | 2016-02-05 A | 2016-02-24 A | 4 | 100% |  |  |
| 6 |  | Identify and reserve locations | 22.5d | 2016-02-24 A | 2016-03-28 A | 5 | 100% |  |  |
| 7 |  | Book musicians | 2w | 2016-03-25 A | 2016-04-07 A | 6 | 100% |  |  |
| 8 |  | Book dancers | 13d | 2016-04-08 A | 2016-04-26 A | 7 | 100% |  |  |
| 9 |  | Reserve audio recording equipment | 1w | 2016-04-27 A | 2016-05-03 A | 8 | 100% |  |  |
| 10 |  | Reserve video recording equipment | 6d | 2016-05-04 A | 2016-05-11 A | 9 | 100% |  |  |
| 11 | 1.10 | **Status Meeting** | 69.12d | 2016-01-04 | 2016-04-11 |  |  | 84.62d |  |
| 12 |  | Status Meeting 1 | 1h | 2016-01-04 | 2016-01-04 |  |  | 153.62d | start no earlier than 2016-01-04 |
| 13 |  | Status Meeting 2 | 1h | 2016-01-11 | 2016-01-11 |  |  | 148.62d | start no earlier than 2016-01-11 |
| 14 |  | Status Meeting 3 | 1h | 2016-01-19 | 2016-01-19 |  |  | 143.62d | start no earlier than 2016-01-18 |
| 15 |  | Status Meeting 4 | 1h | 2016-01-25 | 2016-01-25 |  |  | 139.62d | start no earlier than 2016-01-25 |
| 16 |  | Status Meeting 5 | 1h | 2016-02-01 | 2016-02-01 |  |  | 134.62d | start no earlier than 2016-02-01 |
| 17 |  | Status Meeting 6 | 1h | 2016-02-08 | 2016-02-08 |  |  | 129.62d | start no earlier than 2016-02-08 |
| 18 |  | Status Meeting 7 | 1h | 2016-02-15 | 2016-02-15 |  |  | 124.62d | start no earlier than 2016-02-15 |
| 19 |  | Status Meeting 8 | 1h | 2016-02-22 | 2016-02-22 |  |  | 119.62d | start no earlier than 2016-02-22 |
| 20 |  | Status Meeting 9 | 1h | 2016-02-29 | 2016-02-29 |  |  | 114.62d | start no earlier than 2016-02-29 |
| 21 |  | Status Meeting 10 | 1h | 2016-03-07 | 2016-03-07 |  |  | 109.62d | start no earlier than 2016-03-07 |
| 22 |  | Status Meeting 11 | 1h | 2016-03-14 | 2016-03-14 |  |  | 104.62d | start no earlier than 2016-03-14 |
| 23 |  | Status Meeting 12 | 1h | 2016-03-21 | 2016-03-21 |  |  | 99.62d | start no earlier than 2016-03-21 |
| 24 |  | Status Meeting 13 | 1h | 2016-03-28 | 2016-03-28 |  |  | 94.62d | start no earlier than 2016-03-28 |
| 25 |  | Status Meeting 14 | 1h | 2016-04-04 | 2016-04-04 |  |  | 89.62d | start no earlier than 2016-04-04 |
| 26 |  | Status Meeting 15 | 1h | 2016-04-11 | 2016-04-11 |  |  | 84.62d | start no earlier than 2016-04-11 |
| 27 |  | Pre-Production complete | 0d | 2016-05-11 | 2016-05-11 | 10 |  | 0d |  |
| 28 | 2 | **Production** | 35.75d | 2016-05-11 A | 2016-07-01 |  | 57% | 0.25d |  |
| 29 |  | Production begins | 0d | 2016-05-11 | 2016-05-11 | 27 |  | 36d |  |
| 30 | 2.2 | **Scene 1** | 7.88d | 2016-05-11 A | 2016-05-23 A |  | 100% |  |  |
| 31 |  | Scene 1 begin | 0d | 2016-05-11 A | 2016-05-11 A | 29 | 100% |  |  |
| 32 |  | Scene 1 setup | 2d | 2016-05-12 A | 2016-05-13 A | 31 | 100% |  |  |
| 33 |  | Scene 1 rehearsal | 6h | 2016-05-16 A | 2016-05-16 A | 32 | 100% |  |  |
| 34 |  | Scene 1 vocal recording | 1.13d | 2016-05-16 A | 2016-05-17 A | 33 | 100% |  |  |
| 35 |  | Scene 1 video shoot | 3d | 2016-05-17 A | 2016-05-20 A | 34 | 100% |  |  |
| 36 |  | Scene 1 teardown | 1d | 2016-05-20 A | 2016-05-23 A | 35 | 100% |  |  |
| 37 |  | Scene 1 complete | 0d | 2016-05-23 A | 2016-05-23 A | 36 | 100% |  |  |
| 38 | 2.3 | **Scene 2** | 9.75d | 2016-05-25 A | 2016-06-08 A |  | 100% |  |  |
| 39 |  | Scene 2 begin | 0d | 2016-05-25 A | 2016-05-25 A | 37 | 100% |  | start no earlier than 2016-05-25 |
| 40 |  | Scene 2 setup | 2d | 2016-05-25 A | 2016-05-26 A | 39 | 100% |  |  |
| 41 |  | Scene 2 rehearsal | 14h | 2016-05-27 A | 2016-05-31 A | 40 | 100% |  |  |
| 42 |  | Scene 2 vocal recording | 3d | 2016-05-31 A | 2016-06-03 A | 41 | 100% |  |  |
| 43 |  | Scene 2 video shoot | 2d | 2016-06-03 A | 2016-06-07 A | 42 | 100% |  |  |
| 44 |  | Scene 2 teardown | 1d | 2016-06-07 A | 2016-06-08 A | 43 | 100% |  |  |
| 45 |  | Scene 2 complete | 0d | 2016-06-08 A | 2016-06-08 A | 44 | 100% |  |  |
| 46 | 2.4 | **Scene 3** | 10.25d | 2016-06-08 | 2016-06-22 |  |  | 0d |  |
| 47 |  | Scene 3 begin | 0d | 2016-06-08 | 2016-06-08 | 45 |  | 0.25d |  |
| 48 |  | Scene 3 setup | 2d | 2016-06-08 | 2016-06-15 | 47 |  | 0.25d |  |
| 49 |  | Scene 3 rehearsal | 6h | 2016-06-16 | 2016-06-16 | 48 |  | 0.25d | start no earlier than 2016-06-09 |
| 50 |  | Scene 3 vocal recording | 1d | 2016-06-16 | 2016-06-17 | 49 |  | 0.25d | start no earlier than 2016-06-09 |
| 51 |  | Scene 3 video shoot | 2d | 2016-06-17 | 2016-06-22 | 50 |  | 0.25d |  |
| 52 |  | Scene 3 teardown | 1d | 2016-06-22 | 2016-06-22 | 51 |  | 0d |  |
| 53 |  | Scene 3 complete | 0d | 2016-06-22 | 2016-06-22 | 52 |  | 0d |  |
| 54 | 2.5 | **Scene 4** | 6.75d | 2016-06-22 | 2016-07-01 |  |  | 0d |  |
| 55 |  | Scene 4 begin | 0d | 2016-06-22 | 2016-06-22 | 53 |  | 0d |  |
| 56 |  | Scene 4 setup | 2d | 2016-06-23 | 2016-06-24 | 55 |  | 0d |  |
| 57 |  | Scene 4 rehearsal | 6h | 2016-06-27 | 2016-06-27 | 56 |  | 0d |  |
| 58 |  | Scene 4 vocal recording | 1d | 2016-06-27 | 2016-06-28 | 57 |  | 0d |  |
| 59 |  | Scene 4 video shoot | 2d | 2016-06-28 | 2016-06-30 | 58 |  | 0d |  |
| 60 |  | Scene 4 teardown | 1d | 2016-06-30 | 2016-07-01 | 59 |  | 0d |  |
| 61 |  | Scene 4 complete | 0d | 2016-07-01 | 2016-07-01 | 60 |  | 0d |  |
| 62 |  | Production complete | 0d | 2016-07-01 | 2016-07-01 | 61 |  | 0d |  |
| 63 | 3 | **Post-Production** | 26d | 2016-07-01 | 2016-08-08 |  |  | 0d |  |
| 64 |  | Post-Production Begins | 0d | 2016-07-01 | 2016-07-01 | 62 |  | 0d |  |
| 65 |  | Log video footage | 3d | 2016-07-01 | 2016-07-06 | 64 |  | 0d |  |
| 66 |  | Log audio tracks by scene | 3d | 2016-07-01 | 2016-07-06 | 64 |  | 0d |  |
| 67 |  | Rough edit video - paper | 1w | 2016-07-06 | 2016-07-13 | 65, 66 |  | 0d |  |
| 68 |  | Rough audio edit | 1w | 2016-07-13 | 2016-07-20 | 67 |  | 0d |  |
| 69 |  | Fine audio edit | 3d | 2016-07-20 | 2016-07-25 | 68 |  | 10d |  |
| 70 |  | Fine video edit | 3d | 2016-07-20 | 2016-07-25 | 68 |  | 0d |  |

| ID | Task | Duration | Start | Finish | Predecessors | Total float |
| --- | --- | --- | --- | --- | --- | --- |
| 71 | Dub audio to video | 2d | 2016-07-25 | 2016-07-27 | 70 | 0d |
| 72 | Internal review viewing | 1d | 2016-07-27 | 2016-07-28 | 71 | 0d |
| 73 | Final edits | 4d | 2016-07-28 | 2016-08-02 | 72 | 0d |
| 74 | Formal approval viewing | 1d | 2016-08-02 | 2016-08-03 | 73 | 0d |
| 75 | Duplicate audio and video masters | 1d | 2016-08-03 | 2016-08-04 | 74 | 0d |
| 76 | Archive Copy 1 AV masters | 1d | 2016-08-04 | 2016-08-05 | 75 | 0d |
| 77 | Send Copy 2 AV master and dubbed master to | 1d | 2016-08-05 | 2016-08-08 | 76 | 0d |
| 78 | Post-Production complete | 0d | 2016-08-08 | 2016-08-08 | 77 | 0d |

## Version 2 (data date 2016-06-10, saved 2018-11-15, file Don Funk Adjusted.mpp)

Last finish stays 2016-08-08. Complete tasks 23 → 26.

Changed:

| ID | Task | Start | Finish | Duration | Complete | Total float |
| --- | --- | --- | --- | --- | --- | --- |
| 28 | **Production** |  |  |  | 57% → 65% |  |
| 46 | **Scene 3** | 2016-06-08 A |  |  | 0% → 38% |  |
| 47 | Scene 3 begin | 2016-06-08 A | 2016-06-08 A |  | 0% → 100% | 0.25d → none |
| 48 | Scene 3 setup | 2016-06-08 A | 2016-06-15 → 2016-06-16 A (+1d) | 2d → 2.12d | 0% → 100% | 0.25d → none |
| 49 | Scene 3 rehearsal | 2016-06-16 A |  | 6h → 6.67h | 0% → 60% | 0.25d → 0.04d |
| 53 | Scene 3 complete | 2016-06-22 A | 2016-06-22 A |  | 0% → 100% | 0d → none |
